# Improvement of Waad Al Shamal Industrial City Fence & Gates - B1 - B1

How a schedule from Primavera P6 changed from version to version. A marks actual dates.

## Version 1 (data date 2026-09-14, saved 2026-09-15, file WAS1-05-006 -Improvement of Waad Al Shamal Industrial City Fence & Gates-DD14-09-2026.xer)

| ID | WBS | Task | Duration | Start | Finish | Predecessors | Complete | Total float |
| --- | --- | --- | --- | --- | --- | --- | --- | --- |
|  | 1 | **Key Milestones** |  | 2026-07-07 | 2026-11-17 |  |  |  |
|  | 1 | **General Milestones** |  | 2026-07-07 | 2026-11-17 |  |  |  |
| WAD.S.1080 |  | Project Start | 0d | 2026-07-07 A | 2026-07-07 A |  | 100% |  |
| WAD.S.6490 |  | Project Finish | 0d | 2026-11-17 | 2026-11-17 | WAD.S.1320 FF, WAD.S.3850 FF, WAD.S.5070 FF, WAD.S.6250 FF, WAD.S.3860 FF, WAD.S.6110 FF, WAD.S.5870 FF, WAD.S.5490, WAD.S.4030, WAD.S.2980, WAD.S.3870, WAD.S.3380, WAD.S.1000, WAD.S.1030, WAD.S.1040, WAD.S.1050, WAD.S.1060, WAD.S.1070, WAD.S.1180, WAD.S.1220, WAD.S.1260, WAD.S.1300, WAD.S.1310, WAD.S.4810, WAD.S.4990, WAD.S.3730, WAD.S.3890, WAD.S.4160, WAD.S.4780, WAD.S.5080, WAD.S.3900, WAD.S.4130, WAD.S.4150, WAD.S.4560, WAD.S.4620, WAD.S.4630, WAD.S.4640, WAD.S.4650, WAD.S.4790, WAD.S.3950, WAD.S.4730, WAD.S.4830, WAD.S.4850, WAD.S.3920, WAD.S.4090, WAD.S.5990, WAD.S.6340, WAD.S.6120, WAD.S.6480, WAD.S.4890, WAD.S.3960, WAD.S.4100, WAD.S.5760, WAD.S.5770, WAD.S.7540, WAD.S.6560, WAD.S.6590, WAD.S.7240, WAD.S.7250, WAD.S.1210, WAD.S.5540, WAD.S.2530, WAD.S.1470, WAD.S.7550, WAD.S.7560, `, WAD.S.7550 FF |  | -37d |
|  | 2 | **Contractual Milestones** |  | 2026-07-07 | 2026-11-17 |  |  |  |
| WAD.S.1470 |  | Site Handover | 0d | 2026-07-07 A | 2026-07-07 A | WAD.S.1080 | 100% |  |
| WAD.S.7550 |  | Contract Schedule (Baseline Program) | 0d | 2026-07-07 A | 2026-07-07 A | WAD.S.1030 SS, WAD.S.1030 FF | 100% |  |
| WAD.S.1320 |  | Completion of Moblization | 0d | 2026-07-09 A | 2026-07-09 A | WAD.S.1280 | 100% |  |
| WAD.S.3850 |  | Completion of Fences | 0d | 2026-09-22 | 2026-09-22 | WAD.S.1080, WAD.S.3380 |  | 11d |
| WAD.S.3860 |  | Completion of GUARD HOUSE 1 | 0d | 2026-09-22 | 2026-09-22 | WAD.S.3850 FF |  | 11d |
| WAD.S.5070 |  | Completion of Engineering Works | 0d | 2026-10-05 | 2026-10-05 | WAD.S.1330 FF, WAD.S.4840 |  | 0d |
| WAD.S.6250 |  | Completion of Procurment Works | 0d | 2026-10-14 | 2026-10-14 | WAD.S.1080, WAD.S.4660 |  | -8d |
| WAD.S.6110 |  | Completion of EXT. WORKS | 0d | 2026-11-09 | 2026-11-09 | WAD.S.4990 |  | -30d |
| WAD.S.7560 |  | Testing & Commissioning | 0d | 2026-11-17 | 2026-11-17 | WAD.S.5490 FF |  | -37d |
|  | 2 | **Mobilization** |  | 2026-07-01 | 2026-07-19 |  |  |  |
|  | 2 | **Site Layout Plan** |  | 2026-07-06 | 2026-07-19 |  |  |  |
| WAD.S.1130 |  | Site Office Layout Drawing Review & Approval | 2d | 2026-07-06 A | 2026-07-19 A | WAD.S.1120 | 100% |  |
| WAD.S.1120 |  | Site Office Layout Drawing Proposal Submittal | 1d | 2026-07-19 A | 2026-07-19 A | WAD.S.1110 | 100% |  |
|  | 6 | **Construct Site Access Roads** |  | 2026-07-06 | 2026-07-19 |  |  |  |
| WAD.S.1150 |  | Site Preparation | 1d | 2026-07-06 A | 2026-07-19 A | WAD.S.1130 | 100% |  |
| WAD.S.1160 |  | Grading & Leveling | 2d | 2026-07-06 A | 2026-07-19 A | WAD.S.1150 | 100% |  |
| WAD.S.1200 |  | Temporary Access Road | 3d | 2026-07-06 A | 2026-07-19 A | WAD.S.1160 SS+1.25d, WAD.S.1150 | 100% |  |
|  | 7 | **Construct Site Office Fence** |  | 2026-07-06 | 2026-07-19 |  |  |  |
| WAD.S.1230 |  | Excavation for Fence Foundation | 4d | 2026-07-06 A | 2026-07-19 A | WAD.S.1200 SS+1.25d | 100% |  |
| WAD.S.1270 |  | Installation of Fence Posts | 4d | 2026-07-06 A | 2026-07-19 A | WAD.S.1230 SS+1.25d | 100% |  |
| WAD.S.1280 |  | Installation of Fence Mesh | 4d | 2026-07-06 A | 2026-07-19 A | WAD.S.1270 SS+2.5d, WAD.S.1230 | 100% |  |
|  | 8 | **Construct Site Offices** |  | 2026-07-01 | 2026-07-19 |  |  |  |
| ` |  | Installation of Site Offices | 3d | 2026-07-01 A | 2026-07-09 A | WAD.S.1200 SS, WAD.S.1130, WAD.S.1160 | 100% |  |
| WAD.S.1210 |  | Installation of Site Offices | 3d | 2026-07-06 A | 2026-07-19 A | WAD.S.1200 SS, WAD.S.1130, WAD.S.1160 | 100% |  |
| WAD.S.1240 |  | MEP Works | 2d | 2026-07-06 A | 2026-07-19 A | WAD.S.1160 | 100% |  |
| WAD.S.1260 |  | Installation of Furniture | 3d | 2026-07-06 A | 2026-07-19 A | WAD.S.1240 SS, WAD.S.1160 | 100% |  |
|  | 3 | **Mobilization of Manpower** |  | 2026-07-06 | 2026-07-19 |  |  |  |
| WAD.S.1170 |  | Mobilization of Manpower | 6d | 2026-07-06 A | 2026-07-19 A | WAD.S.1150 SS, WAD.S.1150, WAD.S.1150 FF | 100% |  |
|  | 4 | **Mobilization of Equipment** |  | 2026-07-06 | 2026-07-19 |  |  |  |
| WAD.S.1180 |  | Mobilization of Tools & Equipment | 6d | 2026-07-06 A | 2026-07-19 A | WAD.S.1170 SS, WAD.S.1150 | 100% |  |
|  | 5 | **Site Survey** |  | 2026-07-14 | 2026-07-18 |  |  |  |
| WAD.S.1020 |  | Site Survey | 2d | 2026-07-14 A | 2026-07-15 A | WAD.S.1080 SS | 100% |  |
| WAD.S.1110 |  | Survey Report | 2d | 2026-07-16 A | 2026-07-18 A | WAD.S.1020 | 100% |  |
|  | 3 | **Preliminary Submittals** |  | 2026-07-06 | 2026-07-19 |  |  |  |
| WAD.S.1000 |  | Insurances | 18d | 2026-07-06 A | 2026-07-19 A | WAD.S.1080 | 100% |  |
| WAD.S.1010 |  | Performance Bonds | 10d | 2026-07-06 A | 2026-07-19 A | WAD.S.1080 | 100% |  |
| WAD.S.1030 |  | Contract Schedule (Baseline Program) | 13d | 2026-07-06 A | 2026-07-19 A | WAD.S.1080 | 100% |  |
| WAD.S.1040 |  | HSE Plan | 12d | 2026-07-06 A | 2026-07-19 A | WAD.S.1080 | 100% |  |
| WAD.S.1050 |  | Quality Control Plan | 10d | 2026-07-06 A | 2026-07-19 A | WAD.S.1080, WAD.S.1010 FF | 100% |  |
| WAD.S.1060 |  | Project Organization Chart | 12d | 2026-07-06 A | 2026-07-19 A | WAD.S.1080, WAD.S.1040 FF | 100% |  |
| WAD.S.1070 |  | Submission of Staff CVs | 10d | 2026-07-06 A | 2026-07-19 A | WAD.S.1080, WAD.S.1050 FF | 100% |  |
|  | 6 | **Engineering** |  | 2026-06-16 | 2026-10-05 |  |  |  |
|  | 3 | **Shop Drawings** |  | 2026-06-16 | 2026-09-10 |  |  |  |
|  | 2 | **Prepare & Submit** |  | 2026-07-05 | 2026-09-05 |  |  |  |
| WAD.S.1250 |  | EXT. WORKS Shop Drawings (Prepare & Submit) | 10d | 2026-07-05 A | 2026-09-05 A | WAD.S.1190 SS+3d, WAD.S.1000 FF, WAD.S.1280 FF, WAD.S.1010 | 100% |  |
| WAD.S.1090 |  | FENCES Shop Drawings (Prepare & Submit) | 10d | 2026-07-06 A | 2026-07-19 A | WAD.S.1080, WAD.S.1070 FF | 100% |  |
| WAD.S.1140 |  | GUARD HOUSE 1 Shop Drawings (Prepare & Submit) | 10d | 2026-07-13 A | 2026-08-31 A | WAD.S.1090 SS+3d, WAD.S.1060 FF, WAD.S.1030 FF, WAD.S.1180 FF, WAD.S.1120 | 100% |  |
| WAD.S.1190 |  | GUARD HOUSE 1 Shop Drawings (Prepare & Submit) | 10d | 2026-07-16 A | 2026-08-31 A | WAD.S.1140 SS+3d, WAD.S.1260 FF, WAD.S.1150 | 100% |  |
|  | 7 | **Review & Approve** |  | 2026-06-16 | 2026-09-10 |  |  |  |
| WAD.S.1220 |  | FENCES Shop Drawings (Review & Approve) | 8d | 2026-06-16 A | 2026-06-22 A | WAD.S.1090, WAD.S.1090 FF | 100% |  |
| WAD.S.1300 |  | GUARD HOUSE 1 Shop Drawings (Review & Approve) | 8d | 2026-07-13 A | 2026-09-01 A | WAD.S.1140, WAD.S.1220, WAD.S.1190, WAD.S.1220 SS, WAD.S.1140 SS, WAD.S.1190 SS | 100% |  |
| WAD.S.1310 |  | GUARD HOUSE 1 Shop Drawings (Review & Approve) | 8d | 2026-07-13 A | 2026-09-05 A | WAD.S.1190, WAD.S.1300 FF, WAD.S.1190 FF, WAD.S.1190 SS | 100% |  |
| WAD.S.1330 |  | EXT. WORKS Shop Drawings (Review & Approve) | 8d | 2026-07-13 A | 2026-09-10 A | WAD.S.1250, WAD.S.1310 FF, WAD.S.1250 SS, WAD.S.1310 SS | 100% |  |
|  | 1 | **Material Submittal** |  | 2026-06-25 | 2026-10-05 |  |  |  |
|  | 1 | **Material Prepare & Submit** |  | 2026-07-05 | 2026-09-28 |  |  |  |
|  | 1 | **Short Lead Items** |  | 2026-07-06 | 2026-09-28 |  |  |  |
| WAD.S.1360 |  | structural steel beams, posts and rods for wall fence (Material Prepare & Submit) (FENCES) | 4d | 2026-07-06 A | 2026-07-19 A | WAD.S.1080 SS+37d | 100% |  |
| WAD.S.1400 |  | tubes, bolts, nuts and steel plates to strengthened the wall fence and posts (Material Prepare & Submit) (FENCES) | 4d | 2026-07-06 A | 2026-07-19 A | WAD.S.1080 SS+37d, WAD.S.1360 | 100% |  |
| WAD.S.1500 |  | bitumen waterproofing paint on concrete surfaces (Material Prepare & Submit) (FENCES) | 4d | 2026-07-06 A | 2026-07-19 A | WAD.S.1080 SS+37d, WAD.S.1400 | 100% |  |
| WAD.S.3070 |  | GROUNDING (Material Prepare & Submit) (GUARD HOUSE) | 4d | 2026-07-06 A | 2026-07-19 A | WAD.S.1080 SS+95d, WAD.S.2830 | 100% |  |
| WAD.S.3080 |  | ROAD WORKS (Material Prepare & Submit) (GUARD HOUSE) | 4d | 2026-07-06 A | 2026-07-19 A | WAD.S.1080 SS+94d, WAD.S.2830 | 100% |  |
| WAD.S.3580 |  | FIRE PROTECTION SYSTEM (fire extinguisher) (Material Prepare & Submit) (GUARD HOUSE) | 4d | 2026-07-06 A | 2026-07-19 A | WAD.S.1080 SS+99d | 100% |  |
| WAD.S.2830 |  | Concrete Masonry (200mm thick ) (Material Prepare & Submit) (GUARD HOUSE) | 4d | 2026-07-14 A | 2026-07-16 A | WAD.S.1080 SS+91d, WAD.S.2700 | 100% |  |
| WAD.S.2880 |  | Concrete Masonry (100mm thick ) (Material Prepare & Submit) (GUARD HOUSE) | 4d | 2026-07-14 A | 2026-07-16 A | WAD.S.1080 SS+92d, WAD.S.2700 | 100% |  |
| WAD.S.1350 |  | Backfilling Works (Material Prepare & Submit) | 4d | 2026-08-09 A | 2026-08-12 A | WAD.S.1080 SS | 100% |  |

| ID | WBS | Task | Duration | Start | Finish | Predecessors | Complete | Total float |
| --- | --- | --- | --- | --- | --- | --- | --- | --- |
| WAD.S.2630 |  | Manhole depth not exceeding 4.0m (Material Prepare & Submit) (GUARD HOUSE) | 4d | 2026-09-14 A | 2026-09-15 | WAD.S.1080 SS+58d | 50% | -5d |
| WAD.S.2690 |  | GRP Pipes laid in trenches(Material Prepare & Submit) (GUARD HOUS | 4d | 2026-09-14 A | 2026-09-15 | WAD.S.1080 SS+40d, WAD.S.1400 | 50% | -14d |
| WAD.S.2700 |  | 100 mm GRP pipe service connections (Material Prepare & Submit) (GUARD HOUSE) | 4d | 2026-09-14 A | 2026-09-15 | WAD.S.1080 SS+45d, WAD.S.1400 | 50% | -15d |
| WAD.S.2900 |  | SIDEWALKS AND CURBS (Material Prepare & Submit) (GUARD HOUSE) | 4d | 2026-09-19 A | 2026-09-17 | WAD.S.1080 SS+45d, WAD.S.2700 | 50% | -12d |
| WAD.S.4700 |  | UNDERGROUND DISTRIBUTION SYSTEM (Material Prepare & Submit) (GUARD HOUSE) | 4d | 2026-09-27 A | 2026-09-28 | WAD.S.1080 SS+70d | 50% | -3d |
|  | 2 | **Long Lead Items** |  | 2026-07-05 | 2026-09-22 |  |  |  |
| WAD.S.1490 |  | Intrusion Detection system including processor control units items and joints (Material Prepare & Submit) (FENCES) | 4d | 2026-07-05 A | 2026-09-14 | WAD.S.1080 SS+35d, WAD.S.1410 | 85% | -28.5d |
| WAD.S.3220 |  | WATER SUPPLY SYSTEM (Material Prepare & Submit) (GUARD HOUSE) | 4d | 2026-07-05 A | 2026-09-19 | WAD.S.1080 SS+62d | 70% | -3.1d |
| WAD.S.3230 |  | SEWER AND DRAINAGE SYSTEM (Material Prepare & Submit) (GUARD HOUSE) | 4d | 2026-07-05 A | 2026-09-20 | WAD.S.1080 SS+63d, WAD.S.2890 | 70% | -4.1d |
| WAD.S.3250 |  | HEATING, VENTILATION AND AIR CONDITIONING (Material Prepare & Submit) (GUARD HOUSE) | 4d | 2026-07-05 A | 2026-09-22 | WAD.S.1080 SS+66d, WAD.S.2890 | 80% | -6.7d |
| WAD.S.1410 |  | fix galvanized steel chain link gate including all necessary associated (Material Prepare & Submit) (FENCES) | 4d | 2026-07-06 A | 2026-07-19 A | WAD.S.1080 SS+57d, WAD.S.1360 | 100% |  |
| WAD.S.1580 |  | structural steel members and plates for main sliding gates (Material Prepare & Submit) (FENCES) | 4d | 2026-07-06 A | 2026-07-19 A | WAD.S.1080 SS+68d | 100% |  |
| WAD.S.1520 |  | Handholes\ Manholes (Material Prepare & Submit) (FENCES) | 4d | 2026-09-08 A | 2026-09-15 | WAD.S.1080 SS+54d, WAD.S.1490 | 85% | -8.2d |
| WAD.S.3150 |  | folding & sliding mounter combination ladder for building maintenance purpose (Material Prepare & Submit) (GUARD HOUSE) | 4d | 2026-09-08 A | 2026-09-20 | WAD.S.1080 SS+50d, WAD.S.2890 | 70% | -14.2d |
| WAD.S.3050 |  | Workstation chair (Material Prepare & Submit) (GUARD HOUSE) | 4d | 2026-09-14 A | 2026-09-15 | WAD.S.1080 SS+50d | 50% | -10d |
| WAD.S.3160 |  | overflow galvanized steel roof scupper (Material Prepare & Submit) (GUARD HOUSE) | 4d | 2026-09-14 A | 2026-09-15 | WAD.S.1080 SS+50d | 50% | -11d |
| WAD.S.3170 |  | counter desk (Material Prepare & Submit) (GUARD HOUSE) | 4d | 2026-09-14 A | 2026-09-15 | WAD.S.1080 SS+50d | 50% | -11d |
| WAD.S.3180 |  | install ceramic wall tiles (Material Prepare & Submit) (GUARD HOUSE) | 4d | 2026-09-14 A | 2026-09-15 | WAD.S.1080 SS+50d | 50% | -11d |
| WAD.S.3190 |  | PANEL SIGNAGE (Material Prepare & Submit) (GUARD HOUSE) | 4d | 2026-09-14 A | 2026-09-15 | WAD.S.1080 SS+50d | 50% | -11d |
| WAD.S.3200 |  | COMMUNICATIONS BACKBONE CABLING (Material Prepare & Submit) (GUARD HOUSE) | 4d | 2026-09-14 A | 2026-09-15 | WAD.S.1080 SS+50d | 50% | -11d |
| WAD.S.3210 |  | card reader IN/OUT (Material Prepare & Submit) (GUARD HOUSE) | 4d | 2026-09-14 A | 2026-09-15 | WAD.S.1080 SS+52d | 50% | -7d |
| WAD.S.3240 |  | SUPPLY AND INSTALL PLUMBING FIXTURES (Material Prepare & Submit) (GUARD HOUSE) | 4d | 2026-09-14 A | 2026-09-15 | WAD.S.1080 SS+53d | 50% | -6.5d |
| WAD.S.2840 |  | ceramic floor tiles (Material Prepare & Submit) (GUARD HOUSE) | 4d | 2026-09-19 A | 2026-09-17 | WAD.S.1080 SS+53d, WAD.S.2700 | 50% | -10d |
| WAD.S.2850 |  | Riyadh stone cladding (Material Prepare & Submit) (GUARD HOUSE) | 4d | 2026-09-19 A | 2026-09-17 | WAD.S.1080 SS+53d, WAD.S.2700 | 50% | -13d |
| WAD.S.2860 |  | UPS (Material Prepare & Submit) (GUARD HOUSE) | 4d | 2026-09-19 A | 2026-09-17 | WAD.S.1080 SS+45d, WAD.S.2700 | 50% | -15d |
| WAD.S.2890 |  | Panel boards (Material Prepare & Submit) (GUARD HOUSE) | 4d | 2026-09-19 A | 2026-09-17 | WAD.S.1080 SS+42d, WAD.S.2700 | 50% | -14.2d |
| WAD.S.3560 |  | aluminum framed double glazed windows (Material Prepare & Submit) (GUARD HOUSE) | 4d | 2026-09-19 A | 2026-09-17 | WAD.S.1080 SS+55d, WAD.S.3050 | 50% | -6d |
| WAD.S.3570 |  | Roller blind (Material Prepare & Submit) (GUARD HOUSE) | 4d | 2026-09-19 A | 2026-09-17 | WAD.S.1080 SS+55d, WAD.S.3050 | 50% | -10d |
| WAD.S.3590 |  | DATA COMMUNICATIONS (Material Prepare & Submit) (GUARD HOUSE) | 4d | 2026-09-19 A | 2026-09-17 | WAD.S.1080 SS+55d, WAD.S.3050 | 50% | -4d |
| WAD.S.3710 |  | COMPUTERS AND RELATED PERIPHERALS (Material Prepare & Submit) (GUARD HOUSE) | 4d | 2026-09-19 A | 2026-09-17 | WAD.S.1080 SS+50d, WAD.S.3050 | 50% | -4d |
| WAD.S.3030 |  | PANTRY CABINET (Material Prepare & Submit) (GUARD HOUSE) | 4d | 2026-09-23 A | 2026-09-20 | WAD.S.1080 SS+50d, WAD.S.2860 | 50% | -15d |
| WAD.S.3040 |  | 20mm thick black granite (Material Prepare & Submit) (GUARD HOUSE) | 4d | 2026-09-23 A | 2026-09-20 | WAD.S.1080 SS+60d, WAD.S.2860 | 50% | -6d |
| WAD.S.3060 |  | Safety Disconnect Switches complete with busbar, frame box (Material Prepare & Submit) (GUARD HOUSE) | 4d | 2026-09-23 A | 2026-09-20 | WAD.S.1080 SS+50d, WAD.S.2860 | 50% | -9d |
| WAD.S.3300 |  | heavy steel cover with frame for tanks (Material Prepare & Submit) (GUARD HOUSE) | 4d | 2026-09-23 A | 2026-09-20 | WAD.S.1080 SS+63d, WAD.S.2890 | 50% | -6d |
| WAD.S.3310 |  | HOLLOW METAL DOORS AND FRAMES (Material Prepare & Submit) (GUARD HOUSE) | 4d | 2026-09-23 A | 2026-09-20 | WAD.S.1080 SS+55d, WAD.S.2890 | 50% | -7d |
| WAD.S.3320 |  | ALUMINIUM DOORS (Material Prepare & Submit) (GUARD HOUSE) | 4d | 2026-09-23 A | 2026-09-20 | WAD.S.1080 SS+55d, WAD.S.2890 | 50% | -6d |
| WAD.S.3330 |  | TOILET AND BATH ACCESSROIES (Material Prepare & Submit) (GUARD HOUSE) | 4d | 2026-09-23 A | 2026-09-20 | WAD.S.1080 SS+60d, WAD.S.2890 | 50% | -0.9d |
| WAD.S.3340 |  | Waste Receptacle (Material Prepare & Submit) (GUARD HOUSE) | 4d | 2026-09-23 A | 2026-09-20 | WAD.S.1080 SS+55d, WAD.S.2890 | 50% | -9d |
| WAD.S.3350 |  | LIGHTING FIXTURES (Material Prepare & Submit) (GUARD HOUSE) | 4d | 2026-09-23 A | 2026-09-20 | WAD.S.1080 SS+55d, WAD.S.2890 | 50% | -8d |
| WAD.S.3360 |  | Access control panel (Material Prepare & Submit) (GUARD HOUSE) | 4d | 2026-09-23 A | 2026-09-20 | WAD.S.1080 SS+55d, WAD.S.2890 | 50% | -9d |
| WAD.S.3370 |  | VIDEO SURVEILLANCE (Material Prepare & Submit) (GUARD HOUSE) | 4d | 2026-09-23 A | 2026-09-20 | WAD.S.1080 SS+55d, WAD.S.2890 | 50% | -11d |
|  | 2 | **Material Review & Approve** |  | 2026-06-25 | 2026-10-05 |  |  |  |
|  | 1 | **Short Lead Items** |  | 2026-07-06 | 2026-10-05 |  |  |  |
| WAD.S.1390 |  | structural steel beams, posts and rods for wall fence (Material Review & Approve) (FENCES) | 6d | 2026-07-06 A | 2026-07-19 A | WAD.S.1360 | 100% |  |
| WAD.S.1440 |  | tubes, bolts, nuts and steel plates to strengthened the wall fence and posts (Material Review & Approve) (FENCES) | 6d | 2026-07-06 A | 2026-07-19 A | WAD.S.1400 | 100% |  |
| WAD.S.1550 |  | bitumen waterproofing paint on concrete surfaces (Material Review & Approve) (FENCES) | 6d | 2026-07-06 A | 2026-07-19 A | WAD.S.1500 | 100% |  |
| WAD.S.2990 |  | Concrete Masonry (200mm thick ) (Material Review & Approve) (GUARD HOUSE) | 6d | 2026-07-06 A | 2026-07-19 A | WAD.S.2830 | 100% |  |
| WAD.S.3120 |  | Concrete Masonry (100mm thick ) (Material Review & Approve) (GUARD HOUSE) | 6d | 2026-07-06 A | 2026-07-19 A | WAD.S.2880 | 100% |  |
| WAD.S.3540 |  | GROUNDING (Material Review & Approve) (GUARD HOUSE) | 6d | 2026-07-06 A | 2026-07-19 A | WAD.S.3070 | 100% |  |
| WAD.S.4060 |  | FIRE PROTECTION SYSTEM (fire extinguisher) (Material Review & Approve) (GUARD HOUSE) | 6d | 2026-07-06 A | 2026-07-19 A | WAD.S.3580 | 100% |  |
| WAD.S.3550 |  | ROAD WORKS (Material Review & Approve) (GUARD HOUSE) | 6d | 2026-07-15 A | 2026-09-19 | WAD.S.3080 | 50% | -5d |
| WAD.S.2810 |  | GRP Pipes laid in trenches(Material Review & Approve) (GUARD HOUS | 6d | 2026-08-02 A | 2026-08-02 A | WAD.S.2690 | 100% |  |
| WAD.S.2820 |  | 100 mm GRP pipe service connections(Material Review & Approve) (GUARD HOUSE) | 6d | 2026-08-02 A | 2026-08-02 A | WAD.S.2700 | 100% |  |
| WAD.S.1380 |  | Backfilling Works (Material Review & Approve) | 6d | 2026-08-12 A | 2026-08-18 A | WAD.S.1350 | 100% |  |
| WAD.S.2680 |  | Manhole depth not exceeding 4.0m (Material Review & Approve) (GUARD HOUSE) | 6d | 2026-09-16 | 2026-09-22 | WAD.S.2630 |  | -5d |
| WAD.S.3140 |  | SIDEWALKS AND CURBS (Material Review & Approve) (GUARD HOUSE) | 6d | 2026-09-19 | 2026-09-24 | WAD.S.2900 |  | -12d |
| WAD.S.4840 |  | UNDERGROUND DISTRIBUTION SYSTEM (Material Review & Approve) (GUARD HOUSE) | 6d | 2026-09-29 | 2026-10-05 | WAD.S.4700 |  | -3d |
|  | 2 | **Long Lead Items** |  | 2026-06-25 | 2026-09-27 |  |  |  |
| WAD.S.1480 |  | fix galvanized steel chain link gate including all necessary associated (Material Review & Approve) (FENCES) | 6d | 2026-06-25 A | 2026-06-27 A | WAD.S.1410 | 100% |  |
| WAD.S.1510 |  | Intrusion Detection system including processor control units items and joints (Material Review & Approve) (FENCES) | 6d | 2026-07-05 A | 2026-09-15 | WAD.S.1490, WAD.S.1490 SS | 85% | -28.5d |
| WAD.S.3670 |  | WATER SUPPLY SYSTEM (Material Review & Approve) (GUARD HOUSE) | 6d | 2026-07-05 A | 2026-09-20 | WAD.S.3220, WAD.S.3220 SS | 85% | -3.1d |
| WAD.S.3680 |  | SEWER AND DRAINAGE SYSTEM (Material Review & Approve) (GUARD HOUSE) | 6d | 2026-07-05 A | 2026-09-21 | WAD.S.3230, WAD.S.3670 SS, WAD.S.3230 SS | 85% | -4.1d |
| WAD.S.3700 |  | HEATING, VENTILATION AND AIR CONDITIONING (Material Review & Approve) (GUARD HOUSE) | 6d | 2026-07-05 A | 2026-09-23 | WAD.S.3250, WAD.S.3250 SS | 85% | -6.7d |
| WAD.S.2190 |  | structural steel members and plates for main sliding gates (Material Review & Approve) (FENCES) | 6d | 2026-07-06 A | 2026-07-19 A | WAD.S.1580 | 100% |  |
| WAD.S.3800 |  | TOILET AND BATH ACCESSROIES (Material Review & Approve) (GUARD HOUSE) | 6d | 2026-07-12 A | 2026-09-21 | WAD.S.3330 | 85% | -0.9d |
| WAD.S.3690 |  | SUPPLY AND INSTALL PLUMBING FIXTURES (Material Review & Approve) (GUARD HOUSE) | 6d | 2026-07-13 A | 2026-09-27 | WAD.S.3240, WAD.S.3240 FF, WAD.S.3650 FF | 75% | -15d |
| WAD.S.3530 |  | Safety Disconnect Switches complete with busbar, frame box (Material Review & Approve) (GUARD HOUSE) | 6d | 2026-07-28 A | 2026-08-01 A | WAD.S.3060, WAD.S.3500 FF | 100% |  |
| WAD.S.1650 |  | Handholes\ Manholes (Material Review & Approve) (FENCES) | 6d | 2026-09-15 | 2026-09-22 | WAD.S.1520 |  | -8.2d |
| WAD.S.3000 |  | ceramic floor tiles (Material Review & Approve) (GUARD HOUSE) | 6d | 2026-09-19 | 2026-09-24 | WAD.S.2840 |  | -10d |
| WAD.S.3010 |  | install Riyadh stone cladding (Material Review & Approve) (GUARD HOUSE) | 6d | 2026-09-19 | 2026-09-24 | WAD.S.2850 |  | -13d |

| ID | WBS | Task | Duration | Start | Finish | Predecessors | Complete | Total float |
| --- | --- | --- | --- | --- | --- | --- | --- | --- |
| WAD.S.3020 |  | UPS (Material Review & Approve) (GUARD HOUSE) | 6d | 2026-09-19 | 2026-09-24 | WAD.S.2860 |  | -11d |
| WAD.S.3130 |  | Panel boards (Material Review & Approve) (GUARD HOUSE) | 6d | 2026-09-19 | 2026-09-24 | WAD.S.2890, WAD.S.3010 FF |  | -13d |
| WAD.S.3660 |  | card reader IN/OUT (Material Review & Approve) (GUARD HOUSE) | 6d | 2026-09-19 | 2026-09-24 | WAD.S.3210, WAD.S.3000 FF |  | -9d |
| WAD.S.4040 |  | aluminum framed double glazed windows (Material Review & Approve) (GUARD HOUSE) | 6d | 2026-09-19 | 2026-09-24 | WAD.S.3560 |  | -6d |
| WAD.S.4050 |  | Roller blind (Material Review & Approve) (GUARD HOUSE) | 6d | 2026-09-19 | 2026-09-24 | WAD.S.3570 |  | -10d |
| WAD.S.4070 |  | DATA COMMUNICATIONS (Material Review & Approve) (GUARD HOUSE) | 6d | 2026-09-19 | 2026-09-24 | WAD.S.3590 |  | -4d |
| WAD.S.4080 |  | COMPUTERS AND RELATED PERIPHERALS (Material Review & Approve) (GUARD HOUSE) | 6d | 2026-09-19 | 2026-09-24 | WAD.S.3710 |  | -4d |
| WAD.S.3500 |  | PANTRY CABINET (Material Review & Approve) (GUARD HOUSE) | 6d | 2026-09-21 | 2026-09-27 | WAD.S.3030, WAD.S.3130 FF |  | -15d |
| WAD.S.3510 |  | 20mm thick black granite (Material Review & Approve) (GUARD HOUSE) | 6d | 2026-09-21 | 2026-09-27 | WAD.S.3040, WAD.S.3020 FF |  | -6d |
| WAD.S.3520 |  | Workstation chair (Material Review & Approve) (GUARD HOUSE) | 6d | 2026-09-21 | 2026-09-27 | WAD.S.3050, WAD.S.3500 FF |  | -10d |
| WAD.S.3600 |  | folding & sliding mounter combination ladder for building maintenance purpose (Material Review & Approve) (GUARD HOUSE) | 6d | 2026-09-21 | 2026-09-27 | WAD.S.3150, WAD.S.3530 FF |  | -15d |
| WAD.S.3610 |  | overflow galvanized steel roof scupper (Material Review & Approve) (GUARD HOUSE) | 6d | 2026-09-21 | 2026-09-27 | WAD.S.3160, WAD.S.3600 FF |  | -15d |
| WAD.S.3620 |  | counter desk (Material Review & Approve) (GUARD HOUSE) | 6d | 2026-09-21 | 2026-09-27 | WAD.S.3170, WAD.S.3610 FF |  | -15d |
| WAD.S.3630 |  | install ceramic wall tiles (Material Review & Approve) (GUARD HOUSE) | 6d | 2026-09-21 | 2026-09-27 | WAD.S.3180, WAD.S.3620 FF |  | -15d |
| WAD.S.3640 |  | PANEL SIGNAGE (Material Review & Approve) (GUARD HOUSE) | 6d | 2026-09-21 | 2026-09-27 | WAD.S.3190, WAD.S.3630 FF |  | -15d |
| WAD.S.3650 |  | COMMUNICATIONS BACKBONE CABLING (Material Review & Approve) (GUARD HOUSE) | 6d | 2026-09-21 | 2026-09-27 | WAD.S.3200, WAD.S.3640 FF |  | -15d |
| WAD.S.3770 |  | heavy steel cover with frame for tanks (Material Review & Approve) (GUARD HOUSE) | 6d | 2026-09-21 | 2026-09-27 | WAD.S.3300, WAD.S.3670 FF |  | -6d |
| WAD.S.3780 |  | HOLLOW METAL DOORS AND FRAMES (Material Review & Approve) (GUARD HOUSE) | 6d | 2026-09-21 | 2026-09-27 | WAD.S.3310, WAD.S.3310 FF |  | -7d |
| WAD.S.3790 |  | ALUMINIUM DOORS (Material Review & Approve) (GUARD HOUSE) | 6d | 2026-09-21 | 2026-09-27 | WAD.S.3320, WAD.S.3320 FF |  | -6d |
| WAD.S.3810 |  | Waste Receptacle (Material Review & Approve) (GUARD HOUSE) | 6d | 2026-09-21 | 2026-09-27 | WAD.S.3340 |  | -9d |
| WAD.S.3820 |  | LIGHTING FIXTURES (Material Review & Approve) (GUARD HOUSE) | 6d | 2026-09-21 | 2026-09-27 | WAD.S.3350 |  | -8d |
| WAD.S.3830 |  | Access control panel (Material Review & Approve) (GUARD HOUSE) | 6d | 2026-09-21 | 2026-09-27 | WAD.S.3360 |  | -9d |
| WAD.S.3840 |  | VIDEO SURVEILLANCE (Material Review & Approve) (GUARD HOUSE) | 6d | 2026-09-21 | 2026-09-27 | WAD.S.3370 |  | -11d |
|  | 7 | **Procurement** |  | 2026-06-08 | 2026-10-17 |  |  |  |
|  | 5 | **Fabrication & Delivery** |  | 2026-06-08 | 2026-10-17 |  |  |  |
|  | 1 | **Short Lead Items** |  | 2026-06-08 | 2026-10-08 |  |  |  |
| WAD.S.1430 |  | structural steel beams, posts and rods for wall fence (FENCES) | 4d | 2026-06-08 A | 2026-09-14 | WAD.S.1080 SS, WAD.S.1390 | 95% | -11.2d |
| WAD.S.1540 |  | tubes, bolts, nuts and steel plates to strengthened the wall fence and posts (FENCES) | 3d | 2026-06-09 A | 2026-09-14 | WAD.S.1080 SS, WAD.S.1440 | 95% | -11.15d |
| WAD.S.3730 |  | Concrete Masonry (200mm thick ) (GUARD HOUSE) | 3d | 2026-08-08 A | 2026-08-08 A | WAD.S.1080 SS, WAD.S.2990 | 100% |  |
| WAD.S.3890 |  | Concrete Masonry (100mm thick ) (GUARD HOUSE) | 2d | 2026-08-08 A | 2026-08-08 A | WAD.S.1080 SS, WAD.S.3120 | 100% |  |
| WAD.S.2180 |  | bitumen waterproofing paint on concrete surfaces (FENCES) | 4d | 2026-08-17 A | 2026-08-20 A | WAD.S.1080 SS, WAD.S.1550 | 100% |  |
| WAD.S.1420 |  | Backfilling Works | 4d | 2026-08-18 A | 2026-08-22 A | WAD.S.1080 SS, WAD.S.1380 | 100% |  |
| WAD.S.4780 |  | FIRE PROTECTION SYSTEM (fire extinguisher) (GUARD HOUSE) | 5d | 2026-09-14 | 2026-09-19 | WAD.S.1080 SS, WAD.S.4060 |  | 14d |
| WAD.S.3290 |  | 100 mm GRP pipe service connections (GUARD HOUSE) | 6d | 2026-09-16 | 2026-09-22 | WAD.S.1080 SS, WAD.S.2820 |  | -11d |
| WAD.S.4160 |  | GROUNDING (GUARD HOUSE) | 3d | 2026-09-16 | 2026-09-19 | WAD.S.1080 SS, WAD.S.3540 |  | 14d |
| WAD.S.3280 |  | GRP Pipes laid in trenches(Fabrication & Delivery) (GUARD HOUSE) | 6d | 2026-09-19 A | 2026-09-24 A | WAD.S.1080 SS, WAD.S.2810 | 100% |  |
| WAD.S.4170 |  | ROAD WORKS (GUARD HOUSE) | 6d | 2026-09-20 | 2026-09-26 | WAD.S.1080 SS, WAD.S.3550 |  | -5d |
| WAD.S.2970 |  | Manhole depth not exceeding 4.0m (GUARD HOUSE) | 8d | 2026-09-23 | 2026-10-01 | WAD.S.1080 SS, WAD.S.2680 |  | -5d |
| WAD.S.3910 |  | SIDEWALKS AND CURBS (GUARD HOUSE) | 7d | 2026-09-26 | 2026-10-03 | WAD.S.1080 SS, WAD.S.3140 |  | -12d |
| WAD.S.5080 |  | UNDERGROUND DISTRIBUTION SYSTEM (GUARD HOUSE) | 3d | 2026-10-06 | 2026-10-08 | WAD.S.1080 SS, WAD.S.4840 |  | -3d |
|  | 2 | **Long Lead Items** |  | 2026-08-22 | 2026-10-17 |  |  |  |
| WAD.S.1570 |  | fix galvanized steel chain link gate including all necessary associated (FENCES) | 15d | 2026-08-22 A | 2026-09-14 | WAD.S.1080 SS, WAD.S.1480 | 95% | -11.75d |
| WAD.S.2470 |  | structural steel members and plates for main sliding gates (FENCES) | 14d | 2026-09-09 A | 2026-09-14 | WAD.S.1080 SS, WAD.S.2190 | 95% | -11.7d |
| WAD.S.2170 |  | Intrusion Detection system including processor control units items and joints (FENCES) | 12d | 2026-09-15 | 2026-09-29 | WAD.S.1080 SS, WAD.S.1510 |  | -28.5d |
| WAD.S.4580 |  | WATER SUPPLY SYSTEM (GUARD HOUSE) | 13d | 2026-09-20 | 2026-10-05 | WAD.S.1080 SS, WAD.S.3670 |  | -2.1d |
| WAD.S.4590 |  | SEWER AND DRAINAGE SYSTEM (GUARD HOUSE) | 14d | 2026-09-21 | 2026-10-07 | WAD.S.1080 SS, WAD.S.3680 |  | -4.1d |
| WAD.S.4650 |  | TOILET AND BATH ACCESSROIES (GUARD HOUSE) | 13d | 2026-09-21 | 2026-10-06 | WAD.S.1080 SS, WAD.S.3800 |  | -0.9d |
| WAD.S.2260 |  | Handholes\ Manholes (FENCES) | 12d | 2026-09-22 | 2026-10-06 | WAD.S.1080 SS, WAD.S.1650 |  | -8.2d |
| WAD.S.4610 |  | HEATING, VENTILATION AND AIR CONDITIONING (GUARD HOUSE) | 14d | 2026-09-23 | 2026-10-10 | WAD.S.1080 SS, WAD.S.3700 |  | -6.7d |
| WAD.S.3740 |  | ceramic floor tiles (GUARD HOUSE) | 12d | 2026-09-26 | 2026-10-08 | WAD.S.1080 SS, WAD.S.3000 |  | -10d |
| WAD.S.3750 |  | install Riyadh stone cladding (GUARD HOUSE) | 12d | 2026-09-26 | 2026-10-08 | WAD.S.1080 SS, WAD.S.3010 |  | -9d |
| WAD.S.3760 |  | UPS (GUARD HOUSE) | 18d | 2026-09-26 | 2026-10-15 | WAD.S.1080 SS, WAD.S.3020 |  | -11d |
| WAD.S.3900 |  | Panel boards (GUARD HOUSE) | 18d | 2026-09-26 | 2026-10-15 | WAD.S.1080 SS, WAD.S.3130 |  | -9d |
| WAD.S.4570 |  | card reader IN/OUT (GUARD HOUSE) | 15d | 2026-09-26 | 2026-10-12 | WAD.S.1080 SS, WAD.S.3660 |  | -9d |
| WAD.S.4760 |  | aluminum framed double glazed windows (GUARD HOUSE) | 12d | 2026-09-26 | 2026-10-08 | WAD.S.1080 SS, WAD.S.4040 |  | -6d |
| WAD.S.4770 |  | Roller blind (GUARD HOUSE) | 12d | 2026-09-26 | 2026-10-08 | WAD.S.1080 SS, WAD.S.4050 |  | -10d |
| WAD.S.4790 |  | DATA COMMUNICATIONS (GUARD HOUSE) | 13d | 2026-09-26 | 2026-10-10 | WAD.S.1080 SS, WAD.S.4070 |  | -4d |
| WAD.S.4820 |  | COMPUTERS AND RELATED PERIPHERALS (GUARD HOUSE) | 10d | 2026-09-26 | 2026-10-06 | WAD.S.1080 SS, WAD.S.4080 |  | -4d |
| WAD.S.4120 |  | PANTRY CABINET (GUARD HOUSE) | 15d | 2026-09-28 | 2026-10-14 | WAD.S.1080 SS, WAD.S.3500 |  | -10d |
| WAD.S.4130 |  | 20mm thick black granite (GUARD HOUSE) | 13d | 2026-09-28 | 2026-10-12 | WAD.S.1080 SS, WAD.S.3510 |  | -6d |
| WAD.S.4140 |  | Workstation chair (GUARD HOUSE) | 16d | 2026-09-28 | 2026-10-15 | WAD.S.1080 SS, WAD.S.3520 |  | -10d |
| WAD.S.4150 |  | Safety Disconnect Switches complete with busbar, frame box (GUARD HOUSE) | 17d | 2026-09-28 | 2026-10-17 | WAD.S.1080 SS, WAD.S.3530 |  | -10d |
| WAD.S.4510 |  | folding & sliding mounter combination ladder for building maintenance purpose (GUARD HOUSE) | 13d | 2026-09-28 | 2026-10-12 | WAD.S.1080 SS, WAD.S.3600 |  | -8d |
| WAD.S.4520 |  | overflow galvanized steel roof scupper (GUARD HOUSE) | 13d | 2026-09-28 | 2026-10-12 | WAD.S.1080 SS, WAD.S.3610 |  | -8d |
| WAD.S.4530 |  | counter desk (GUARD HOUSE) | 14d | 2026-09-28 | 2026-10-13 | WAD.S.1080 SS, WAD.S.3620 |  | -10d |
| WAD.S.4540 |  | install ceramic wall tiles (GUARD HOUSE) | 12d | 2026-09-28 | 2026-10-11 | WAD.S.1080 SS, WAD.S.3630 |  | -8d |
| WAD.S.4550 |  | PANEL SIGNAGE (GUARD HOUSE) | 14d | 2026-09-28 | 2026-10-13 | WAD.S.1080 SS, WAD.S.3640 |  | -9d |
| WAD.S.4560 |  | COMMUNICATIONS BACKBONE CABLING (GUARD HOUSE) | 13d | 2026-09-28 | 2026-10-12 | WAD.S.1080 SS, WAD.S.3650 |  | -6d |
| WAD.S.4600 |  | SUPPLY PLUMBING FIXTURES (GUARD HOUSE) | 13d | 2026-09-28 | 2026-10-12 | WAD.S.1080 SS, WAD.S.3690 |  | -15d |
| WAD.S.4620 |  | heavy steel cover with frame for tanks (GUARD HOUSE) | 13d | 2026-09-28 | 2026-10-12 | WAD.S.1080 SS, WAD.S.3770 |  | -6d |

| ID | WBS | Task | Duration | Start | Finish | Predecessors | Complete | Total float |
| --- | --- | --- | --- | --- | --- | --- | --- | --- |
| WAD.S.4630 |  | HOLLOW METAL DOORS AND FRAMES (GUARD HOUSE) | 14d | 2026-09-28 | 2026-10-13 | WAD.S.1080 SS, WAD.S.3780 |  | -7d |
| WAD.S.4640 |  | ALUMINIUM DOORS (GUARD HOUSE) | 13d | 2026-09-28 | 2026-10-12 | WAD.S.1080 SS, WAD.S.3790 |  | -6d |
| WAD.S.4660 |  | Waste Receptacle (GUARD HOUSE) | 15d | 2026-09-28 | 2026-10-14 | WAD.S.1080 SS, WAD.S.3810 |  | -9d |
| WAD.S.4670 |  | LIGHTING FIXTURES (GUARD HOUSE) | 12d | 2026-09-28 | 2026-10-11 | WAD.S.1080 SS, WAD.S.3820 |  | -8d |
| WAD.S.4680 |  | Access control panel (GUARD HOUSE) | 14d | 2026-09-28 | 2026-10-13 | WAD.S.1080 SS, WAD.S.3830 |  | -9d |
| WAD.S.4690 |  | VIDEO SURVEILLANCE (GUARD HOUSE) | 14d | 2026-09-28 | 2026-10-13 | WAD.S.1080 SS, WAD.S.3840 |  | -11d |
|  | 8 | **Construction** |  | 2026-07-06 | 2026-11-10 |  |  |  |
|  | 1 | **FENCES** |  | 2026-07-06 | 2026-11-08 |  |  |  |
|  | 1 | **SITE WORKS** |  | 2026-07-06 | 2026-09-14 |  |  |  |
| WAD.S.1340 |  | Demolition Works | 10d | 2026-07-06 A | 2026-07-19 A | WAD.S.1010, WAD.S.1330 FS+12d, WAD.S.1330 SS+12d | 100% |  |
| WAD.S.1370 |  | Excavation Works | 15d | 2026-07-11 A | 2026-09-14 | WAD.S.1340 | 95% | -15.75d |
| WAD.S.1530 |  | Backfilling Works Before Foundation | 18d | 2026-08-01 A | 2026-09-05 A | WAD.S.1370, WAD.S.1420 | 100% |  |
| WAD.S.3380 |  | Backfilling Works After Foundation | 5d | 2026-09-01 A | 2026-09-05 A | WAD.S.1560, WAD.S.2330 | 100% |  |
|  | 2 | **CONCRETE WORKS** |  | 2026-07-09 | 2026-09-27 |  |  |  |
|  | 1 | **Part 1** |  | 2026-07-09 | 2026-09-20 |  |  |  |
| WAD.S.1560 |  | cast in place reinforced concrete for the sub-structures - Part 1 | 21d | 2026-07-09 A | 2026-09-20 | WAD.S.1370, WAD.S.1370 SS | 75% | -12.25d |
|  | 2 | **Part 2** |  | 2026-07-09 | 2026-09-27 |  |  |  |
| WAD.S.2720 |  | cast in place reinforced concrete for the sub-structures - Part 2 | 21d | 2026-07-09 A | 2026-09-27 | WAD.S.1560, WAD.S.1560 SS | 75% | -12.25d |
|  | 3 | **THERMAL & MOISTURE PROTECTION** |  | 2026-08-18 | 2026-10-17 |  |  |  |
|  | 1 | **Part 1** |  | 2026-08-18 | 2026-09-22 |  |  |  |
| WAD.S.2330 |  | Applying 2 coats of bitumen waterproofing paint on concrete surfaces - Part 1 | 21d | 2026-08-18 A | 2026-09-22 | WAD.S.2180, WAD.S.1560 FF+2d | 75% | -12d |
|  | 2 | **Part 2** |  | 2026-09-23 | 2026-10-17 |  |  |  |
| WAD.S.3420 |  | Applying 2 coats of bitumen waterproofing paint on concrete surfaces - Part 2 | 21d | 2026-09-23 | 2026-10-17 | WAD.S.2330 |  | -12d |
|  | 6 | **SPECIAL CONSTRUCTION- STRUCTURAL STEEL** |  | 2026-08-31 | 2026-10-20 |  |  |  |
|  | 1 | **Part 1** |  | 2026-08-31 | 2026-10-12 |  |  |  |
| WAD.S.2870 |  | install structural steel beams, posts and rods for wall fence - Part 1 | 21d | 2026-08-31 A | 2026-09-20 | WAD.S.1430, WAD.S.1560 SS, WAD.S.1570, WAD.S.2470 | 75% | -11.75d |
| WAD.S.3260 |  | Install tubes, bolts, nuts and steel plates to strengthened the wall fence and posts - Part 1 | 21d | 2026-09-26 A | 2026-09-30 | WAD.S.2870 SS+5d, WAD.S.1540 | 35% | -11.75d |
| WAD.S.3870 |  | fix galvanized steel chain link fence wall; including steel tube framing and posts, turn buckle - Part 1 | 21d | 2026-10-01 A | 2026-10-06 | WAD.S.3260 SS+5d | 35% | -11.75d |
| WAD.S.4720 |  | galvanized steel chain link gates Installation - Part 1 | 20d | 2026-10-07 A | 2026-10-12 | WAD.S.3870 SS+5d, WAD.S.2720 | 35% | -12.25d |
|  | 2 | **Part 2** |  | 2026-09-14 | 2026-10-20 |  |  |  |
| WAD.S.2920 |  | install structural steel beams, posts and rods for wall fence - Part 2 | 21d | 2026-09-14 | 2026-10-08 | WAD.S.2870 SS |  | -9.75d |
| WAD.S.3430 |  | Install tubes, bolts, nuts and steel plates to strengthened the wall fence and posts - Part 2 | 21d | 2026-09-14 | 2026-10-08 | WAD.S.3260 SS |  | -5.75d |
| WAD.S.3950 |  | fix galvanized steel chain link fence wall; including steel tube framing and posts, turn buckle - Part 2 | 21d | 2026-09-20 | 2026-10-14 | WAD.S.3870 SS |  | -7.75d |
| WAD.S.4730 |  | galvanized steel chain link gates Installation - Part 2 | 20d | 2026-09-27 | 2026-10-20 | WAD.S.4720 SS |  | -12.25d |
|  | 8 | **ELECTRICAL WORKS** |  | 2026-09-29 | 2026-11-08 |  |  |  |
| WAD.S.2640 |  | Intrusion Detection system including processor control units items and joints - 1st Fix | 9d | 2026-09-29 | 2026-10-10 | WAD.S.1530, WAD.S.2170 |  | -28.5d |
| WAD.S.2950 |  | Fiber Optic Outdoor Cable | 8d | 2026-10-10 | 2026-10-19 | WAD.S.2640 |  | -28.5d |
| WAD.S.2960 |  | Road crossing ducts for Fiber Optic Cable | 7d | 2026-10-10 | 2026-10-18 | WAD.S.2640 |  | -13.5d |
| WAD.S.2980 |  | install 50mm diameter high-density polyethylene (HDPE) pipe including the require pipe fittings for connection, | 8d | 2026-10-12 | 2026-10-21 | WAD.S.2960 SS+2d, WAD.S.2260 |  | -13.5d |
| WAD.S.3720 |  | Fiber Optic Outdoor Cable To Close The Loop | 9d | 2026-10-19 | 2026-10-29 | WAD.S.2950 |  | -28.5d |
| WAD.S.4810 |  | Handholes\ Manholes | 8d | 2026-10-29 | 2026-11-08 | WAD.S.3720 |  | -28.5d |
|  | 4 | **ELECTRICAL GATE BARRIER** |  | 2026-10-29 | 2026-11-08 |  |  |  |
| WAD.S.4830 |  | Install, Electrical gate barrier complete (cables, conduits, pipes, pulling cables in the conduits) | 8d | 2026-10-29 | 2026-11-08 | WAD.S.3720 |  | -28.5d |
|  | 2 | **GUARD HOUSE 1** |  | 2026-07-06 | 2026-10-19 |  |  |  |
|  | 1 | **SITE WORKS** |  | 2026-07-06 | 2026-10-05 |  |  |  |
|  | 4 | **Guard Rooms & Gates** |  | 2026-07-06 | 2026-09-08 |  |  |  |
| WAD.S.1450 |  | Excavation for guard rooms | 8d | 2026-07-06 A | 2026-07-19 A | WAD.S.1080 FS+60d | 100% |  |
| WAD.S.1590 |  | Replacment Under Foundation | 2d | 2026-08-02 A | 2026-08-04 A | WAD.S.1450 | 100% |  |
| WAD.S.2270 |  | Backfilling Under G.Beam | 2d | 2026-08-11 A | 2026-08-31 A | WAD.S.1820, WAD.S.1820 SS, WAD.S.1300 FF-1d | 100% |  |
| WAD.S.2280 |  | Backfilling Under S.O.G | 2d | 2026-09-07 A | 2026-09-08 A | WAD.S.1820, WAD.S.1820 SS | 100% |  |
|  | 5 | **Guard Rooms & Gates (CONCRETE Works)** |  | 2026-07-12 | 2026-10-05 |  |  |  |
| WAD.S.1820 |  | Isolated Footings & Column Neck | 5d | 2026-07-12 A | 2026-08-08 A | WAD.S.1600 SS+2d, WAD.S.1600 FF+2d | 100% |  |
| WAD.S.1600 |  | 50 mm thickness lean concrete under the foundation. | 3d | 2026-08-04 A | 2026-08-06 A | WAD.S.1590 SS | 100% |  |
| WAD.S.2340 |  | 50 mm thickness lean concrete under grade beams. | 3d | 2026-08-31 A | 2026-09-03 A | WAD.S.2270 | 100% |  |
| WAD.S.2600 |  | Grade beams | 5d | 2026-09-03 A | 2026-09-09 A | WAD.S.2340 | 100% |  |
| WAD.S.2710 |  | Raft and R.C. walls | 5d | 2026-09-05 A | 2026-09-09 A | WAD.S.2650 SS+2d | 100% |  |
| WAD.S.2750 |  | Roof Slab | 8d | 2026-09-06 A | 2026-09-08 A | WAD.S.2760 SS, WAD.S.2650 | 100% |  |
| WAD.S.2760 |  | Beams | 8d | 2026-09-06 A | 2026-09-08 A | WAD.S.2650 | 100% |  |
| WAD.S.2650 |  | Columns | 4d | 2026-09-09 A | 2026-09-14 A | WAD.S.2600 | 100% |  |
| WAD.S.3400 |  | Concrete Pad | 3d | 2026-09-12 A | 2026-09-14 A | WAD.S.2760 | 100% |  |
| WAD.S.3390 |  | Provide and cast concrete floor slab on grade | 5d | 2026-09-14 | 2026-09-19 | WAD.S.2600 SS+2d, WAD.S.2280, WAD.S.2760 |  | -3d |
| WAD.S.3410 |  | Tanks Raft | 5d | 2026-09-14 | 2026-09-19 | WAD.S.2750 |  | -3d |
| WAD.S.3940 |  | Tanks Walls | 5d | 2026-09-20 | 2026-09-24 | WAD.S.3410, WAD.S.3390, WAD.S.3400 |  | -3d |
| WAD.S.4850 |  | Tanks Slab | 4d | 2026-10-01 | 2026-10-05 | WAD.S.3940, WAD.S.4710 |  | 0d |
|  | 3 | **MASONRY UNIT** |  | 2026-09-12 | 2026-09-14 |  |  |  |
| WAD.S.2910 |  | install Concrete Masonry Unit (CMU) for walls | 3d | 2026-09-12 A | 2026-09-14 | WAD.S.2750 SS+3d, WAD.S.2710 | 80% | -7.6d |
|  | 6 | **THERMAL & MOISTURE PROTECTION** |  | 2026-09-16 | 2026-10-04 |  |  |  |
|  | 1 | **THERMAL & MOISTURE PROTECTION - Foundation** |  | 2026-09-16 | 2026-10-04 |  |  |  |
| WAD.S.3920 |  | apply 2 coats of bitumen waterproofing paint on concrete surface in contact with soil | 2d | 2026-09-16 A | 2026-09-19 A | WAD.S.3930 SS | 100% |  |
| WAD.S.3930 |  | install liquid applied waterproofing coating; single-component pitch modified polyurethane | 2d | 2026-09-29 | 2026-10-01 | WAD.S.2340 FS+22d |  | 1.3d |

| ID | WBS | Task | Duration | Start | Finish | Predecessors | Complete | Total float |
| --- | --- | --- | --- | --- | --- | --- | --- | --- |
| WAD.S.4090 |  | install geotextile sheet | 2d | 2026-10-01 | 2026-10-04 | WAD.S.3930 |  | 1.3d |
|  | 7 | **ROOFING SYSTEM** |  | 2026-09-26 | 2026-10-08 |  |  |  |
| WAD.S.4180 |  | install liquid applied waterproofing coating single-component pitch modified polyurethane based elastomeric | 11d | 2026-09-26 | 2026-10-08 | WAD.S.3090 SS+10d |  | -7.6d |
| WAD.S.4190 |  | install 4mm thick APP modified bituminous membrane - single layer | 11d | 2026-09-26 | 2026-10-08 | WAD.S.4280 SS |  | -7.6d |
| WAD.S.4200 |  | install 75mm thick rigid insulation (extruded polystyrene) | 11d | 2026-09-26 | 2026-10-08 | WAD.S.4190 SS |  | -7.6d |
| WAD.S.4210 |  | cast in place foam concrete screed, 50mm thick minimum; laid to fall and cross fall | 11d | 2026-09-26 | 2026-10-08 | WAD.S.4200 SS |  | -7.6d |
| WAD.S.4220 |  | install 300 micron polyethylene sheet | 11d | 2026-09-26 | 2026-10-08 | WAD.S.4210 SS |  | -7.6d |
| WAD.S.4230 |  | install 50mm thick loose gravel toppings | 11d | 2026-09-26 | 2026-10-08 | WAD.S.4220 SS |  | -7.6d |
| WAD.S.4240 |  | install high density polyisocynurate cover board | 11d | 2026-09-26 | 2026-10-08 | WAD.S.4230 SS |  | -7.6d |
| WAD.S.4250 |  | install UV resistant geotextile sheet | 11d | 2026-09-26 | 2026-10-08 | WAD.S.4240 SS |  | -7.6d |
| WAD.S.4260 |  | fixing 3mm thick extruded aluminum flashing 40mm with sealant and all other accessories | 11d | 2026-09-26 | 2026-10-08 | WAD.S.4250 SS |  | -7.6d |
| WAD.S.4270 |  | install Terrazzo tiles | 11d | 2026-09-26 | 2026-10-08 | WAD.S.4260 SS |  | -7.6d |
|  | 2 | **THERMAL & MOISTURE PROTECTION - Tanks** |  | 2026-09-26 | 2026-10-08 |  |  |  |
| WAD.S.4710 |  | install water stop for tanks according to the drawings and specification | 5d | 2026-09-26 | 2026-09-30 | WAD.S.3940 |  | -3d |
| WAD.S.4280 |  | lay epoxy 2 coating for inner surfaces for bottom of the roof | 11d | 2026-09-26 | 2026-10-08 | WAD.S.4180 SS |  | -7.6d |
|  | 9 | **FINISHES** |  | 2026-09-14 | 2026-10-19 |  |  |  |
| WAD.S.3090 |  | install concrete plastering | 4d | 2026-09-14 | 2026-09-19 | WAD.S.2910 |  | -7.6d |
| WAD.S.4940 |  | install ceramic floor tiles | 3d | 2026-10-10 | 2026-10-12 | WAD.S.1810 FF, WAD.S.3740, WAD.S.2920 |  | -10d |
| WAD.S.4950 |  | install granite flooring | 2d | 2026-10-10 | 2026-10-11 | WAD.S.4940 SS |  | -10d |
| WAD.S.5010 |  | install granite saddles and thresholds | 3d | 2026-10-10 | 2026-10-12 | WAD.S.5040 SS, WAD.S.4710 |  | -10d |
| WAD.S.5020 |  | install Riyadh stone cladding | 3d | 2026-10-10 | 2026-10-12 | WAD.S.5030 FF, WAD.S.3750 |  | -9d |
| WAD.S.5030 |  | install 3mm steel CNC laser cut panels | 3d | 2026-10-10 | 2026-10-12 | WAD.S.5060 FF |  | -9d |
| WAD.S.5040 |  | gypsum board suspended ceiling | 5d | 2026-10-10 | 2026-10-14 | WAD.S.4950 SS |  | -10d |
| WAD.S.5060 |  | install aluminum cladding | 2d | 2026-10-11 | 2026-10-12 | WAD.S.5010 FF |  | -9d |
| WAD.S.5120 |  | install ceramic wall tiles | 3d | 2026-10-12 | 2026-10-14 | WAD.S.4950 SS, WAD.S.4540, WAD.S.3430 |  | -8d |
| WAD.S.5530 |  | install two coats of acrylic paint on internal walls | 2d | 2026-10-18 | 2026-10-19 | WAD.S.5120 FF, WAD.S.3420 |  | -12d |
| WAD.S.5540 |  | install two coats of acrylic paint (suitable for exterior use) on external | 2d | 2026-10-18 | 2026-10-19 | WAD.S.5530 SS |  | -12d |
|  | 13 | **MECHANICAL WORKS** |  | 2026-09-14 | 2026-10-15 |  |  |  |
|  | 1 | **MECHANICAL WORKS - 1st Fix** |  | 2026-09-14 | 2026-09-24 |  |  |  |
| WAD.S.1660 |  | WATER SUPPLY SYSTEM - 1st Fix | 10d | 2026-09-14 | 2026-09-24 | WAD.S.1680 SS |  | -36.5d |
| WAD.S.1670 |  | SEWER AND DRAINAGE SYSTEM - 1st Fix | 10d | 2026-09-14 | 2026-09-24 | WAD.S.1660 SS |  | -36.5d |
| WAD.S.1680 |  | IRRIGATION SYSTEM - 1st Fix | 10d | 2026-09-14 | 2026-09-24 | WAD.S.1820 SS |  | -36.5d |
| WAD.S.1710 |  | HEATING, VENTILATION AND AIR CONDITIONING - 1st Fix | 10d | 2026-09-14 | 2026-09-24 | WAD.S.1670 SS |  | -36.5d |
| WAD.S.1720 |  | Exhaust fans - 1st Fix | 10d | 2026-09-14 | 2026-09-24 | WAD.S.1710 SS |  | -36.5d |
|  | 2 | **MECHANICAL WORKS - Final Fix** |  | 2026-10-13 | 2026-10-15 |  |  |  |
| WAD.S.5130 |  | installation of Fire extinguishers as per drawings, specifications | 3d | 2026-10-13 | 2026-10-15 | WAD.S.1720, WAD.S.5060, WAD.S.5030, WAD.S.4270 FS+2d |  | -9d |
| WAD.S.5140 |  | gully traps with heavy duty cover | 3d | 2026-10-13 | 2026-10-15 | WAD.S.5130 FF |  | -9d |
| WAD.S.5150 |  | chamber with heavy duty cover | 3d | 2026-10-13 | 2026-10-15 | WAD.S.5140 FF |  | -9d |
| WAD.S.5160 |  | INSTALL PLUMBING FIXTURES | 3d | 2026-10-13 | 2026-10-15 | WAD.S.5150 FF |  | -9d |
| WAD.S.5910 |  | HEATING, VENTILATION AND AIR CONDITIONING - Final Fix | 3d | 2026-10-13 | 2026-10-15 | WAD.S.5160 FF, WAD.S.4610 |  | -9d |
| WAD.S.5920 |  | Exhaust fans - Final Fix | 3d | 2026-10-13 | 2026-10-15 | WAD.S.5910 FF |  | -9d |
| WAD.S.5930 |  | Bulbblers and Spreyers of IRRIGATION SYSTEM | 3d | 2026-10-13 | 2026-10-15 | WAD.S.5920 FF |  | -9d |
| WAD.S.5980 |  | WATER SUPPLY SYSTEM - Final Fix | 3d | 2026-10-13 | 2026-10-15 | WAD.S.5930 FF, WAD.S.4590, WAD.S.4580 |  | -9d |
| WAD.S.5990 |  | IRRIGATION SYSTEM - Final Fix | 3d | 2026-10-13 | 2026-10-15 | WAD.S.5980 FF |  | -9d |
|  | 15 | **ELECTRICAL WORKS** |  | 2026-09-06 | 2026-10-18 |  |  |  |
|  | 1 | **ELECTRICAL WORKS - 1st Fix** |  | 2026-09-06 | 2026-09-24 |  |  |  |
| WAD.S.1770 |  | GROUNDING - 1st Fix | 10d | 2026-09-06 A | 2026-09-19 | WAD.S.1760 SS | 50% | 5d |
| WAD.S.1690 |  | LIGHTING AND POWER TYPE PANELBOARDS - 1st Fix | 10d | 2026-09-14 | 2026-09-24 | WAD.S.1720 SS |  | 5d |
| WAD.S.1700 |  | UPS 3KVA (installed inside the rack) - 1st Fix | 10d | 2026-09-14 | 2026-09-24 | WAD.S.1690 SS |  | 5d |
| WAD.S.1730 |  | power source with built-in photocell sensor for automatic electrical connection during day/light times - 1st Fix | 10d | 2026-09-14 | 2026-09-24 | WAD.S.1700 SS |  | 5d |
| WAD.S.1740 |  | UNDERGROUND DISTRIBUTION SYSTEM - 1st Fix | 10d | 2026-09-14 | 2026-09-24 | WAD.S.1730 SS |  | 5d |
| WAD.S.1750 |  | LIGHTING FIXTURES - 1st Fix | 10d | 2026-09-14 | 2026-09-24 | WAD.S.1740 SS |  | 5d |
| WAD.S.1760 |  | installation of Wiring devices includes switches and Receptacle outlets complete with device boxes - 1st Fix | 10d | 2026-09-14 | 2026-09-24 | WAD.S.1750 SS |  | 5d |
| WAD.S.1780 |  | card reader IN/OUT - 1st Fix | 10d | 2026-09-14 | 2026-09-24 | WAD.S.1770 SS |  | 5d |
| WAD.S.1790 |  | CCTV cameras - 1st Fix | 10d | 2026-09-14 | 2026-09-24 | WAD.S.1780 SS |  | 5d |
| WAD.S.1800 |  | Access control panel - 1st Fix | 10d | 2026-09-14 | 2026-09-24 | WAD.S.1790 SS |  | 5d |
| WAD.S.1810 |  | fire alarm system including wires, conduit and other materials - 1st Fix | 10d | 2026-09-14 | 2026-09-24 | WAD.S.1800 SS |  | 5d |
|  | 2 | **ELECTRICAL WORKS - Final Fix** |  | 2026-10-12 | 2026-10-18 |  |  |  |
| WAD.S.5970 |  | 12-Port, SMF, Fiber Optic Patch Panels; | 4d | 2026-10-12 | 2026-10-15 | WAD.S.6170 FF |  | -9d |
| WAD.S.5940 |  | power source with built-in photocell sensor for automatic electrical connection during day/light times - Final Fix | 3d | 2026-10-13 | 2026-10-15 | WAD.S.5980 FF |  | -9d |
| WAD.S.5950 |  | LIGHTING FIXTURES - Final Fix | 3d | 2026-10-13 | 2026-10-15 | WAD.S.6140 FF, WAD.S.4670 |  | -9d |
| WAD.S.5960 |  | GROUNDING - Final Fix | 3d | 2026-10-13 | 2026-10-15 | WAD.S.6150 FF, WAD.S.1810, WAD.S.5020 |  | -9d |
| WAD.S.6160 |  | card reader IN/OUT - Final Fix | 3d | 2026-10-13 | 2026-10-15 | WAD.S.5960 FF, WAD.S.4570 |  | -9d |
| WAD.S.6170 |  | 12-Port CAT6A UTP fully loaded patch panel | 3d | 2026-10-13 | 2026-10-15 | WAD.S.6270 FF |  | -9d |
| WAD.S.6180 |  | COMPUTERS AND RELATED PERIPHERALS | 3d | 2026-10-13 | 2026-10-15 | WAD.S.5970 FF, WAD.S.4820 |  | -9d |
| WAD.S.6140 |  | UNDERGROUND DISTRIBUTION SYSTEM - Final Fix | 2d | 2026-10-14 | 2026-10-15 | WAD.S.5940 FF |  | -9d |
| WAD.S.6150 |  | installation of Wiring devices includes switches and Receptacle outlets complete with device boxes - Final Fix | 2d | 2026-10-14 | 2026-10-15 | WAD.S.5950 FF |  | -9d |
| WAD.S.6190 |  | VIDEO SURVEILLANCE | 4d | 2026-10-14 | 2026-10-18 | WAD.S.6180 FF, WAD.S.4690 |  | -11d |
| WAD.S.6200 |  | CCTV storage system, as specified; | 4d | 2026-10-14 | 2026-10-18 | WAD.S.6290 FF |  | -11d |
| WAD.S.6270 |  | Access control panel - Final Fix | 2d | 2026-10-14 | 2026-10-15 | WAD.S.6160 FF, WAD.S.4680 |  | -9d |

| ID | WBS | Task | Duration | Start | Finish | Predecessors | Complete | Total float |
| --- | --- | --- | --- | --- | --- | --- | --- | --- |
| WAD.S.6280 |  | Central (Headend) System Components; | 3d | 2026-10-15 | 2026-10-18 | WAD.S.6190 FF |  | -11d |
| WAD.S.6290 |  | VSS System, as specified; | 3d | 2026-10-15 | 2026-10-18 | WAD.S.6280 FF |  | -11d |
| WAD.S.6300 |  | CCTV cameras - Final Fix | 3d | 2026-10-15 | 2026-10-18 | WAD.S.6200 FF |  | -11d |
| WAD.S.6310 |  | ELECTRICAL GATE BARRIER | 3d | 2026-10-15 | 2026-10-18 | WAD.S.6420 FF |  | -11d |
| WAD.S.6320 |  | fire alarm system including wires, conduit and other materials - Final Fix | 3d | 2026-10-15 | 2026-10-18 | WAD.S.6430 FF |  | -11d |
| WAD.S.6330 |  | Analog addressable fire alarm control panel with battery | 3d | 2026-10-15 | 2026-10-18 | WAD.S.6320 FF |  | -11d |
| WAD.S.6340 |  | LIGHTING AND POWER TYPE PANELBOARDS - Final Fix | 3d | 2026-10-15 | 2026-10-18 | WAD.S.6440 FF |  | -11d |
| WAD.S.6420 |  | 20A , ATS ( Automatic transfer switch) for UPS | 2d | 2026-10-17 | 2026-10-18 | WAD.S.6300 FF, WAD.S.3760 |  | -11d |
| WAD.S.6430 |  | LIGHTNING PROTECTION | 2d | 2026-10-17 | 2026-10-18 | WAD.S.6310 FF |  | -11d |
| WAD.S.6440 |  | Intelligent Ionization / Photoelectric smoke and heat detector with base | 2d | 2026-10-17 | 2026-10-18 | WAD.S.6330 FF |  | -11d |
|  | 4 | **METALS** |  | 2026-10-15 | 2026-10-17 |  |  |  |
| WAD.S.5500 |  | folding & sliding mounter combination ladder for building maintenance purpose | 2d | 2026-10-15 | 2026-10-17 | WAD.S.5040, WAD.S.4510 |  | -10d |
| WAD.S.5510 |  | install of overflow galvanized steel roof scupper with gray color with angular secondary support | 2d | 2026-10-15 | 2026-10-17 | WAD.S.5500 SS, WAD.S.4520 |  | -10d |
| WAD.S.5520 |  | install heavy steel cover with frame including all necessary fixings | 2d | 2026-10-15 | 2026-10-17 | WAD.S.5510 SS |  | -10d |
|  | 5 | **WOODS AND PLASTICS** |  | 2026-10-14 | 2026-10-17 |  |  |  |
| WAD.S.5890 |  | COUNTER DESK | 3d | 2026-10-14 | 2026-10-17 | WAD.S.5880 FF, WAD.S.4530 |  | -10d |
| WAD.S.5880 |  | PANTRY CABINET | 2d | 2026-10-15 | 2026-10-17 | WAD.S.5520 SS, WAD.S.4120 |  | -10d |
|  | 8 | **DOORS & WINDOWS** |  | 2026-10-13 | 2026-10-17 |  |  |  |
| WAD.S.5050 |  | install hollow metal door | 4d | 2026-10-13 | 2026-10-17 | WAD.S.5010 |  | -10d |
| WAD.S.6120 |  | Install aluminum framed double glazed windows | 3d | 2026-10-13 | 2026-10-15 | WAD.S.5050 SS, WAD.S.4760 |  | -9d |
| WAD.S.5900 |  | Install Aluminum Door | 3d | 2026-10-14 | 2026-10-17 | WAD.S.5890 SS, WAD.S.5060 |  | -10d |
|  | 10 | **SPECIALTIES** |  | 2026-10-15 | 2026-10-18 |  |  |  |
| WAD.S.6130 |  | TOILET ACCESSROIES | 2d | 2026-10-15 | 2026-10-17 | WAD.S.5980 SS, WAD.S.5900 FF |  | -10d |
| WAD.S.6410 |  | PANEL SIGNAGE | 2d | 2026-10-17 | 2026-10-18 | WAD.S.6130 SS, WAD.S.6440 FF, WAD.S.4550 |  | -11d |
|  | 11 | **FURNISHINGS** |  | 2026-10-18 | 2026-10-18 |  |  |  |
| WAD.S.6450 |  | Workstation chair | 1d | 2026-10-18 | 2026-10-18 | WAD.S.6410 FF, WAD.S.4140 |  | -11d |
| WAD.S.6460 |  | Workstation table | 1d | 2026-10-18 | 2026-10-18 | WAD.S.6450 SS |  | -11d |
| WAD.S.6470 |  | Roller blind | 1d | 2026-10-18 | 2026-10-18 | WAD.S.6460 SS |  | -11d |
| WAD.S.6480 |  | Waste Receptacle | 1d | 2026-10-18 | 2026-10-18 | WAD.S.6470 SS, WAD.S.4660 |  | -11d |
|  | 3 | **GUARD HOUSE 2** |  | 2026-07-11 | 2026-11-10 |  |  |  |
|  | 1 | **SITE WORKS** |  | 2026-07-11 | 2026-11-03 |  |  |  |
|  | 4 | **Guard Rooms & Gates** |  | 2026-07-11 | 2026-09-15 |  |  |  |
| WAD.S.1460 |  | Excavation for guard rooms | 8d | 2026-07-11 A | 2026-07-23 A | WAD.S.1080 FS+17d | 100% |  |
| WAD.S.1610 |  | Replacment Under Foundation | 2d | 2026-08-04 A | 2026-08-04 A | WAD.S.1460 | 100% |  |
| WAD.S.2290 |  | Backfilling Under G.Beam | 2d | 2026-08-11 A | 2026-09-14 | WAD.S.1990 | 85% | -26.8d |
| WAD.S.2300 |  | Backfilling Under S.O.G | 2d | 2026-09-14 | 2026-09-15 | WAD.S.1990 |  | -10d |
|  | 5 | **Guard Rooms & Gates (CONCRETE Works)** |  | 2026-07-11 | 2026-11-03 |  |  |  |
| WAD.S.1990 |  | Isolated Footings & Column Neck | 5d | 2026-07-11 A | 2026-08-08 A | WAD.S.1620 SS+2d, WAD.S.1620 FF+2d | 100% |  |
| WAD.S.1620 |  | 50 mm thickness lean concrete under the foundation. | 3d | 2026-08-04 A | 2026-08-06 A | WAD.S.1610 SS | 100% |  |
| WAD.S.2400 |  | 50 mm thickness lean concrete under grade beams. | 3d | 2026-09-08 A | 2026-09-12 A | WAD.S.2290 | 100% |  |
| WAD.S.2610 |  | Grade beams | 5d | 2026-09-24 A | 2026-09-28 | WAD.S.2400, WAD.S.1720 | 50% | -36.5d |
| WAD.S.2660 |  | Columns | 4d | 2026-09-28 | 2026-10-03 | WAD.S.2610 |  | -36.5d |
| WAD.S.2730 |  | Raft and R.C. walls | 5d | 2026-09-30 | 2026-10-06 | WAD.S.2660 SS+2d |  | -36.5d |
| WAD.S.2770 |  | Roof Slab | 8d | 2026-10-03 | 2026-10-12 | WAD.S.2780 SS, WAD.S.2660 |  | -36.5d |
| WAD.S.2780 |  | Beams | 8d | 2026-10-03 | 2026-10-12 | WAD.S.2660 |  | -36.5d |
| WAD.S.3440 |  | Provide and cast concrete floor slab on grade | 5d | 2026-10-12 | 2026-10-18 | WAD.S.2610 SS+2d, WAD.S.2300, WAD.S.2780 |  | -32.5d |
| WAD.S.3450 |  | Concrete Pad | 3d | 2026-10-12 | 2026-10-15 | WAD.S.2780 |  | -30.5d |
| WAD.S.3460 |  | Tanks Raft | 5d | 2026-10-12 | 2026-10-18 | WAD.S.2770 |  | -32.5d |
| WAD.S.3980 |  | Tanks Walls | 5d | 2026-10-18 | 2026-10-24 | WAD.S.3460, WAD.S.3440, WAD.S.3450 |  | -32.5d |
| WAD.S.4890 |  | Tanks Slab | 4d | 2026-10-29 | 2026-11-03 | WAD.S.3980, WAD.S.4740 |  | -24.5d |
|  | 3 | **MASONRY UNIT** |  | 2026-10-06 | 2026-10-10 |  |  |  |
| WAD.S.2930 |  | install Concrete Masonry Unit (CMU) for walls | 3d | 2026-10-06 | 2026-10-10 | WAD.S.2770 SS+3d, WAD.S.2730 |  | -36.5d |
|  | 6 | **THERMAL & MOISTURE PROTECTION** |  | 2026-09-16 | 2026-10-12 |  |  |  |
|  | 1 | **THERMAL & MOISTURE PROTECTION - Foundation** |  | 2026-09-16 | 2026-10-12 |  |  |  |
| WAD.S.3960 |  | apply 2 coats of bitumen waterproofing paint on concrete surface in contact with soil | 2d | 2026-09-16 A | 2026-09-19 A | WAD.S.3970 SS | 100% |  |
| WAD.S.3970 |  | install liquid applied waterproofing coating; single-component pitch modified polyurethane | 2d | 2026-10-07 | 2026-10-10 | WAD.S.2400 FS+22d |  | -5.4d |
| WAD.S.4100 |  | install geotextile sheet | 2d | 2026-10-10 | 2026-10-12 | WAD.S.3970 |  | -5.4d |
|  | 7 | **ROOFING SYSTEM** |  | 2026-10-21 | 2026-11-03 |  |  |  |
| WAD.S.4290 |  | install liquid applied waterproofing coating single-component pitch modified polyurethane based elastomeric | 11d | 2026-10-21 | 2026-11-03 | WAD.S.3100 SS+10d |  | -36.5d |
| WAD.S.4300 |  | install 4mm thick APP modified bituminous membrane - single layer | 11d | 2026-10-21 | 2026-11-03 | WAD.S.4390 SS |  | -36.5d |
| WAD.S.4310 |  | install 75mm thick rigid insulation (extruded polystyrene) | 11d | 2026-10-21 | 2026-11-03 | WAD.S.4300 SS |  | -36.5d |
| WAD.S.4320 |  | cast in place foam concrete screed, 50mm thick minimum; laid to fall and cross fall | 11d | 2026-10-21 | 2026-11-03 | WAD.S.4310 SS |  | -36.5d |
| WAD.S.4330 |  | install 300 micron polyethylene sheet | 11d | 2026-10-21 | 2026-11-03 | WAD.S.4320 SS |  | -36.5d |
| WAD.S.4340 |  | install 50mm thick loose gravel toppings | 11d | 2026-10-21 | 2026-11-03 | WAD.S.4330 SS |  | -36.5d |
| WAD.S.4350 |  | install high density polyisocynurate cover board | 11d | 2026-10-21 | 2026-11-03 | WAD.S.4340 SS |  | -36.5d |
| WAD.S.4360 |  | install UV resistant geotextile sheet | 11d | 2026-10-21 | 2026-11-03 | WAD.S.4350 SS |  | -36.5d |
| WAD.S.4370 |  | fixing 3mm thick extruded aluminum flashing 40mm with sealant and all other accessories | 11d | 2026-10-21 | 2026-11-03 | WAD.S.4360 SS |  | -36.5d |
| WAD.S.4380 |  | install Terrazzo tiles | 11d | 2026-10-21 | 2026-11-03 | WAD.S.4370 SS |  | -36.5d |
|  | 2 | **THERMAL & MOISTURE PROTECTION - Tanks** |  | 2026-10-21 | 2026-11-03 |  |  |  |
| WAD.S.4390 |  | lay epoxy 2 coating for inner surfaces for bottom of the roof | 11d | 2026-10-21 | 2026-11-03 | WAD.S.4290 SS |  | -36.5d |

| ID | WBS | Task | Duration | Start | Finish | Predecessors | Total float |
| --- | --- | --- | --- | --- | --- | --- | --- |
| WAD.S.4740 |  | install water stop for tanks according to the drawings and specification | 5d | 2026-10-24 | 2026-10-29 | WAD.S.3980 | -32.5d |
|  | 9 | **FINISHES** |  | 2026-09-22 | 2026-11-02 |  |  |
| WAD.S.2370 |  | install ceramic floor tiles | 3d | 2026-09-22 | 2026-09-24 | WAD.S.1980 FF | 9d |
| WAD.S.2380 |  | install granite flooring | 2d | 2026-09-22 | 2026-09-23 | WAD.S.2370 SS | 9d |
| WAD.S.2390 |  | install ceramic wall tiles | 3d | 2026-09-22 | 2026-09-24 | WAD.S.2380 SS | 9d |
| WAD.S.2520 |  | install two coats of acrylic paint on internal walls | 2d | 2026-09-23 | 2026-09-24 | WAD.S.2390 FF | 9d |
| WAD.S.2530 |  | install two coats of acrylic paint (suitable for exterior use) on external | 2d | 2026-09-23 | 2026-09-24 | WAD.S.2520 SS | 9d |
| WAD.S.3100 |  | install concrete plastering | 4d | 2026-10-10 | 2026-10-14 | WAD.S.2930 | -36.5d |
| WAD.S.2240 |  | gypsum board suspended ceiling | 4d | 2026-10-15 | 2026-10-20 | WAD.S.3450 | -20.5d |
| WAD.S.4860 |  | install granite saddles and thresholds | 3d | 2026-10-29 | 2026-11-02 | WAD.S.2240 SS, WAD.S.4740 | -32.5d |
| WAD.S.4870 |  | install Riyadh stone cladding | 3d | 2026-10-29 | 2026-11-02 | WAD.S.4880 FF | -32.5d |
| WAD.S.4880 |  | install 3mm steel CNC laser cut panels | 3d | 2026-10-29 | 2026-11-02 | WAD.S.4960 FF | -32.5d |
| WAD.S.4960 |  | install aluminum cladding | 2d | 2026-10-31 | 2026-11-02 | WAD.S.4860 FF | -32.5d |
|  | 13 | **MECHANICAL WORKS** |  | 2026-09-14 | 2026-11-10 |  |  |
|  | 1 | **MECHANICAL WORKS - 1st Fix** |  | 2026-09-14 | 2026-09-24 |  |  |
| WAD.S.1830 |  | WATER SUPPLY SYSTEM - 1st Fix | 10d | 2026-09-14 | 2026-09-24 | WAD.S.1850 SS | 0d |
| WAD.S.1840 |  | SEWER AND DRAINAGE SYSTEM - 1st Fix | 10d | 2026-09-14 | 2026-09-24 | WAD.S.1830 SS | 0d |
| WAD.S.1850 |  | IRRIGATION SYSTEM - 1st Fix | 10d | 2026-09-14 | 2026-09-24 | WAD.S.1990 SS, WAD.S.1990 FF | 0d |
| WAD.S.1880 |  | HEATING, VENTILATION AND AIR CONDITIONING - 1st Fix | 10d | 2026-09-14 | 2026-09-24 | WAD.S.1840 SS | 0d |
| WAD.S.1890 |  | Exhaust fans - 1st Fix | 10d | 2026-09-14 | 2026-09-24 | WAD.S.1880 SS | 0d |
|  | 2 | **MECHANICAL WORKS - Final Fix** |  | 2026-11-07 | 2026-11-10 |  |  |
| WAD.S.5560 |  | installation of Fire extinguishers as per drawings, specifications | 3d | 2026-11-07 | 2026-11-10 | WAD.S.1890, WAD.S.4960, WAD.S.4880, WAD.S.4380 FS+3d | -36.5d |
| WAD.S.5570 |  | gully traps with heavy duty cover | 3d | 2026-11-07 | 2026-11-10 | WAD.S.5560 FF | -36.5d |
| WAD.S.5580 |  | chamber with heavy duty cover | 3d | 2026-11-07 | 2026-11-10 | WAD.S.5570 FF | -36.5d |
| WAD.S.5590 |  | INSTALL PLUMBING FIXTURES | 3d | 2026-11-07 | 2026-11-10 | WAD.S.5580 FF, WAD.S.4600 | -36.5d |
| WAD.S.5600 |  | HEATING, VENTILATION AND AIR CONDITIONING - Final Fix | 3d | 2026-11-07 | 2026-11-10 | WAD.S.5590 FF | -36.5d |
| WAD.S.5610 |  | Exhaust fans - Final Fix | 3d | 2026-11-07 | 2026-11-10 | WAD.S.5600 FF | -36.5d |
| WAD.S.5620 |  | Bulbblers and Spreyers of IRRIGATION SYSTEM | 3d | 2026-11-07 | 2026-11-10 | WAD.S.5610 FF | -36.5d |
| WAD.S.5750 |  | WATER SUPPLY SYSTEM - Final Fix | 3d | 2026-11-07 | 2026-11-10 | WAD.S.5620 FF | -36.5d |
| WAD.S.5760 |  | IRRIGATION SYSTEM - Final Fix | 3d | 2026-11-07 | 2026-11-10 | WAD.S.5750 FF | -30.5d |
|  | 15 | **ELECTRICAL WORKS** |  | 2026-09-14 | 2026-11-10 |  |  |
|  | 1 | **ELECTRICAL WORKS - 1st Fix** |  | 2026-09-14 | 2026-09-24 |  |  |
| WAD.S.1860 |  | LIGHTING AND POWER TYPE PANELBOARDS - 1st Fix | 10d | 2026-09-14 | 2026-09-24 | WAD.S.1890 SS | 0d |
| WAD.S.1870 |  | UPS 3KVA (installed inside the rack) - 1st Fix | 10d | 2026-09-14 | 2026-09-24 | WAD.S.1860 SS | 0d |
| WAD.S.1900 |  | power source with built-in photocell sensor for automatic electrical connection during day/light times - 1st Fix | 10d | 2026-09-14 | 2026-09-24 | WAD.S.1870 SS | 0d |
| WAD.S.1910 |  | UNDERGROUND DISTRIBUTION SYSTEM - 1st Fix | 10d | 2026-09-14 | 2026-09-24 | WAD.S.1900 SS | 0d |
| WAD.S.1920 |  | LIGHTING FIXTURES - 1st Fix | 10d | 2026-09-14 | 2026-09-24 | WAD.S.1910 SS | 0d |
| WAD.S.1930 |  | installation of Wiring devices includes switches and Receptacle outlets complete with device boxes - 1st Fix | 10d | 2026-09-14 | 2026-09-24 | WAD.S.1920 SS | 0d |
| WAD.S.1940 |  | GROUNDING - 1st Fix | 10d | 2026-09-14 | 2026-09-24 | WAD.S.1930 SS | 0d |
| WAD.S.1950 |  | card reader IN/OUT - 1st Fix | 10d | 2026-09-14 | 2026-09-24 | WAD.S.1940 SS | 0d |
| WAD.S.1960 |  | CCTV cameras - 1st Fix | 10d | 2026-09-14 | 2026-09-24 | WAD.S.1950 SS | 0d |
| WAD.S.1970 |  | Access control panel - 1st Fix | 10d | 2026-09-14 | 2026-09-24 | WAD.S.1960 SS | 0d |
| WAD.S.1980 |  | fire alarm system including wires, conduit and other materials - 1st Fix | 10d | 2026-09-14 | 2026-09-24 | WAD.S.1970 SS | 0d |
|  | 2 | **ELECTRICAL WORKS - Final Fix** |  | 2026-11-05 | 2026-11-10 |  |  |
| WAD.S.5170 |  | 12-Port, SMF, Fiber Optic Patch Panels; | 4d | 2026-11-05 | 2026-11-10 | WAD.S.5670 FF | -36.5d |
| WAD.S.5180 |  | VIDEO SURVEILLANCE | 4d | 2026-11-05 | 2026-11-10 | WAD.S.5680 FF | -36.5d |
| WAD.S.5190 |  | CCTV storage system, as specified; | 4d | 2026-11-05 | 2026-11-10 | WAD.S.5700 FF | -36.5d |
| WAD.S.5630 |  | power source with built-in photocell sensor for automatic electrical connection during day/light times - Final Fix | 3d | 2026-11-07 | 2026-11-10 | WAD.S.5750 FF | -36.5d |
| WAD.S.5640 |  | LIGHTING FIXTURES - Final Fix | 3d | 2026-11-07 | 2026-11-10 | WAD.S.6010 FF | -36.5d |
| WAD.S.5650 |  | GROUNDING - Final Fix | 3d | 2026-11-07 | 2026-11-10 | WAD.S.6020 FF, WAD.S.1980, WAD.S.4870 | -36.5d |
| WAD.S.5660 |  | card reader IN/OUT - Final Fix | 3d | 2026-11-07 | 2026-11-10 | WAD.S.5650 FF | -36.5d |
| WAD.S.5670 |  | 12-Port CAT6A UTP fully loaded patch panel | 3d | 2026-11-07 | 2026-11-10 | WAD.S.6030 FF | -36.5d |
| WAD.S.5680 |  | COMPUTERS AND RELATED PERIPHERALS | 3d | 2026-11-07 | 2026-11-10 | WAD.S.5170 FF | -36.5d |
| WAD.S.5690 |  | Central (Headend) System Components; | 3d | 2026-11-07 | 2026-11-10 | WAD.S.5180 FF | -36.5d |
| WAD.S.5700 |  | VSS System, as specified; | 3d | 2026-11-07 | 2026-11-10 | WAD.S.5690 FF | -36.5d |
| WAD.S.5710 |  | CCTV cameras - Final Fix | 3d | 2026-11-07 | 2026-11-10 | WAD.S.5190 FF | -36.5d |
| WAD.S.5720 |  | ELECTRICAL GATE BARRIER | 3d | 2026-11-07 | 2026-11-10 | WAD.S.6040 FF | -36.5d |
| WAD.S.5730 |  | fire alarm system including wires, conduit and other materials - Final Fix | 3d | 2026-11-07 | 2026-11-10 | WAD.S.6050 FF | -36.5d |
| WAD.S.5740 |  | Analog addressable fire alarm control panel with battery | 3d | 2026-11-07 | 2026-11-10 | WAD.S.5730 FF | -36.5d |
| WAD.S.5770 |  | LIGHTING AND POWER TYPE PANELBOARDS - Final Fix | 3d | 2026-11-07 | 2026-11-10 | WAD.S.6060 FF | -30.5d |
| WAD.S.6010 |  | UNDERGROUND DISTRIBUTION SYSTEM - Final Fix | 2d | 2026-11-08 | 2026-11-10 | WAD.S.5630 FF | -36.5d |
| WAD.S.6020 |  | installation of Wiring devices includes switches and Receptacle outlets complete with device boxes - Final Fix | 2d | 2026-11-08 | 2026-11-10 | WAD.S.5640 FF | -36.5d |
| WAD.S.6030 |  | Access control panel - Final Fix | 2d | 2026-11-08 | 2026-11-10 | WAD.S.5660 FF | -36.5d |
| WAD.S.6040 |  | 20A , ATS ( Automatic transfer switch) for UPS | 2d | 2026-11-08 | 2026-11-10 | WAD.S.5710 FF | -36.5d |
| WAD.S.6050 |  | LIGHTNING PROTECTION | 2d | 2026-11-08 | 2026-11-10 | WAD.S.5720 FF | -36.5d |
| WAD.S.6060 |  | Intelligent Ionization / Photoelectric smoke and heat detector with base | 2d | 2026-11-08 | 2026-11-10 | WAD.S.5740 FF | -36.5d |
|  | 4 | **METALS** |  | 2026-10-20 | 2026-10-22 |  |  |
| WAD.S.2480 |  | folding & sliding mounter combination ladder for building maintenance purpose | 2d | 2026-10-20 | 2026-10-22 | WAD.S.2240 | -20.5d |
| WAD.S.2490 |  | install of overflow galvanized steel roof scupper with gray color with angular secondary support | 2d | 2026-10-20 | 2026-10-22 | WAD.S.2480 SS | -20.5d |
| WAD.S.2500 |  | install heavy steel cover with frame including all necessary fixings | 2d | 2026-10-20 | 2026-10-22 | WAD.S.2490 SS | -20.5d |

| ID | WBS | Task | Duration | Start | Finish | Predecessors | Complete | Total float |
| --- | --- | --- | --- | --- | --- | --- | --- | --- |
|  | 5 | **WOODS AND PLASTICS** |  | 2026-10-19 | 2026-10-22 |  |  |  |
| WAD.S.2350 |  | COUNTER DESK | 3d | 2026-10-19 | 2026-10-22 | WAD.S.2510 FF |  | -20.5d |
| WAD.S.2510 |  | PANTRY CABINET | 2d | 2026-10-20 | 2026-10-22 | WAD.S.2500 SS |  | -20.5d |
|  | 8 | **DOORS & WINDOWS** |  | 2026-10-19 | 2026-10-25 |  |  |  |
| WAD.S.2360 |  | Install Aluminum Door | 3d | 2026-10-19 | 2026-10-22 | WAD.S.2350 SS |  | -20.5d |
| WAD.S.2200 |  | install hollow metal door | 4d | 2026-10-20 | 2026-10-25 | WAD.S.2510 SS |  | -19.5d |
| WAD.S.2210 |  | Install aluminum framed double glazed windows | 3d | 2026-10-20 | 2026-10-24 | WAD.S.2200 SS |  | -19.5d |
|  | 10 | **SPECIALTIES** |  | 2026-11-07 | 2026-11-10 |  |  |  |
| WAD.S.5550 |  | TOILET ACCESSROIES | 2d | 2026-11-07 | 2026-11-09 | WAD.S.5750 SS, WAD.S.2360 FF |  | -35.5d |
| WAD.S.6000 |  | PANEL SIGNAGE | 2d | 2026-11-08 | 2026-11-10 | WAD.S.5550 SS, WAD.S.6060 FF |  | -36.5d |
|  | 11 | **FURNISHINGS** |  | 2026-11-09 | 2026-11-10 |  |  |  |
| WAD.S.6210 |  | Workstation chair | 1d | 2026-11-09 | 2026-11-10 | WAD.S.6000 FF |  | -36.5d |
| WAD.S.6220 |  | Workstation table | 1d | 2026-11-09 | 2026-11-10 | WAD.S.6210 SS |  | -36.5d |
| WAD.S.6230 |  | Roller blind | 1d | 2026-11-09 | 2026-11-10 | WAD.S.6220 SS, WAD.S.4770 |  | -36.5d |
| WAD.S.6240 |  | Waste Receptacle | 1d | 2026-11-09 | 2026-11-10 | WAD.S.6230 SS |  | -36.5d |
|  | 5 | **GUARD HOUSE 3** |  | 2026-07-11 | 2026-10-28 |  |  |  |
|  | 1 | **SITE WORKS** |  | 2026-07-11 | 2026-10-28 |  |  |  |
|  | 4 | **Guard Rooms & Gates** |  | 2026-07-16 | 2026-09-08 |  |  |  |
| WAD.S.7380 |  | Excavation for guard rooms | 8d | 2026-07-16 A | 2026-07-23 A | WAD.S.1080 FS+20d | 100% |  |
| WAD.S.7390 |  | Replacment Under Foundation | 2d | 2026-08-04 A | 2026-08-04 A | WAD.S.7380 | 100% |  |
| WAD.S.7400 |  | Backfilling Under G.Beam | 2d | 2026-08-11 A | 2026-08-31 A | WAD.S.7450 | 100% |  |
| WAD.S.7410 |  | Backfilling Under S.O.G | 2d | 2026-09-07 A | 2026-09-08 A | WAD.S.7450 | 100% |  |
|  | 5 | **Guard Rooms & Gates (CONCRETE Works)** |  | 2026-07-11 | 2026-10-28 |  |  |  |
| WAD.S.7450 |  | Isolated Footings & Column Neck | 5d | 2026-07-11 A | 2026-08-08 A | WAD.S.7430 SS+2d, WAD.S.7430 FF+2d | 100% |  |
| WAD.S.7430 |  | 50 mm thickness lean concrete under the foundation. | 3d | 2026-08-04 A | 2026-08-06 A | WAD.S.7390 SS | 100% |  |
| WAD.S.7420 |  | 50 mm thickness lean concrete under grade beams. | 3d | 2026-08-31 A | 2026-09-03 A | WAD.S.7400 | 100% |  |
| WAD.S.7490 |  | Roof Slab | 8d | 2026-09-06 A | 2026-09-20 A | WAD.S.7500 SS, WAD.S.7470 | 100% |  |
| WAD.S.7500 |  | Beams | 8d | 2026-09-06 A | 2026-09-20 A | WAD.S.7470 | 100% |  |
| WAD.S.7460 |  | Grade beams | 5d | 2026-09-10 A | 2026-09-15 A | WAD.S.7420, WAD.S.1720 | 100% |  |
| WAD.S.7470 |  | Columns | 4d | 2026-09-16 A | 2026-09-20 A | WAD.S.7460 | 100% |  |
| WAD.S.7510 |  | Raft and R.C. walls | 5d | 2026-09-16 A | 2026-09-24 A | WAD.S.7470 SS+2d | 100% |  |
| WAD.S.7480 |  | Concrete Pad | 3d | 2026-09-23 A | 2026-09-26 A | WAD.S.7500 | 100% |  |
| WAD.S.7440 |  | Provide and cast concrete floor slab on grade | 5d | 2026-09-26 | 2026-09-30 | WAD.S.7460 SS+2d, WAD.S.7410, WAD.S.7500 |  | -18d |
| WAD.S.7520 |  | Tanks Raft | 5d | 2026-09-26 | 2026-09-30 | WAD.S.7490 |  | -18d |
| WAD.S.7530 |  | Tanks Walls | 5d | 2026-10-01 | 2026-10-06 | WAD.S.7520, WAD.S.7440, WAD.S.7480 |  | -18d |
| WAD.S.7540 |  | Tanks Slab | 4d | 2026-10-24 | 2026-10-28 | WAD.S.7530, WAD.S.6600, WAD.S.2210 |  | -19.5d |
|  | 3 | **MASONRY UNIT** |  | 2026-09-23 | 2026-09-26 |  |  |  |
| WAD.S.6500 |  | install Concrete Masonry Unit (CMU) for walls | 3d | 2026-09-23 A | 2026-09-26 | WAD.S.7490 SS+3d, WAD.S.7510 | 80% | -24.6d |
|  | 6 | **THERMAL & MOISTURE PROTECTION** |  | 2026-09-16 | 2026-10-04 |  |  |  |
|  | 1 | **THERMAL & MOISTURE PROTECTION - Foundation** |  | 2026-09-16 | 2026-10-04 |  |  |  |
| WAD.S.6560 |  | apply 2 coats of bitumen waterproofing paint on concrete surface in contact with soil | 2d | 2026-09-16 A | 2026-09-19 A | WAD.S.6580 SS | 100% |  |
| WAD.S.6580 |  | install liquid applied waterproofing coating; single-component pitch modified polyurethane | 2d | 2026-09-29 | 2026-10-01 | WAD.S.7420 FS+22d |  | 1.9d |
| WAD.S.6590 |  | install geotextile sheet | 2d | 2026-10-01 | 2026-10-04 | WAD.S.6580 |  | 1.9d |
|  | 7 | **ROOFING SYSTEM** |  | 2026-10-07 | 2026-10-20 |  |  |  |
| WAD.S.6570 |  | install liquid applied waterproofing coating single-component pitch modified polyurethane based elastomeric | 11d | 2026-10-07 | 2026-10-20 | WAD.S.6760 SS+10d |  | -24.6d |
| WAD.S.6610 |  | install 4mm thick APP modified bituminous membrane - single layer | 11d | 2026-10-07 | 2026-10-20 | WAD.S.7370 SS |  | -24.6d |
| WAD.S.6620 |  | install 75mm thick rigid insulation (extruded polystyrene) | 11d | 2026-10-07 | 2026-10-20 | WAD.S.6610 SS |  | -24.6d |
| WAD.S.6630 |  | cast in place foam concrete screed, 50mm thick minimum; laid to fall and cross fall | 11d | 2026-10-07 | 2026-10-20 | WAD.S.6620 SS |  | -24.6d |
| WAD.S.6640 |  | install 300 micron polyethylene sheet | 11d | 2026-10-07 | 2026-10-20 | WAD.S.6630 SS |  | -24.6d |
| WAD.S.6650 |  | install 50mm thick loose gravel toppings | 11d | 2026-10-07 | 2026-10-20 | WAD.S.6640 SS |  | -24.6d |
| WAD.S.6660 |  | install high density polyisocynurate cover board | 11d | 2026-10-07 | 2026-10-20 | WAD.S.6650 SS |  | -24.6d |
| WAD.S.6670 |  | install UV resistant geotextile sheet | 11d | 2026-10-07 | 2026-10-20 | WAD.S.6660 SS |  | -24.6d |
| WAD.S.6680 |  | fixing 3mm thick extruded aluminum flashing 40mm with sealant and all other accessories | 11d | 2026-10-07 | 2026-10-20 | WAD.S.6670 SS |  | -24.6d |
| WAD.S.6690 |  | install Terrazzo tiles | 11d | 2026-10-07 | 2026-10-20 | WAD.S.6680 SS |  | -24.6d |
|  | 2 | **THERMAL & MOISTURE PROTECTION - Tanks** |  | 2026-10-07 | 2026-10-20 |  |  |  |
| WAD.S.6600 |  | install water stop for tanks according to the drawings and specification | 5d | 2026-10-07 | 2026-10-12 | WAD.S.7530 |  | -18d |
| WAD.S.7370 |  | lay epoxy 2 coating for inner surfaces for bottom of the roof | 11d | 2026-10-07 | 2026-10-20 | WAD.S.6570 SS |  | -24.6d |
|  | 9 | **FINISHES** |  | 2026-09-22 | 2026-10-15 |  |  |  |
| WAD.S.6730 |  | install ceramic floor tiles | 3d | 2026-09-22 | 2026-09-24 | WAD.S.7360 FF |  | -37d |
| WAD.S.6740 |  | install granite flooring | 2d | 2026-09-22 | 2026-09-23 | WAD.S.6730 SS |  | -37d |
| WAD.S.6770 |  | install ceramic wall tiles | 3d | 2026-09-22 | 2026-09-24 | WAD.S.6740 SS |  | -37d |
| WAD.S.6780 |  | install two coats of acrylic paint on internal walls | 2d | 2026-09-23 | 2026-09-24 | WAD.S.6770 FF |  | -37d |
| WAD.S.6790 |  | install two coats of acrylic paint (suitable for exterior use) on external | 2d | 2026-09-23 | 2026-09-24 | WAD.S.6780 SS |  | -37d |
| WAD.S.6830 |  | gypsum board suspended ceiling | 4d | 2026-09-26 | 2026-09-29 | WAD.S.7480 |  | -6d |
| WAD.S.6760 |  | install concrete plastering | 4d | 2026-09-26 | 2026-09-30 | WAD.S.6500 |  | -24.6d |
| WAD.S.6750 |  | install granite saddles and thresholds | 3d | 2026-10-13 | 2026-10-15 | WAD.S.6830 SS, WAD.S.6600 |  | -18d |
| WAD.S.6800 |  | install Riyadh stone cladding | 3d | 2026-10-13 | 2026-10-15 | WAD.S.6820 FF |  | -18d |
| WAD.S.6820 |  | install 3mm steel CNC laser cut panels | 3d | 2026-10-13 | 2026-10-15 | WAD.S.6810 FF |  | -18d |
| WAD.S.6810 |  | install aluminum cladding | 2d | 2026-10-14 | 2026-10-15 | WAD.S.6750 FF |  | -18d |
|  | 13 | **MECHANICAL WORKS** |  | 2026-09-14 | 2026-10-27 |  |  |  |

| ID | WBS | Task | Duration | Start | Finish | Predecessors | Complete | Total float |
| --- | --- | --- | --- | --- | --- | --- | --- | --- |
|  | 1 | **MECHANICAL WORKS - 1st Fix** |  | 2026-09-14 | 2026-09-24 |  |  |  |
| WAD.S.6910 |  | WATER SUPPLY SYSTEM - 1st Fix | 10d | 2026-09-14 | 2026-09-24 | WAD.S.6980 SS |  | -37d |
| WAD.S.6920 |  | SEWER AND DRAINAGE SYSTEM - 1st Fix | 10d | 2026-09-14 | 2026-09-24 | WAD.S.6910 SS |  | -37d |
| WAD.S.6980 |  | IRRIGATION SYSTEM - 1st Fix | 10d | 2026-09-14 | 2026-09-24 | WAD.S.7450 SS, WAD.S.7450 |  | -37d |
| WAD.S.7260 |  | HEATING, VENTILATION AND AIR CONDITIONING - 1st Fix | 10d | 2026-09-14 | 2026-09-24 | WAD.S.6920 SS |  | -37d |
| WAD.S.7270 |  | Exhaust fans - 1st Fix | 10d | 2026-09-14 | 2026-09-24 | WAD.S.7260 SS |  | -37d |
|  | 2 | **MECHANICAL WORKS - Final Fix** |  | 2026-10-24 | 2026-10-27 |  |  |  |
| WAD.S.6900 |  | installation of Fire extinguishers as per drawings, specifications | 3d | 2026-10-24 | 2026-10-27 | WAD.S.7270, WAD.S.6810, WAD.S.6820, WAD.S.6690 FS+3d |  | -24.6d |
| WAD.S.6930 |  | gully traps with heavy duty cover | 3d | 2026-10-24 | 2026-10-27 | WAD.S.6900 FF |  | -24.6d |
| WAD.S.6940 |  | chamber with heavy duty cover | 3d | 2026-10-24 | 2026-10-27 | WAD.S.6930 FF |  | -24.6d |
| WAD.S.6950 |  | INSTALL PLUMBING FIXTURES | 3d | 2026-10-24 | 2026-10-27 | WAD.S.6940 FF, WAD.S.4600 |  | -24.6d |
| WAD.S.6960 |  | HEATING, VENTILATION AND AIR CONDITIONING - Final Fix | 3d | 2026-10-24 | 2026-10-27 | WAD.S.6950 FF |  | -24.6d |
| WAD.S.6970 |  | Exhaust fans - Final Fix | 3d | 2026-10-24 | 2026-10-27 | WAD.S.6960 FF |  | -24.6d |
| WAD.S.6990 |  | Bulbblers and Spreyers of IRRIGATION SYSTEM | 3d | 2026-10-24 | 2026-10-27 | WAD.S.6970 FF |  | -24.6d |
| WAD.S.7230 |  | WATER SUPPLY SYSTEM - Final Fix | 3d | 2026-10-24 | 2026-10-27 | WAD.S.6990 FF |  | -24.6d |
| WAD.S.7240 |  | IRRIGATION SYSTEM - Final Fix | 3d | 2026-10-24 | 2026-10-27 | WAD.S.7230 FF |  | -18.6d |
|  | 15 | **ELECTRICAL WORKS** |  | 2026-09-06 | 2026-10-27 |  |  |  |
|  | 1 | **ELECTRICAL WORKS - 1st Fix** |  | 2026-09-06 | 2026-09-24 |  |  |  |
| WAD.S.7320 |  | GROUNDING - 1st Fix | 10d | 2026-09-06 A | 2026-09-19 | WAD.S.7310 SS | 50% | -37d |
| WAD.S.7000 |  | LIGHTING AND POWER TYPE PANELBOARDS - 1st Fix | 10d | 2026-09-14 | 2026-09-24 | WAD.S.7270 SS |  | -37d |
| WAD.S.7010 |  | UPS 3KVA (installed inside the rack) - 1st Fix | 10d | 2026-09-14 | 2026-09-24 | WAD.S.7000 SS |  | -37d |
| WAD.S.7280 |  | power source with built-in photocell sensor for automatic electrical connection during day/light times - 1st Fix | 10d | 2026-09-14 | 2026-09-24 | WAD.S.7010 SS |  | -37d |
| WAD.S.7290 |  | UNDERGROUND DISTRIBUTION SYSTEM - 1st Fix | 10d | 2026-09-14 | 2026-09-24 | WAD.S.7280 SS |  | -37d |
| WAD.S.7300 |  | LIGHTING FIXTURES - 1st Fix | 10d | 2026-09-14 | 2026-09-24 | WAD.S.7290 SS |  | -37d |
| WAD.S.7310 |  | installation of Wiring devices includes switches and Receptacle outlets complete with device boxes - 1st Fix | 10d | 2026-09-14 | 2026-09-24 | WAD.S.7300 SS |  | -37d |
| WAD.S.7330 |  | card reader IN/OUT - 1st Fix | 10d | 2026-09-14 | 2026-09-24 | WAD.S.7320 SS |  | -37d |
| WAD.S.7340 |  | CCTV cameras - 1st Fix | 10d | 2026-09-14 | 2026-09-24 | WAD.S.7330 SS |  | -37d |
| WAD.S.7350 |  | Access control panel - 1st Fix | 10d | 2026-09-14 | 2026-09-24 | WAD.S.7340 SS |  | -37d |
| WAD.S.7360 |  | fire alarm system including wires, conduit and other materials - 1st Fix | 10d | 2026-09-14 | 2026-09-24 | WAD.S.7350 SS |  | -37d |
|  | 2 | **ELECTRICAL WORKS - Final Fix** |  | 2026-10-22 | 2026-10-27 |  |  |  |
| WAD.S.7100 |  | 12-Port, SMF, Fiber Optic Patch Panels; | 4d | 2026-10-22 | 2026-10-27 | WAD.S.7090 FF |  | -24.6d |
| WAD.S.7120 |  | VIDEO SURVEILLANCE | 4d | 2026-10-22 | 2026-10-27 | WAD.S.7110 FF |  | -24.6d |
| WAD.S.7150 |  | CCTV storage system, as specified; | 4d | 2026-10-22 | 2026-10-27 | WAD.S.7140 FF |  | -24.6d |
| WAD.S.7020 |  | power source with built-in photocell sensor for automatic electrical connection during day/light times - Final Fix | 3d | 2026-10-24 | 2026-10-27 | WAD.S.7230 FF |  | -24.6d |
| WAD.S.7040 |  | LIGHTING FIXTURES - Final Fix | 3d | 2026-10-24 | 2026-10-27 | WAD.S.7030 FF |  | -24.6d |
| WAD.S.7060 |  | GROUNDING - Final Fix | 3d | 2026-10-24 | 2026-10-27 | WAD.S.7050 FF, WAD.S.7360, WAD.S.6800 |  | -24.6d |
| WAD.S.7070 |  | card reader IN/OUT - Final Fix | 3d | 2026-10-24 | 2026-10-27 | WAD.S.7060 FF |  | -24.6d |
| WAD.S.7090 |  | 12-Port CAT6A UTP fully loaded patch panel | 3d | 2026-10-24 | 2026-10-27 | WAD.S.7080 FF |  | -24.6d |
| WAD.S.7110 |  | COMPUTERS AND RELATED PERIPHERALS | 3d | 2026-10-24 | 2026-10-27 | WAD.S.7100 FF |  | -24.6d |
| WAD.S.7130 |  | Central (Headend) System Components; | 3d | 2026-10-24 | 2026-10-27 | WAD.S.7120 FF |  | -24.6d |
| WAD.S.7140 |  | VSS System, as specified; | 3d | 2026-10-24 | 2026-10-27 | WAD.S.7130 FF |  | -24.6d |
| WAD.S.7160 |  | CCTV cameras - Final Fix | 3d | 2026-10-24 | 2026-10-27 | WAD.S.7150 FF |  | -24.6d |
| WAD.S.7180 |  | ELECTRICAL GATE BARRIER | 3d | 2026-10-24 | 2026-10-27 | WAD.S.7170 FF |  | -24.6d |
| WAD.S.7200 |  | fire alarm system including wires, conduit and other materials - Final Fix | 3d | 2026-10-24 | 2026-10-27 | WAD.S.7190 FF |  | -24.6d |
| WAD.S.7210 |  | Analog addressable fire alarm control panel with battery | 3d | 2026-10-24 | 2026-10-27 | WAD.S.7200 FF |  | -24.6d |
| WAD.S.7250 |  | LIGHTING AND POWER TYPE PANELBOARDS - Final Fix | 3d | 2026-10-24 | 2026-10-27 | WAD.S.7220 FF |  | -18.6d |
| WAD.S.7030 |  | UNDERGROUND DISTRIBUTION SYSTEM - Final Fix | 2d | 2026-10-25 | 2026-10-27 | WAD.S.7020 FF |  | -24.6d |
| WAD.S.7050 |  | installation of Wiring devices includes switches and Receptacle outlets complete with device boxes - Final Fix | 2d | 2026-10-25 | 2026-10-27 | WAD.S.7040 FF |  | -24.6d |
| WAD.S.7080 |  | Access control panel - Final Fix | 2d | 2026-10-25 | 2026-10-27 | WAD.S.7070 FF |  | -24.6d |
| WAD.S.7170 |  | 20A , ATS ( Automatic transfer switch) for UPS | 2d | 2026-10-25 | 2026-10-27 | WAD.S.7160 FF |  | -24.6d |
| WAD.S.7190 |  | LIGHTNING PROTECTION | 2d | 2026-10-25 | 2026-10-27 | WAD.S.7180 FF |  | -24.6d |
| WAD.S.7220 |  | Intelligent Ionization / Photoelectric smoke and heat detector with base | 2d | 2026-10-25 | 2026-10-27 | WAD.S.7210 FF |  | -24.6d |
|  | 4 | **METALS** |  | 2026-09-30 | 2026-10-01 |  |  |  |
| WAD.S.6510 |  | folding & sliding mounter combination ladder for building maintenance purpose | 2d | 2026-09-30 | 2026-10-01 | WAD.S.6830 |  | -6d |
| WAD.S.6520 |  | install of overflow galvanized steel roof scupper with gray color with angular secondary support | 2d | 2026-09-30 | 2026-10-01 | WAD.S.6510 SS |  | -6d |
| WAD.S.6530 |  | install heavy steel cover with frame including all necessary fixings | 2d | 2026-09-30 | 2026-10-01 | WAD.S.6520 SS |  | -6d |
|  | 5 | **WOODS AND PLASTICS** |  | 2026-09-29 | 2026-10-01 |  |  |  |
| WAD.S.6550 |  | COUNTER DESK | 3d | 2026-09-29 | 2026-10-01 | WAD.S.6540 FF |  | -3d |
| WAD.S.6540 |  | PANTRY CABINET | 2d | 2026-09-30 | 2026-10-01 | WAD.S.6530 SS |  | -6d |
|  | 8 | **DOORS & WINDOWS** |  | 2026-09-29 | 2026-10-04 |  |  |  |
| WAD.S.6700 |  | Install Aluminum Door | 3d | 2026-09-29 | 2026-10-01 | WAD.S.6550 SS |  | -3d |
| WAD.S.6710 |  | install hollow metal door | 4d | 2026-09-30 | 2026-10-04 | WAD.S.6540 SS |  | -6d |
| WAD.S.6720 |  | Install aluminum framed double glazed windows | 3d | 2026-09-30 | 2026-10-03 | WAD.S.6710 SS |  | -6d |
|  | 10 | **SPECIALTIES** |  | 2026-10-24 | 2026-10-27 |  |  |  |
| WAD.S.6840 |  | TOILET ACCESSROIES | 2d | 2026-10-24 | 2026-10-26 | WAD.S.7230 SS, WAD.S.6700 FF, WAD.S.6720 |  | -23.6d |
| WAD.S.6850 |  | PANEL SIGNAGE | 2d | 2026-10-25 | 2026-10-27 | WAD.S.6840 SS, WAD.S.7220 FF |  | -24.6d |
|  | 11 | **FURNISHINGS** |  | 2026-10-26 | 2026-10-27 |  |  |  |
| WAD.S.6860 |  | Workstation chair | 1d | 2026-10-26 | 2026-10-27 | WAD.S.6850 FF |  | -24.6d |
| WAD.S.6870 |  | Workstation table | 1d | 2026-10-26 | 2026-10-27 | WAD.S.6860 SS |  | -24.6d |
| WAD.S.6880 |  | Roller blind | 1d | 2026-10-26 | 2026-10-27 | WAD.S.6870 SS, WAD.S.4770 |  | -24.6d |

| ID | WBS | Task | Duration | Start | Finish | Predecessors | Total float |
| --- | --- | --- | --- | --- | --- | --- | --- |
| WAD.S.6890 |  | Waste Receptacle | 1d | 2026-10-26 | 2026-10-27 | WAD.S.6880 SS | -24.6d |
|  | 4 | **EXT. WORKS** |  | 2026-09-26 | 2026-11-09 |  |  |
|  | 1 | **EXTERNAL WORKS** |  | 2026-09-26 | 2026-11-09 |  |  |
| WAD.S.1100 |  | Excavation Works | 15d | 2026-09-26 | 2026-10-12 | WAD.S.1080, WAD.S.7360, WAD.S.6790 | -37d |
| WAD.S.1290 |  | 40 mm Pipes | 12d | 2026-10-13 | 2026-10-26 | WAD.S.1100 | -37d |
| WAD.S.3270 |  | GRP Pipes laid in trenches | 12d | 2026-10-13 | 2026-10-26 | WAD.S.1290 FF, WAD.S.3280 SS | -37d |
| WAD.S.4020 |  | install 100 mm GRP pipe service connections between building sewage inspection chamber and main wastewater line | 8d | 2026-10-18 | 2026-10-26 | WAD.S.3880 FF, WAD.S.3290 | -32d |
| WAD.S.4030 |  | Manhole depth not exceeding 4.0m | 8d | 2026-10-18 | 2026-10-26 | WAD.S.4020 FF, WAD.S.2970 | -18d |
| WAD.S.3880 |  | 100 mm Pipe in trench not exceeding 2.00 m depth to invert | 7d | 2026-10-19 | 2026-10-26 | WAD.S.3270 FF | -37d |
| WAD.S.4800 |  | Backfilling Works | 5d | 2026-10-27 | 2026-11-01 | WAD.S.3880 | -37d |
| WAD.S.4980 |  | SIDEWALKS AND CURBS | 7d | 2026-11-02 | 2026-11-09 | WAD.S.3910, WAD.S.4020, WAD.S.4800 | -37d |
| WAD.S.4990 |  | ROAD WORKS | 7d | 2026-11-02 | 2026-11-09 | WAD.S.4980 FF, WAD.S.4170 | -36d |
| WAD.S.5000 |  | install flag pole 6 M height | 5d | 2026-11-02 | 2026-11-07 | WAD.S.4980 SS | -37d |
|  | 4 | **Testing & Commissioning** |  | 2026-11-08 | 2026-11-17 |  |  |
| WAD.S.5440 |  | Testing & Commissioning - Electrical Systems | 9d | 2026-11-08 | 2026-11-17 | WAD.S.4020, WAD.S.5000 | -37d |
| WAD.S.5490 |  | Testing & Commissioning - Mechanical Systems | 9d | 2026-11-08 | 2026-11-17 | WAD.S.5440 SS | -37d |
|  | 1 | **Engineering** |  | 2026-11-08 | 2026-11-17 |  |  |
|  | 1 | **As-Built Drawings** |  | 2026-11-08 | 2026-11-16 |  |  |
| WAD.S.5430 |  | Prepare & Submit | 4d | 2026-11-08 | 2026-11-11 | WAD.S.5440 SS, WAD.S.6240 FF+1d, WAD.S.6890 FF+1d | -37d |
| WAD.S.6260 |  | Review & Approve | 6d | 2026-11-10 | 2026-11-16 | WAD.S.4990 | -36d |
|  | 2 | **Operational Spares** |  | 2026-11-08 | 2026-11-17 |  |  |
| WAD.S.5450 |  | Prepare & Submit | 4d | 2026-11-08 | 2026-11-11 | WAD.S.5430 SS | -37d |
| WAD.S.6350 |  | Inspection | 5d | 2026-11-12 | 2026-11-17 | WAD.S.5450 | -37d |
| WAD.S.6370 |  | Acceptance | 5d | 2026-11-12 | 2026-11-17 | WAD.S.6350 FF | -37d |
|  | 3 | **Warranties and Guarantees** |  | 2026-11-08 | 2026-11-17 |  |  |
| WAD.S.5460 |  | Prepare & Submit | 4d | 2026-11-08 | 2026-11-11 | WAD.S.5440 SS | -37d |
| WAD.S.6360 |  | Review & Approve | 5d | 2026-11-12 | 2026-11-17 | WAD.S.5460 | -37d |
|  | 2 | **Training and Manuals** |  | 2026-11-08 | 2026-11-17 |  |  |
|  | 1 | **Training** |  | 2026-11-08 | 2026-11-17 |  |  |
| WAD.S.5470 |  | Prepare & Submit | 4d | 2026-11-08 | 2026-11-11 | WAD.S.5450 SS | -37d |
| WAD.S.6380 |  | Review & Approve | 5d | 2026-11-12 | 2026-11-17 | WAD.S.5470 | -37d |
| WAD.S.6400 |  | Fabrication & Delivery | 5d | 2026-11-12 | 2026-11-17 | WAD.S.6380 FF | -37d |
|  | 2 | **Manuals** |  | 2026-11-08 | 2026-11-17 |  |  |
| WAD.S.5480 |  | Prepare & Submit | 4d | 2026-11-08 | 2026-11-11 | WAD.S.5440 SS | -37d |
| WAD.S.6390 |  | Review & Approve | 5d | 2026-11-12 | 2026-11-17 | WAD.S.5480 | -37d |
|  | 3 | **Demobilization** |  | 2026-11-09 | 2026-11-17 |  |  |
| WAD.S.5850 |  | Demobilize | 8d | 2026-11-09 | 2026-11-17 | WAD.S.6390 FF | -37d |
|  | 4 | **Snaglist Rectification** |  | 2026-11-09 | 2026-11-17 |  |  |
| WAD.S.5860 |  | Snaglist Rectification | 8d | 2026-11-09 | 2026-11-17 | WAD.S.5440 FF, WAD.S.5850 FF | -37d |
| WAD.S.5870 |  | Initial Handing Over | 8d | 2026-11-09 | 2026-11-17 | WAD.S.6260 FF, WAD.S.6370 FF, WAD.S.6360 FF, WAD.S.6400 FF, WAD.S.6390 FF, WAD.S.5860 FF | -37d |

## Version 2 (data date 2026-09-21, saved 2026-09-21, file WAS1-05-006 -Improvement of Waad Al Shamal Industrial City Fence & Gates-DD21-09-2026.xer)

Last finish 2026-11-17 → 2026-11-24 (+7d). Complete tasks 101 → 108.

Changed:

| ID | Task | Start | Finish | Complete | Total float |
| --- | --- | --- | --- | --- | --- |
| 1 | **Key Milestones** |  | 2026-11-17 → 2026-11-24 (+7d) |  |  |
| 1 | **General Milestones** |  | 2026-11-17 → 2026-11-24 (+7d) |  |  |
| WAD.S.6490 | Project Finish | 2026-11-17 → 2026-11-24 (+7d) | 2026-11-17 → 2026-11-24 (+7d) |  | -37d → -43d |
| 2 | **Contractual Milestones** |  | 2026-11-17 → 2026-11-24 (+7d) |  |  |
| WAD.S.3850 | Completion of Fences | 2026-09-22 → 2026-09-27 (+5d) | 2026-09-22 → 2026-09-27 (+5d) |  | 11d → 7.73d |
| WAD.S.3860 | Completion of GUARD HOUSE 1 | 2026-09-22 → 2026-09-27 (+5d) | 2026-09-22 → 2026-09-27 (+5d) |  | 11d → 7.73d |
| WAD.S.6250 | Completion of Procurment Works | 2026-10-14 → 2026-10-20 (+6d) | 2026-10-14 → 2026-10-20 (+6d) |  | -8d → -12.8d |
| WAD.S.6110 | Completion of EXT. WORKS | 2026-11-09 → 2026-11-16 (+7d) | 2026-11-09 → 2026-11-16 (+7d) |  | -30d → -36d |
| WAD.S.7560 | Testing & Commissioning | 2026-11-17 → 2026-11-24 (+7d) | 2026-11-17 → 2026-11-24 (+7d) |  | -37d → -43d |
| WAD.S.2630 | Manhole depth not exceeding 4.0m (Material Prepare & Submit) (GUARD HOUSE) |  | 2026-09-15 → 2026-09-22 (+7d) | 50% → 60% | -5d → -10.6d |
| WAD.S.2690 | GRP Pipes laid in trenches(Material Prepare & Submit) (GUARD HOUS |  | 2026-09-15 → 2026-09-22 (+7d) | 50% → 60% | -14d → -19.6d |
| WAD.S.2700 | 100 mm GRP pipe service connections (Material Prepare & Submit) (GUARD HOUSE) |  | 2026-09-15 → 2026-09-22 (+7d) | 50% → 60% | -15d → -19.8d |
| WAD.S.2900 | SIDEWALKS AND CURBS (Material Prepare & Submit) (GUARD HOUSE) |  | 2026-09-17 → 2026-09-24 (+7d) | 50% → 60% | -12d → -17.2d |
| WAD.S.4700 | UNDERGROUND DISTRIBUTION SYSTEM (Material Prepare & Submit) (GUARD HOUSE) |  |  | 50% → 60% | -3d → -2.6d |
| 2 | **Long Lead Items** |  | 2026-09-22 → 2026-09-26 (+4d) |  |  |
| WAD.S.1490 | Intrusion Detection system including processor control units items and joints (Material Prepare & Submit) (FENCES) |  | 2026-09-14 → 2026-09-21 (+7d) |  | -28.5d → -34.5d |
| WAD.S.3220 | WATER SUPPLY SYSTEM (Material Prepare & Submit) (GUARD HOUSE) |  | 2026-09-19 → 2026-09-22 (+3d) |  | -3.1d → -6.1d |
| WAD.S.3230 | SEWER AND DRAINAGE SYSTEM (Material Prepare & Submit) (GUARD HOUSE) |  | 2026-09-20 → 2026-09-26 (+6d) |  | -4.1d → -9.3d |
| WAD.S.3250 | HEATING, VENTILATION AND AIR CONDITIONING (Material Prepare & Submit) (GUARD HOUSE) |  | 2026-09-22 → 2026-09-24 (+2d) |  | -6.7d → -8.9d |
| WAD.S.1520 | Handholes\ Manholes (Material Prepare & Submit) (FENCES) |  | 2026-09-15 → 2026-09-22 (+7d) |  | -8.2d → -14.2d |
| WAD.S.3150 | folding & sliding mounter combination ladder for building maintenance purpose (Material Prepare & Submit) (GUARD HOUSE) |  | 2026-09-20 → 2026-09-26 (+6d) |  | -14.2d → -19.4d |
| WAD.S.3050 | Workstation chair (Material Prepare & Submit) (GUARD HOUSE) |  | 2026-09-15 → 2026-09-22 (+7d) | 50% → 60% | -10d → -15.2d |
| WAD.S.3160 | overflow galvanized steel roof scupper (Material Prepare & Submit) (GUARD HOUSE) |  | 2026-09-15 → 2026-09-22 (+7d) | 50% → 60% | -11d → -16.6d |
| WAD.S.3170 | counter desk (Material Prepare & Submit) (GUARD HOUSE) |  | 2026-09-15 → 2026-09-22 (+7d) | 50% → 60% | -11d → -16.6d |
| WAD.S.3180 | install ceramic wall tiles (Material Prepare & Submit) (GUARD HOUSE) |  | 2026-09-15 → 2026-09-22 (+7d) | 50% → 60% | -11d → -16.6d |
| WAD.S.3190 | PANEL SIGNAGE (Material Prepare & Submit) (GUARD HOUSE) |  | 2026-09-15 → 2026-09-22 (+7d) | 50% → 60% | -11d → -16.6d |
| WAD.S.3200 | COMMUNICATIONS BACKBONE CABLING (Material Prepare & Submit) (GUARD HOUSE) |  | 2026-09-15 → 2026-09-22 (+7d) | 50% → 60% | -11d → -16.6d |
| WAD.S.3210 | card reader IN/OUT (Material Prepare & Submit) (GUARD HOUSE) |  | 2026-09-15 → 2026-09-22 (+7d) | 50% → 60% | -7d → -12.6d |
| WAD.S.3240 | SUPPLY AND INSTALL PLUMBING FIXTURES (Material Prepare & Submit) (GUARD HOUSE) |  | 2026-09-15 → 2026-09-22 (+7d) | 50% → 60% | -6.5d → -12.1d |
| WAD.S.2840 | ceramic floor tiles (Material Prepare & Submit) (GUARD HOUSE) |  | 2026-09-17 → 2026-09-24 (+7d) | 50% → 60% | -10d → -15.2d |
| WAD.S.2850 | Riyadh stone cladding (Material Prepare & Submit) (GUARD HOUSE) |  | 2026-09-17 → 2026-09-24 (+7d) | 50% → 60% | -13d → -18.2d |
| WAD.S.2860 | UPS (Material Prepare & Submit) (GUARD HOUSE) |  | 2026-09-17 → 2026-09-24 (+7d) | 50% → 60% | -15d → -19.8d |
| WAD.S.2890 | Panel boards (Material Prepare & Submit) (GUARD HOUSE) |  | 2026-09-17 → 2026-09-24 (+7d) | 50% → 60% | -14.2d → -19.4d |
| WAD.S.3560 | aluminum framed double glazed windows (Material Prepare & Submit) (GUARD HOUSE) |  | 2026-09-17 → 2026-09-24 (+7d) | 50% → 60% | -6d → -11.2d |
| WAD.S.3570 | Roller blind (Material Prepare & Submit) (GUARD HOUSE) |  | 2026-09-17 → 2026-09-24 (+7d) | 50% → 60% | -10d → -15.2d |
| WAD.S.3590 | DATA COMMUNICATIONS (Material Prepare & Submit) (GUARD HOUSE) |  | 2026-09-17 → 2026-09-24 (+7d) | 50% → 60% | -4d → -9.2d |
| WAD.S.3710 | COMPUTERS AND RELATED PERIPHERALS (Material Prepare & Submit) (GUARD HOUSE) |  | 2026-09-17 → 2026-09-24 (+7d) | 50% → 60% | -4d → -9.2d |
| WAD.S.3030 | PANTRY CABINET (Material Prepare & Submit) (GUARD HOUSE) |  | 2026-09-20 → 2026-09-26 (+6d) | 50% → 60% | -15d → -19.8d |
| WAD.S.3040 | 20mm thick black granite (Material Prepare & Submit) (GUARD HOUSE) |  | 2026-09-20 → 2026-09-26 (+6d) | 50% → 60% | -6d → -10.8d |
| WAD.S.3060 | Safety Disconnect Switches complete with busbar, frame box (Material Prepare & Submit) (GUARD HOUSE) |  | 2026-09-20 → 2026-09-26 (+6d) | 50% → 60% | -9d → -13.8d |
| WAD.S.3300 | heavy steel cover with frame for tanks (Material Prepare & Submit) (GUARD HOUSE) |  | 2026-09-20 → 2026-09-26 (+6d) | 50% → 60% | -6d → -10.8d |
| WAD.S.3310 | HOLLOW METAL DOORS AND FRAMES (Material Prepare & Submit) (GUARD HOUSE) |  | 2026-09-20 → 2026-09-26 (+6d) | 50% → 60% | -7d → -11.8d |
| WAD.S.3320 | ALUMINIUM DOORS (Material Prepare & Submit) (GUARD HOUSE) |  | 2026-09-20 → 2026-09-26 (+6d) | 50% → 60% | -6d → -10.8d |
| WAD.S.3330 | TOILET AND BATH ACCESSROIES (Material Prepare & Submit) (GUARD HOUSE) |  | 2026-09-20 → 2026-09-26 (+6d) | 50% → 60% | -0.9d → -5.7d |
| WAD.S.3340 | Waste Receptacle (Material Prepare & Submit) (GUARD HOUSE) |  | 2026-09-20 → 2026-09-26 (+6d) | 50% → 60% | -9d → -13.8d |
| WAD.S.3350 | LIGHTING FIXTURES (Material Prepare & Submit) (GUARD HOUSE) |  | 2026-09-20 → 2026-09-26 (+6d) | 50% → 60% | -8d → -12.8d |
| WAD.S.3360 | Access control panel (Material Prepare & Submit) (GUARD HOUSE) |  | 2026-09-20 → 2026-09-26 (+6d) | 50% → 60% | -9d → -13.8d |
| WAD.S.3370 | VIDEO SURVEILLANCE (Material Prepare & Submit) (GUARD HOUSE) |  | 2026-09-20 → 2026-09-26 (+6d) | 50% → 60% | -11d → -15.8d |
| WAD.S.3550 | ROAD WORKS (Material Review & Approve) (GUARD HOUSE) |  | 2026-09-19 → 2026-09-24 (+5d) | 50% → 60% | -5d → -10d |
| WAD.S.2680 | Manhole depth not exceeding 4.0m (Material Review & Approve) (GUARD HOUSE) | 2026-09-16 → 2026-09-22 (+6d) | 2026-09-22 → 2026-09-29 (+7d) |  | -5d → -10.6d |
| WAD.S.3140 | SIDEWALKS AND CURBS (Material Review & Approve) (GUARD HOUSE) | 2026-09-19 → 2026-09-24 (+5d) | 2026-09-24 → 2026-10-01 (+7d) |  | -12d → -17.2d |
| WAD.S.4840 | UNDERGROUND DISTRIBUTION SYSTEM (Material Review & Approve) (GUARD HOUSE) | 2026-09-29 → 2026-09-28 (-1d) |  |  | -3d → -2.6d |
| 2 | **Long Lead Items** |  | 2026-09-27 → 2026-10-03 (+6d) |  |  |
| WAD.S.1510 | Intrusion Detection system including processor control units items and joints (Material Review & Approve) (FENCES) |  | 2026-09-15 → 2026-09-22 (+7d) |  | -28.5d → -34.5d |
| WAD.S.3670 | WATER SUPPLY SYSTEM (Material Review & Approve) (GUARD HOUSE) |  | 2026-09-20 → 2026-09-23 (+3d) |  | -3.1d → -6.1d |
| WAD.S.3680 | SEWER AND DRAINAGE SYSTEM (Material Review & Approve) (GUARD HOUSE) |  | 2026-09-21 → 2026-09-27 (+6d) |  | -4.1d → -9.3d |
| WAD.S.3700 | HEATING, VENTILATION AND AIR CONDITIONING (Material Review & Approve) (GUARD HOUSE) |  | 2026-09-23 → 2026-09-26 (+3d) |  | -6.7d → -8.9d |
| WAD.S.3800 | TOILET AND BATH ACCESSROIES (Material Review & Approve) (GUARD HOUSE) |  | 2026-09-21 → 2026-09-27 (+6d) |  | -0.9d → -5.7d |
| WAD.S.3690 | SUPPLY AND INSTALL PLUMBING FIXTURES (Material Review & Approve) (GUARD HOUSE) |  | 2026-09-27 → 2026-10-03 (+6d) |  | -15d → -19.8d |
| WAD.S.1650 | Handholes\ Manholes (Material Review & Approve) (FENCES) | 2026-09-15 → 2026-09-22 (+7d) | 2026-09-22 → 2026-09-29 (+7d) |  | -8.2d → -14.2d |
| WAD.S.3000 | ceramic floor tiles (Material Review & Approve) (GUARD HOUSE) | 2026-09-19 → 2026-09-24 (+5d) | 2026-09-24 → 2026-10-01 (+7d) |  | -10d → -15.2d |
| WAD.S.3010 | install Riyadh stone cladding (Material Review & Approve) (GUARD HOUSE) | 2026-09-19 → 2026-09-24 (+5d) | 2026-09-24 → 2026-10-01 (+7d) |  | -13d → -18.2d |
| WAD.S.3020 | UPS (Material Review & Approve) (GUARD HOUSE) | 2026-09-19 → 2026-09-24 (+5d) | 2026-09-24 → 2026-10-01 (+7d) |  | -11d → -16.2d |
| WAD.S.3130 | Panel boards (Material Review & Approve) (GUARD HOUSE) | 2026-09-19 → 2026-09-24 (+5d) | 2026-09-24 → 2026-10-01 (+7d) |  | -13d → -18.2d |
| WAD.S.3660 | card reader IN/OUT (Material Review & Approve) (GUARD HOUSE) | 2026-09-19 → 2026-09-24 (+5d) | 2026-09-24 → 2026-10-01 (+7d) |  | -9d → -14.2d |
| WAD.S.4040 | aluminum framed double glazed windows (Material Review & Approve) (GUARD HOUSE) | 2026-09-19 → 2026-09-24 (+5d) | 2026-09-24 → 2026-10-01 (+7d) |  | -6d → -11.2d |
| WAD.S.4050 | Roller blind (Material Review & Approve) (GUARD HOUSE) | 2026-09-19 → 2026-09-24 (+5d) | 2026-09-24 → 2026-10-01 (+7d) |  | -10d → -15.2d |
| WAD.S.4070 | DATA COMMUNICATIONS (Material Review & Approve) (GUARD HOUSE) | 2026-09-19 → 2026-09-24 (+5d) | 2026-09-24 → 2026-10-01 (+7d) |  | -4d → -9.2d |
| WAD.S.4080 | COMPUTERS AND RELATED PERIPHERALS (Material Review & Approve) (GUARD HOUSE) | 2026-09-19 → 2026-09-24 (+5d) | 2026-09-24 → 2026-10-01 (+7d) |  | -4d → -9.2d |
| WAD.S.3500 | PANTRY CABINET (Material Review & Approve) (GUARD HOUSE) | 2026-09-21 → 2026-09-26 (+5d) | 2026-09-27 → 2026-10-03 (+6d) |  | -15d → -19.8d |

| ID | Task | Start | Finish | Complete | Total float |
| --- | --- | --- | --- | --- | --- |
| WAD.S.3510 | 20mm thick black granite (Material Review & Approve) (GUARD HOUSE) | 2026-09-21 → 2026-09-26 (+5d) | 2026-09-27 → 2026-10-03 (+6d) |  | -6d → -10.8d |
| WAD.S.3520 | Workstation chair (Material Review & Approve) (GUARD HOUSE) | 2026-09-21 → 2026-09-26 (+5d) | 2026-09-27 → 2026-10-03 (+6d) |  | -10d → -14.8d |
| WAD.S.3600 | folding & sliding mounter combination ladder for building maintenance purpose (Material Review & Approve) (GUARD HOUSE) | 2026-09-21 → 2026-09-26 (+5d) | 2026-09-27 → 2026-10-03 (+6d) |  | -15d → -19.8d |
| WAD.S.3610 | overflow galvanized steel roof scupper (Material Review & Approve) (GUARD HOUSE) | 2026-09-21 → 2026-09-26 (+5d) | 2026-09-27 → 2026-10-03 (+6d) |  | -15d → -19.8d |
| WAD.S.3620 | counter desk (Material Review & Approve) (GUARD HOUSE) | 2026-09-21 → 2026-09-26 (+5d) | 2026-09-27 → 2026-10-03 (+6d) |  | -15d → -19.8d |
| WAD.S.3630 | install ceramic wall tiles (Material Review & Approve) (GUARD HOUSE) | 2026-09-21 → 2026-09-26 (+5d) | 2026-09-27 → 2026-10-03 (+6d) |  | -15d → -19.8d |
| WAD.S.3640 | PANEL SIGNAGE (Material Review & Approve) (GUARD HOUSE) | 2026-09-21 → 2026-09-26 (+5d) | 2026-09-27 → 2026-10-03 (+6d) |  | -15d → -19.8d |
| WAD.S.3650 | COMMUNICATIONS BACKBONE CABLING (Material Review & Approve) (GUARD HOUSE) | 2026-09-21 → 2026-09-26 (+5d) | 2026-09-27 → 2026-10-03 (+6d) |  | -15d → -19.8d |
| WAD.S.3770 | heavy steel cover with frame for tanks (Material Review & Approve) (GUARD HOUSE) | 2026-09-21 → 2026-09-26 (+5d) | 2026-09-27 → 2026-10-03 (+6d) |  | -6d → -10.8d |
| WAD.S.3780 | HOLLOW METAL DOORS AND FRAMES (Material Review & Approve) (GUARD HOUSE) | 2026-09-21 → 2026-09-26 (+5d) | 2026-09-27 → 2026-10-03 (+6d) |  | -7d → -11.8d |
| WAD.S.3790 | ALUMINIUM DOORS (Material Review & Approve) (GUARD HOUSE) | 2026-09-21 → 2026-09-26 (+5d) | 2026-09-27 → 2026-10-03 (+6d) |  | -6d → -10.8d |
| WAD.S.3810 | Waste Receptacle (Material Review & Approve) (GUARD HOUSE) | 2026-09-21 → 2026-09-26 (+5d) | 2026-09-27 → 2026-10-03 (+6d) |  | -9d → -13.8d |
| WAD.S.3820 | LIGHTING FIXTURES (Material Review & Approve) (GUARD HOUSE) | 2026-09-21 → 2026-09-26 (+5d) | 2026-09-27 → 2026-10-03 (+6d) |  | -8d → -12.8d |
| WAD.S.3830 | Access control panel (Material Review & Approve) (GUARD HOUSE) | 2026-09-21 → 2026-09-26 (+5d) | 2026-09-27 → 2026-10-03 (+6d) |  | -9d → -13.8d |
| WAD.S.3840 | VIDEO SURVEILLANCE (Material Review & Approve) (GUARD HOUSE) | 2026-09-21 → 2026-09-26 (+5d) | 2026-09-27 → 2026-10-03 (+6d) |  | -11d → -15.8d |
| 7 | **Procurement** |  | 2026-10-17 → 2026-10-22 (+5d) |  |  |
| 5 | **Fabrication & Delivery** |  | 2026-10-17 → 2026-10-22 (+5d) |  |  |
| 1 | **Short Lead Items** |  | 2026-10-08 → 2026-10-10 (+2d) |  |  |
| WAD.S.1430 | structural steel beams, posts and rods for wall fence (FENCES) |  | 2026-09-14 → 2026-09-21 (+7d) |  | -11.2d → -17.2d |
| WAD.S.1540 | tubes, bolts, nuts and steel plates to strengthened the wall fence and posts (FENCES) |  | 2026-09-14 → 2026-09-21 (+7d) |  | -11.15d → -17.15d |
| WAD.S.4780 | FIRE PROTECTION SYSTEM (fire extinguisher) (GUARD HOUSE) | 2026-09-14 → 2026-09-21 (+7d) | 2026-09-19 → 2026-09-26 (+7d) |  | 14d → 8d |
| WAD.S.3290 | 100 mm GRP pipe service connections (GUARD HOUSE) | 2026-09-16 → 2026-09-22 (+6d) | 2026-09-22 → 2026-09-29 (+7d) |  | -11d → -16.6d |
| WAD.S.4160 | GROUNDING (GUARD HOUSE) | 2026-09-16 → 2026-09-22 (+6d) | 2026-09-19 → 2026-09-26 (+7d) |  | 14d → 8.4d |
| WAD.S.4170 | ROAD WORKS (GUARD HOUSE) | 2026-09-20 → 2026-09-26 (+6d) | 2026-09-26 → 2026-10-01 (+5d) |  | -5d → -10d |
| WAD.S.2970 | Manhole depth not exceeding 4.0m (GUARD HOUSE) | 2026-09-23 → 2026-09-29 (+6d) | 2026-10-01 → 2026-10-08 (+7d) |  | -5d → -10.6d |
| WAD.S.3910 | SIDEWALKS AND CURBS (GUARD HOUSE) | 2026-09-26 → 2026-10-01 (+5d) | 2026-10-03 → 2026-10-10 (+7d) |  | -12d → -17.2d |
| WAD.S.5080 | UNDERGROUND DISTRIBUTION SYSTEM (GUARD HOUSE) | 2026-10-06 → 2026-10-05 (-1d) |  |  | -3d → -2.6d |
| 2 | **Long Lead Items** |  | 2026-10-17 → 2026-10-22 (+5d) |  |  |
| WAD.S.1570 | fix galvanized steel chain link gate including all necessary associated (FENCES) |  | 2026-09-14 → 2026-09-21 (+7d) |  | -11.75d → -17.75d |
| WAD.S.2470 | structural steel members and plates for main sliding gates (FENCES) |  | 2026-09-14 → 2026-09-21 (+7d) |  | -11.7d → -17.7d |
| WAD.S.2170 | Intrusion Detection system including processor control units items and joints (FENCES) | 2026-09-15 → 2026-09-22 (+7d) | 2026-09-29 → 2026-10-06 (+7d) |  | -28.5d → -34.5d |
| WAD.S.4580 | WATER SUPPLY SYSTEM (GUARD HOUSE) | 2026-09-20 → 2026-09-23 (+3d) | 2026-10-05 → 2026-10-08 (+3d) |  | -2.1d → -5.1d |
| WAD.S.4610 | HEATING, VENTILATION AND AIR CONDITIONING (GUARD HOUSE) | 2026-09-23 → 2026-09-26 (+3d) | 2026-10-10 → 2026-10-12 (+2d) |  | -6.7d → -8.9d |
| WAD.S.4590 | SEWER AND DRAINAGE SYSTEM (GUARD HOUSE) | 2026-09-21 → 2026-09-27 (+6d) | 2026-10-07 → 2026-10-13 (+6d) |  | -4.1d → -9.3d |
| WAD.S.4650 | TOILET AND BATH ACCESSROIES (GUARD HOUSE) | 2026-09-21 → 2026-09-27 (+6d) | 2026-10-06 → 2026-10-12 (+6d) |  | -0.9d → -5.7d |
| WAD.S.2260 | Handholes\ Manholes (FENCES) | 2026-09-22 → 2026-09-29 (+7d) | 2026-10-06 → 2026-10-13 (+7d) |  | -8.2d → -14.2d |
| WAD.S.3740 | ceramic floor tiles (GUARD HOUSE) | 2026-09-26 → 2026-10-01 (+5d) | 2026-10-08 → 2026-10-15 (+7d) |  | -10d → -15.2d |
| WAD.S.3750 | install Riyadh stone cladding (GUARD HOUSE) | 2026-09-26 → 2026-10-01 (+5d) | 2026-10-08 → 2026-10-15 (+7d) |  | -9d → -14.2d |
| WAD.S.3760 | UPS (GUARD HOUSE) | 2026-09-26 → 2026-10-01 (+5d) | 2026-10-15 → 2026-10-22 (+7d) |  | -11d → -16.2d |
| WAD.S.3900 | Panel boards (GUARD HOUSE) | 2026-09-26 → 2026-10-01 (+5d) | 2026-10-15 → 2026-10-22 (+7d) |  | -9d → -14.2d |
| WAD.S.4570 | card reader IN/OUT (GUARD HOUSE) | 2026-09-26 → 2026-10-01 (+5d) | 2026-10-12 → 2026-10-19 (+7d) |  | -9d → -14.2d |
| WAD.S.4760 | aluminum framed double glazed windows (GUARD HOUSE) | 2026-09-26 → 2026-10-01 (+5d) | 2026-10-08 → 2026-10-15 (+7d) |  | -6d → -11.2d |
| WAD.S.4770 | Roller blind (GUARD HOUSE) | 2026-09-26 → 2026-10-01 (+5d) | 2026-10-08 → 2026-10-15 (+7d) |  | -10d → -15.2d |
| WAD.S.4790 | DATA COMMUNICATIONS (GUARD HOUSE) | 2026-09-26 → 2026-10-01 (+5d) | 2026-10-10 → 2026-10-17 (+7d) |  | -4d → -9.2d |
| WAD.S.4820 | COMPUTERS AND RELATED PERIPHERALS (GUARD HOUSE) | 2026-09-26 → 2026-10-01 (+5d) | 2026-10-06 → 2026-10-13 (+7d) |  | -4d → -9.2d |
| WAD.S.4120 | PANTRY CABINET (GUARD HOUSE) | 2026-09-28 → 2026-10-03 (+5d) | 2026-10-14 → 2026-10-20 (+6d) |  | -10d → -14.8d |
| WAD.S.4130 | 20mm thick black granite (GUARD HOUSE) | 2026-09-28 → 2026-10-03 (+5d) | 2026-10-12 → 2026-10-18 (+6d) |  | -6d → -10.8d |
| WAD.S.4140 | Workstation chair (GUARD HOUSE) | 2026-09-28 → 2026-10-03 (+5d) | 2026-10-15 → 2026-10-21 (+6d) |  | -10d → -14.8d |
| WAD.S.4150 | Safety Disconnect Switches complete with busbar, frame box (GUARD HOUSE) | 2026-09-28 → 2026-10-03 (+5d) | 2026-10-17 → 2026-10-22 (+5d) |  | -10d → -14.8d |
| WAD.S.4510 | folding & sliding mounter combination ladder for building maintenance purpose (GUARD HOUSE) | 2026-09-28 → 2026-10-03 (+5d) | 2026-10-12 → 2026-10-18 (+6d) |  | -8d → -12.8d |
| WAD.S.4520 | overflow galvanized steel roof scupper (GUARD HOUSE) | 2026-09-28 → 2026-10-03 (+5d) | 2026-10-12 → 2026-10-18 (+6d) |  | -8d → -12.8d |
| WAD.S.4530 | counter desk (GUARD HOUSE) | 2026-09-28 → 2026-10-03 (+5d) | 2026-10-13 → 2026-10-19 (+6d) |  | -10d → -14.8d |
| WAD.S.4540 | install ceramic wall tiles (GUARD HOUSE) | 2026-09-28 → 2026-10-03 (+5d) | 2026-10-11 → 2026-10-17 (+6d) |  | -8d → -12.8d |
| WAD.S.4550 | PANEL SIGNAGE (GUARD HOUSE) | 2026-09-28 → 2026-10-03 (+5d) | 2026-10-13 → 2026-10-19 (+6d) |  | -9d → -13.8d |
| WAD.S.4560 | COMMUNICATIONS BACKBONE CABLING (GUARD HOUSE) | 2026-09-28 → 2026-10-03 (+5d) | 2026-10-12 → 2026-10-18 (+6d) |  | -6d → -10.8d |
| WAD.S.4600 | SUPPLY PLUMBING FIXTURES (GUARD HOUSE) | 2026-09-28 → 2026-10-03 (+5d) | 2026-10-12 → 2026-10-18 (+6d) |  | -15d → -19.8d |
| WAD.S.4620 | heavy steel cover with frame for tanks (GUARD HOUSE) | 2026-09-28 → 2026-10-03 (+5d) | 2026-10-12 → 2026-10-18 (+6d) |  | -6d → -10.8d |
| WAD.S.4630 | HOLLOW METAL DOORS AND FRAMES (GUARD HOUSE) | 2026-09-28 → 2026-10-03 (+5d) | 2026-10-13 → 2026-10-19 (+6d) |  | -7d → -11.8d |
| WAD.S.4640 | ALUMINIUM DOORS (GUARD HOUSE) | 2026-09-28 → 2026-10-03 (+5d) | 2026-10-12 → 2026-10-18 (+6d) |  | -6d → -10.8d |
| WAD.S.4660 | Waste Receptacle (GUARD HOUSE) | 2026-09-28 → 2026-10-03 (+5d) | 2026-10-14 → 2026-10-20 (+6d) |  | -9d → -13.8d |
| WAD.S.4670 | LIGHTING FIXTURES (GUARD HOUSE) | 2026-09-28 → 2026-10-03 (+5d) | 2026-10-11 → 2026-10-17 (+6d) |  | -8d → -12.8d |
| WAD.S.4680 | Access control panel (GUARD HOUSE) | 2026-09-28 → 2026-10-03 (+5d) | 2026-10-13 → 2026-10-19 (+6d) |  | -9d → -13.8d |
| WAD.S.4690 | VIDEO SURVEILLANCE (GUARD HOUSE) | 2026-09-28 → 2026-10-03 (+5d) | 2026-10-13 → 2026-10-19 (+6d) |  | -11d → -15.8d |
| 8 | **Construction** |  | 2026-11-10 → 2026-11-16 (+6d) |  |  |
| 1 | **FENCES** |  | 2026-11-08 → 2026-11-15 (+7d) |  |  |
| 1 | **SITE WORKS** |  | 2026-09-14 → 2026-09-21 (+7d) |  |  |
| WAD.S.1370 | Excavation Works |  | 2026-09-14 → 2026-09-21 (+7d) |  | -15.75d → -21.75d |
| 1 | **Part 1** |  | 2026-09-20 → 2026-09-24 (+4d) |  |  |
| WAD.S.1560 | cast in place reinforced concrete for the sub-structures - Part 1 |  | 2026-09-20 → 2026-09-24 (+4d) | 75% → 88% | -12.25d → -17.75d |
| WAD.S.2720 | cast in place reinforced concrete for the sub-structures - Part 2 |  |  | 75% → 88% | -12.25d → -12.79d |

| ID | Task | Start | Finish | Complete | Total float |
| --- | --- | --- | --- | --- | --- |
| 3 | **THERMAL & MOISTURE PROTECTION** |  | 2026-10-17 → 2026-10-21 (+4d) |  |  |
| 1 | **Part 1** |  | 2026-09-22 → 2026-09-27 (+5d) |  |  |
| WAD.S.2330 | Applying 2 coats of bitumen waterproofing paint on concrete surfaces - Part 1 |  | 2026-09-22 → 2026-09-27 (+5d) | 75% → 88% | -12d → -15.27d |
| 2 | **Part 2** | 2026-09-23 → 2026-09-27 (+4d) | 2026-10-17 → 2026-10-21 (+4d) |  |  |
| WAD.S.3420 | Applying 2 coats of bitumen waterproofing paint on concrete surfaces - Part 2 | 2026-09-23 → 2026-09-27 (+4d) | 2026-10-17 → 2026-10-21 (+4d) |  | -12d → -15.27d |
| 6 | **SPECIAL CONSTRUCTION- STRUCTURAL STEEL** |  | 2026-10-20 → 2026-10-26 (+6d) |  |  |
| 1 | **Part 1** |  | 2026-10-12 → 2026-10-08 (-4d) |  |  |
| WAD.S.2870 | install structural steel beams, posts and rods for wall fence - Part 1 |  | 2026-09-20 → 2026-09-24 A (+4d) | 75% → 100% | -11.75d → none |
| WAD.S.3260 | Install tubes, bolts, nuts and steel plates to strengthened the wall fence and posts - Part 1 |  | 2026-09-30 → 2026-09-27 (-3d) | 35% → 75% | -11.75d → -17.75d |
| WAD.S.3870 | fix galvanized steel chain link fence wall; including steel tube framing and posts, turn buckle - Part 1 |  | 2026-10-06 → 2026-10-03 (-3d) | 35% → 75% | -11.75d → -17.75d |
| WAD.S.4720 | galvanized steel chain link gates Installation - Part 1 |  | 2026-10-12 → 2026-10-08 (-4d) | 35% → 75% | -12.25d → -17.75d |
| 2 | **Part 2** | 2026-09-14 → 2026-09-21 (+7d) | 2026-10-20 → 2026-10-26 (+6d) |  |  |
| WAD.S.2920 | install structural steel beams, posts and rods for wall fence - Part 2 | 2026-09-14 → 2026-09-21 A (+7d) | 2026-10-08 → 2026-10-15 (+7d) | 0% → 44% | -9.75d → -15.75d |
| WAD.S.3430 | Install tubes, bolts, nuts and steel plates to strengthened the wall fence and posts - Part 2 | 2026-09-14 → 2026-09-21 (+7d) | 2026-10-08 → 2026-10-15 (+7d) |  | -5.75d → -11.75d |
| WAD.S.3950 | fix galvanized steel chain link fence wall; including steel tube framing and posts, turn buckle - Part 2 | 2026-09-20 → 2026-09-27 (+7d) | 2026-10-14 → 2026-10-21 (+7d) |  | -7.75d → -13.75d |
| WAD.S.4730 | galvanized steel chain link gates Installation - Part 2 | 2026-09-27 → 2026-10-03 (+6d) | 2026-10-20 → 2026-10-26 (+6d) |  | -12.25d → -17.75d |
| 8 | **ELECTRICAL WORKS** | 2026-09-29 → 2026-10-06 (+7d) | 2026-11-08 → 2026-11-15 (+7d) |  |  |
| WAD.S.2640 | Intrusion Detection system including processor control units items and joints - 1st Fix | 2026-09-29 → 2026-10-06 (+7d) | 2026-10-10 → 2026-10-17 (+7d) |  | -28.5d → -34.5d |
| WAD.S.2950 | Fiber Optic Outdoor Cable | 2026-10-10 → 2026-10-17 (+7d) | 2026-10-19 → 2026-10-26 (+7d) |  | -28.5d → -34.5d |
| WAD.S.2960 | Road crossing ducts for Fiber Optic Cable | 2026-10-10 → 2026-10-17 (+7d) | 2026-10-18 → 2026-10-25 (+7d) |  | -13.5d → -19.5d |
| WAD.S.2980 | install 50mm diameter high-density polyethylene (HDPE) pipe including the require pipe fittings for connection, | 2026-10-12 → 2026-10-19 (+7d) | 2026-10-21 → 2026-10-28 (+7d) |  | -13.5d → -19.5d |
| WAD.S.3720 | Fiber Optic Outdoor Cable To Close The Loop | 2026-10-19 → 2026-10-26 (+7d) | 2026-10-29 → 2026-11-05 (+7d) |  | -28.5d → -34.5d |
| WAD.S.4810 | Handholes\ Manholes | 2026-10-29 → 2026-11-05 (+7d) | 2026-11-08 → 2026-11-15 (+7d) |  | -28.5d → -34.5d |
| 4 | **ELECTRICAL GATE BARRIER** | 2026-10-29 → 2026-11-05 (+7d) | 2026-11-08 → 2026-11-15 (+7d) |  |  |
| WAD.S.4830 | Install, Electrical gate barrier complete (cables, conduits, pipes, pulling cables in the conduits) | 2026-10-29 → 2026-11-05 (+7d) | 2026-11-08 → 2026-11-15 (+7d) |  | -28.5d → -34.5d |
| 2 | **GUARD HOUSE 1** |  | 2026-10-19 → 2026-10-25 (+6d) |  |  |
| 1 | **SITE WORKS** |  | 2026-10-05 → 2026-10-12 (+7d) |  |  |
| 5 | **Guard Rooms & Gates (CONCRETE Works)** |  | 2026-10-05 → 2026-10-12 (+7d) |  |  |
| WAD.S.3390 | Provide and cast concrete floor slab on grade | 2026-09-14 → 2026-09-19 A (+5d) | 2026-09-19 → 2026-09-22 A (+3d) | 0% → 100% | -3d → none |
| WAD.S.3410 | Tanks Raft | 2026-09-14 → 2026-09-21 (+7d) | 2026-09-19 → 2026-09-26 (+7d) |  | -3d → -9d |
| WAD.S.3940 | Tanks Walls | 2026-09-20 → 2026-09-27 (+7d) | 2026-09-24 → 2026-10-01 (+7d) |  | -3d → -9d |
| WAD.S.4850 | Tanks Slab | 2026-10-01 → 2026-10-08 (+7d) | 2026-10-05 → 2026-10-12 (+7d) |  | 0d → -6d |
| 3 | **MASONRY UNIT** |  | 2026-09-14 → 2026-09-21 (+7d) |  |  |
| WAD.S.2910 | install Concrete Masonry Unit (CMU) for walls |  | 2026-09-14 → 2026-09-21 (+7d) | 80% → 92% | -7.6d → -13.24d |
| 7 | **ROOFING SYSTEM** | 2026-09-26 → 2026-10-03 (+7d) | 2026-10-08 → 2026-10-15 (+7d) |  |  |
| WAD.S.4180 | install liquid applied waterproofing coating single-component pitch modified polyurethane based elastomeric | 2026-09-26 → 2026-10-03 (+7d) | 2026-10-08 → 2026-10-15 (+7d) |  | -7.6d → -13.24d |
| WAD.S.4190 | install 4mm thick APP modified bituminous membrane - single layer | 2026-09-26 → 2026-10-03 (+7d) | 2026-10-08 → 2026-10-15 (+7d) |  | -7.6d → -13.24d |
| WAD.S.4200 | install 75mm thick rigid insulation (extruded polystyrene) | 2026-09-26 → 2026-10-03 (+7d) | 2026-10-08 → 2026-10-15 (+7d) |  | -7.6d → -13.24d |
| WAD.S.4210 | cast in place foam concrete screed, 50mm thick minimum; laid to fall and cross fall | 2026-09-26 → 2026-10-03 (+7d) | 2026-10-08 → 2026-10-15 (+7d) |  | -7.6d → -13.24d |
| WAD.S.4220 | install 300 micron polyethylene sheet | 2026-09-26 → 2026-10-03 (+7d) | 2026-10-08 → 2026-10-15 (+7d) |  | -7.6d → -13.24d |
| WAD.S.4230 | install 50mm thick loose gravel toppings | 2026-09-26 → 2026-10-03 (+7d) | 2026-10-08 → 2026-10-15 (+7d) |  | -7.6d → -13.24d |
| WAD.S.4240 | install high density polyisocynurate cover board | 2026-09-26 → 2026-10-03 (+7d) | 2026-10-08 → 2026-10-15 (+7d) |  | -7.6d → -13.24d |
| WAD.S.4250 | install UV resistant geotextile sheet | 2026-09-26 → 2026-10-03 (+7d) | 2026-10-08 → 2026-10-15 (+7d) |  | -7.6d → -13.24d |
| WAD.S.4260 | fixing 3mm thick extruded aluminum flashing 40mm with sealant and all other accessories | 2026-09-26 → 2026-10-03 (+7d) | 2026-10-08 → 2026-10-15 (+7d) |  | -7.6d → -13.24d |
| WAD.S.4270 | install Terrazzo tiles | 2026-09-26 → 2026-10-03 (+7d) | 2026-10-08 → 2026-10-15 (+7d) |  | -7.6d → -13.24d |
| 2 | **THERMAL & MOISTURE PROTECTION - Tanks** | 2026-09-26 → 2026-10-03 (+7d) | 2026-10-08 → 2026-10-15 (+7d) |  |  |
| WAD.S.4710 | install water stop for tanks according to the drawings and specification | 2026-09-26 → 2026-10-03 (+7d) | 2026-09-30 → 2026-10-07 (+7d) |  | -3d → -9d |
| WAD.S.4280 | lay epoxy 2 coating for inner surfaces for bottom of the roof | 2026-09-26 → 2026-10-03 (+7d) | 2026-10-08 → 2026-10-15 (+7d) |  | -7.6d → -13.24d |
| 9 | **FINISHES** | 2026-09-14 → 2026-09-21 (+7d) | 2026-10-19 → 2026-10-24 (+5d) |  |  |
| WAD.S.3090 | install concrete plastering | 2026-09-14 → 2026-09-21 (+7d) | 2026-09-19 → 2026-09-26 (+7d) |  | -7.6d → -13.24d |
| WAD.S.4940 | install ceramic floor tiles | 2026-10-10 → 2026-10-15 (+5d) | 2026-10-12 → 2026-10-19 (+7d) |  | -10d → -15.75d |
| WAD.S.4950 | install granite flooring | 2026-10-10 → 2026-10-15 (+5d) | 2026-10-11 → 2026-10-18 (+7d) |  | -10d → -15.75d |
| WAD.S.5010 | install granite saddles and thresholds | 2026-10-10 → 2026-10-15 (+5d) | 2026-10-12 → 2026-10-19 (+7d) |  | -10d → -15.75d |
| WAD.S.5020 | install Riyadh stone cladding | 2026-10-10 → 2026-10-15 (+5d) | 2026-10-12 → 2026-10-19 (+7d) |  | -9d → -14.75d |
| WAD.S.5030 | install 3mm steel CNC laser cut panels | 2026-10-10 → 2026-10-15 (+5d) | 2026-10-12 → 2026-10-19 (+7d) |  | -9d → -14.75d |
| WAD.S.5040 | gypsum board suspended ceiling | 2026-10-10 → 2026-10-15 (+5d) | 2026-10-14 → 2026-10-21 (+7d) |  | -10d → -15.75d |
| WAD.S.5060 | install aluminum cladding | 2026-10-11 → 2026-10-17 (+6d) | 2026-10-12 → 2026-10-19 (+7d) |  | -9d → -14.75d |
| WAD.S.5120 | install ceramic wall tiles | 2026-10-12 → 2026-10-17 (+5d) | 2026-10-14 → 2026-10-20 (+6d) |  | -8d → -12.8d |
| WAD.S.5530 | install two coats of acrylic paint on internal walls | 2026-10-18 → 2026-10-21 (+3d) | 2026-10-19 → 2026-10-24 (+5d) |  | -12d → -15.27d |
| WAD.S.5540 | install two coats of acrylic paint (suitable for exterior use) on external | 2026-10-18 → 2026-10-21 (+3d) | 2026-10-19 → 2026-10-24 (+5d) |  | -12d → -15.27d |
| 13 | **MECHANICAL WORKS** | 2026-09-14 → 2026-09-21 (+7d) | 2026-10-15 → 2026-10-22 (+7d) |  |  |
| 1 | **MECHANICAL WORKS - 1st Fix** | 2026-09-14 → 2026-09-21 (+7d) | 2026-09-24 → 2026-10-01 (+7d) |  |  |
| WAD.S.1660 | WATER SUPPLY SYSTEM - 1st Fix | 2026-09-14 → 2026-09-21 A (+7d) | 2026-09-24 → 2026-10-01 (+7d) | 0% → 15% | -36.5d → -40d |
| WAD.S.1670 | SEWER AND DRAINAGE SYSTEM - 1st Fix | 2026-09-14 → 2026-09-21 A (+7d) | 2026-09-24 → 2026-10-01 (+7d) | 0% → 15% | -36.5d → -40d |
| WAD.S.1680 | IRRIGATION SYSTEM - 1st Fix | 2026-09-14 → 2026-09-21 A (+7d) | 2026-09-24 → 2026-10-01 (+7d) | 0% → 15% | -36.5d → -40d |
| WAD.S.1710 | HEATING, VENTILATION AND AIR CONDITIONING - 1st Fix | 2026-09-14 → 2026-09-21 A (+7d) | 2026-09-24 → 2026-10-01 (+7d) | 0% → 15% | -36.5d → -40d |
| WAD.S.1720 | Exhaust fans - 1st Fix | 2026-09-14 → 2026-09-21 A (+7d) | 2026-09-24 → 2026-10-01 (+7d) | 0% → 15% | -36.5d → -40d |
| 2 | **MECHANICAL WORKS - Final Fix** | 2026-10-13 → 2026-10-19 (+6d) | 2026-10-15 → 2026-10-22 (+7d) |  |  |
| WAD.S.5130 | installation of Fire extinguishers as per drawings, specifications | 2026-10-13 → 2026-10-19 (+6d) | 2026-10-15 → 2026-10-22 (+7d) |  | -9d → -14.75d |
| WAD.S.5140 | gully traps with heavy duty cover | 2026-10-13 → 2026-10-19 (+6d) | 2026-10-15 → 2026-10-22 (+7d) |  | -9d → -14.75d |

| ID | Task | Start | Finish | Complete | Total float |
| --- | --- | --- | --- | --- | --- |
| WAD.S.5150 | chamber with heavy duty cover | 2026-10-13 → 2026-10-19 (+6d) | 2026-10-15 → 2026-10-22 (+7d) |  | -9d → -14.75d |
| WAD.S.5160 | INSTALL PLUMBING FIXTURES | 2026-10-13 → 2026-10-19 (+6d) | 2026-10-15 → 2026-10-22 (+7d) |  | -9d → -14.75d |
| WAD.S.5910 | HEATING, VENTILATION AND AIR CONDITIONING - Final Fix | 2026-10-13 → 2026-10-19 (+6d) | 2026-10-15 → 2026-10-22 (+7d) |  | -9d → -14.75d |
| WAD.S.5920 | Exhaust fans - Final Fix | 2026-10-13 → 2026-10-19 (+6d) | 2026-10-15 → 2026-10-22 (+7d) |  | -9d → -14.75d |
| WAD.S.5930 | Bulbblers and Spreyers of IRRIGATION SYSTEM | 2026-10-13 → 2026-10-19 (+6d) | 2026-10-15 → 2026-10-22 (+7d) |  | -9d → -14.75d |
| WAD.S.5980 | WATER SUPPLY SYSTEM - Final Fix | 2026-10-13 → 2026-10-19 (+6d) | 2026-10-15 → 2026-10-22 (+7d) |  | -9d → -14.75d |
| WAD.S.5990 | IRRIGATION SYSTEM - Final Fix | 2026-10-13 → 2026-10-19 (+6d) | 2026-10-15 → 2026-10-22 (+7d) |  | -9d → -14.75d |
| 15 | **ELECTRICAL WORKS** |  | 2026-10-18 → 2026-10-25 (+7d) |  |  |
| 1 | **ELECTRICAL WORKS - 1st Fix** |  | 2026-09-24 → 2026-10-01 (+7d) |  |  |
| WAD.S.1770 | GROUNDING - 1st Fix |  | 2026-09-19 → 2026-09-26 (+7d) |  | 5d → -1d |
| WAD.S.1690 | LIGHTING AND POWER TYPE PANELBOARDS - 1st Fix | 2026-09-14 → 2026-09-21 (+7d) | 2026-09-24 → 2026-10-01 (+7d) |  | 5d → -1d |
| WAD.S.1700 | UPS 3KVA (installed inside the rack) - 1st Fix | 2026-09-14 → 2026-09-21 (+7d) | 2026-09-24 → 2026-10-01 (+7d) |  | 5d → -1d |
| WAD.S.1730 | power source with built-in photocell sensor for automatic electrical connection during day/light times - 1st Fix | 2026-09-14 → 2026-09-21 (+7d) | 2026-09-24 → 2026-10-01 (+7d) |  | 5d → -1d |
| WAD.S.1740 | UNDERGROUND DISTRIBUTION SYSTEM - 1st Fix | 2026-09-14 → 2026-09-21 A (+7d) | 2026-09-24 → 2026-10-01 (+7d) | 0% → 15% | 5d → -1d |
| WAD.S.1750 | LIGHTING FIXTURES - 1st Fix | 2026-09-14 → 2026-09-21 A (+7d) | 2026-09-24 → 2026-10-01 (+7d) | 0% → 25% | 5d → -1d |
| WAD.S.1760 | installation of Wiring devices includes switches and Receptacle outlets complete with device boxes - 1st Fix | 2026-09-14 → 2026-09-21 (+7d) | 2026-09-24 → 2026-10-01 (+7d) |  | 5d → -1d |
| WAD.S.1780 | card reader IN/OUT - 1st Fix | 2026-09-14 → 2026-09-21 (+7d) | 2026-09-24 → 2026-10-01 (+7d) |  | 5d → -1d |
| WAD.S.1790 | CCTV cameras - 1st Fix | 2026-09-14 → 2026-09-21 (+7d) | 2026-09-24 → 2026-10-01 (+7d) |  | 5d → -1d |
| WAD.S.1800 | Access control panel - 1st Fix | 2026-09-14 → 2026-09-21 (+7d) | 2026-09-24 → 2026-10-01 (+7d) |  | 5d → -1d |
| WAD.S.1810 | fire alarm system including wires, conduit and other materials - 1st Fix | 2026-09-14 → 2026-09-21 (+7d) | 2026-09-24 → 2026-10-01 (+7d) |  | 5d → -1d |
| 2 | **ELECTRICAL WORKS - Final Fix** | 2026-10-12 → 2026-10-18 (+6d) | 2026-10-18 → 2026-10-25 (+7d) |  |  |
| WAD.S.5970 | 12-Port, SMF, Fiber Optic Patch Panels; | 2026-10-12 → 2026-10-18 (+6d) | 2026-10-15 → 2026-10-22 (+7d) |  | -9d → -14.75d |
| WAD.S.5940 | power source with built-in photocell sensor for automatic electrical connection during day/light times - Final Fix | 2026-10-13 → 2026-10-19 (+6d) | 2026-10-15 → 2026-10-22 (+7d) |  | -9d → -14.75d |
| WAD.S.5950 | LIGHTING FIXTURES - Final Fix | 2026-10-13 → 2026-10-19 (+6d) | 2026-10-15 → 2026-10-22 (+7d) |  | -9d → -14.75d |
| WAD.S.5960 | GROUNDING - Final Fix | 2026-10-13 → 2026-10-19 (+6d) | 2026-10-15 → 2026-10-22 (+7d) |  | -9d → -14.75d |
| WAD.S.6160 | card reader IN/OUT - Final Fix | 2026-10-13 → 2026-10-19 (+6d) | 2026-10-15 → 2026-10-22 (+7d) |  | -9d → -14.75d |
| WAD.S.6170 | 12-Port CAT6A UTP fully loaded patch panel | 2026-10-13 → 2026-10-19 (+6d) | 2026-10-15 → 2026-10-22 (+7d) |  | -9d → -14.75d |
| WAD.S.6180 | COMPUTERS AND RELATED PERIPHERALS | 2026-10-13 → 2026-10-19 (+6d) | 2026-10-15 → 2026-10-22 (+7d) |  | -9d → -14.75d |
| WAD.S.6190 | VIDEO SURVEILLANCE | 2026-10-14 → 2026-10-19 (+5d) | 2026-10-18 → 2026-10-24 (+6d) |  | -11d → -15.8d |
| WAD.S.6200 | CCTV storage system, as specified; | 2026-10-14 → 2026-10-19 (+5d) | 2026-10-18 → 2026-10-24 (+6d) |  | -11d → -15.8d |
| WAD.S.6140 | UNDERGROUND DISTRIBUTION SYSTEM - Final Fix | 2026-10-14 → 2026-10-20 (+6d) | 2026-10-15 → 2026-10-22 (+7d) |  | -9d → -14.75d |
| WAD.S.6150 | installation of Wiring devices includes switches and Receptacle outlets complete with device boxes - Final Fix | 2026-10-14 → 2026-10-20 (+6d) | 2026-10-15 → 2026-10-22 (+7d) |  | -9d → -14.75d |
| WAD.S.6270 | Access control panel - Final Fix | 2026-10-14 → 2026-10-20 (+6d) | 2026-10-15 → 2026-10-22 (+7d) |  | -9d → -14.75d |
| WAD.S.6280 | Central (Headend) System Components; | 2026-10-15 → 2026-10-20 (+5d) | 2026-10-18 → 2026-10-24 (+6d) |  | -11d → -15.8d |
| WAD.S.6290 | VSS System, as specified; | 2026-10-15 → 2026-10-20 (+5d) | 2026-10-18 → 2026-10-24 (+6d) |  | -11d → -15.8d |
| WAD.S.6300 | CCTV cameras - Final Fix | 2026-10-15 → 2026-10-20 (+5d) | 2026-10-18 → 2026-10-24 (+6d) |  | -11d → -15.8d |
| WAD.S.6310 | ELECTRICAL GATE BARRIER | 2026-10-15 → 2026-10-21 (+6d) | 2026-10-18 → 2026-10-25 (+7d) |  | -11d → -16.2d |
| WAD.S.6320 | fire alarm system including wires, conduit and other materials - Final Fix | 2026-10-15 → 2026-10-21 (+6d) | 2026-10-18 → 2026-10-25 (+7d) |  | -11d → -16.2d |
| WAD.S.6330 | Analog addressable fire alarm control panel with battery | 2026-10-15 → 2026-10-21 (+6d) | 2026-10-18 → 2026-10-25 (+7d) |  | -11d → -16.2d |
| WAD.S.6340 | LIGHTING AND POWER TYPE PANELBOARDS - Final Fix | 2026-10-15 → 2026-10-21 (+6d) | 2026-10-18 → 2026-10-25 (+7d) |  | -11d → -16.2d |
| WAD.S.6420 | 20A , ATS ( Automatic transfer switch) for UPS | 2026-10-17 → 2026-10-22 (+5d) | 2026-10-18 → 2026-10-25 (+7d) |  | -11d → -16.2d |
| WAD.S.6430 | LIGHTNING PROTECTION | 2026-10-17 → 2026-10-22 (+5d) | 2026-10-18 → 2026-10-25 (+7d) |  | -11d → -16.2d |
| WAD.S.6440 | Intelligent Ionization / Photoelectric smoke and heat detector with base | 2026-10-17 → 2026-10-22 (+5d) | 2026-10-18 → 2026-10-25 (+7d) |  | -11d → -16.2d |
| 4 | **METALS** | 2026-10-15 → 2026-10-21 (+6d) | 2026-10-17 → 2026-10-24 (+7d) |  |  |
| WAD.S.5500 | folding & sliding mounter combination ladder for building maintenance purpose | 2026-10-15 → 2026-10-21 (+6d) | 2026-10-17 → 2026-10-24 (+7d) |  | -10d → -15.75d |
| WAD.S.5510 | install of overflow galvanized steel roof scupper with gray color with angular secondary support | 2026-10-15 → 2026-10-21 (+6d) | 2026-10-17 → 2026-10-24 (+7d) |  | -10d → -15.75d |
| WAD.S.5520 | install heavy steel cover with frame including all necessary fixings | 2026-10-15 → 2026-10-21 (+6d) | 2026-10-17 → 2026-10-24 (+7d) |  | -10d → -15.75d |
| 5 | **WOODS AND PLASTICS** | 2026-10-14 → 2026-10-20 (+6d) | 2026-10-17 → 2026-10-24 (+7d) |  |  |
| WAD.S.5890 | COUNTER DESK | 2026-10-14 → 2026-10-20 (+6d) | 2026-10-17 → 2026-10-24 (+7d) |  | -10d → -15.75d |
| WAD.S.5880 | PANTRY CABINET | 2026-10-15 → 2026-10-21 (+6d) | 2026-10-17 → 2026-10-24 (+7d) |  | -10d → -15.75d |
| 8 | **DOORS & WINDOWS** | 2026-10-13 → 2026-10-19 (+6d) | 2026-10-17 → 2026-10-24 (+7d) |  |  |
| WAD.S.5050 | install hollow metal door | 2026-10-13 → 2026-10-19 (+6d) | 2026-10-17 → 2026-10-24 (+7d) |  | -10d → -15.75d |
| WAD.S.6120 | Install aluminum framed double glazed windows | 2026-10-13 → 2026-10-19 (+6d) | 2026-10-15 → 2026-10-22 (+7d) |  | -9d → -14.75d |
| WAD.S.5900 | Install Aluminum Door | 2026-10-14 → 2026-10-20 (+6d) | 2026-10-17 → 2026-10-24 (+7d) |  | -10d → -15.75d |
| 10 | **SPECIALTIES** | 2026-10-15 → 2026-10-21 (+6d) | 2026-10-18 → 2026-10-25 (+7d) |  |  |
| WAD.S.6130 | TOILET ACCESSROIES | 2026-10-15 → 2026-10-21 (+6d) | 2026-10-17 → 2026-10-24 (+7d) |  | -10d → -15.75d |
| WAD.S.6410 | PANEL SIGNAGE | 2026-10-17 → 2026-10-22 (+5d) | 2026-10-18 → 2026-10-25 (+7d) |  | -11d → -16.2d |
| 11 | **FURNISHINGS** | 2026-10-18 → 2026-10-24 (+6d) | 2026-10-18 → 2026-10-25 (+7d) |  |  |
| WAD.S.6450 | Workstation chair | 2026-10-18 → 2026-10-24 (+6d) | 2026-10-18 → 2026-10-25 (+7d) |  | -11d → -16.2d |
| WAD.S.6460 | Workstation table | 2026-10-18 → 2026-10-24 (+6d) | 2026-10-18 → 2026-10-25 (+7d) |  | -11d → -16.2d |
| WAD.S.6470 | Roller blind | 2026-10-18 → 2026-10-24 (+6d) | 2026-10-18 → 2026-10-25 (+7d) |  | -11d → -16.2d |
| WAD.S.6480 | Waste Receptacle | 2026-10-18 → 2026-10-24 (+6d) | 2026-10-18 → 2026-10-25 (+7d) |  | -11d → -16.2d |
| 3 | **GUARD HOUSE 2** |  | 2026-11-10 → 2026-11-14 (+4d) |  |  |
| 1 | **SITE WORKS** |  | 2026-11-03 → 2026-11-04 (+1d) |  |  |
| 4 | **Guard Rooms & Gates** |  | 2026-09-15 → 2026-09-22 (+7d) |  |  |
| WAD.S.2290 | Backfilling Under G.Beam |  | 2026-09-14 → 2026-09-16 A (+2d) | 85% → 100% | -26.8d → none |
| WAD.S.2300 | Backfilling Under S.O.G | 2026-09-14 → 2026-09-21 (+7d) | 2026-09-15 → 2026-09-22 (+7d) |  | -10d → -16d |
| 5 | **Guard Rooms & Gates (CONCRETE Works)** |  | 2026-11-03 → 2026-11-04 (+1d) |  |  |
| WAD.S.2610 | Grade beams |  | 2026-09-28 → 2026-09-30 A (+2d) | 50% → 100% | -36.5d → none |
| WAD.S.2660 | Columns | 2026-09-28 → 2026-09-29 A (+1d) | 2026-10-03 → 2026-10-04 A (+1d) | 0% → 100% | -36.5d → none |

| ID | Task | Start | Finish | Complete | Total float |
| --- | --- | --- | --- | --- | --- |
| WAD.S.2730 | Raft and R.C. walls | 2026-09-30 → 2026-10-05 A (+5d) | 2026-10-06 → 2026-10-10 A (+4d) | 0% → 100% | -36.5d → none |
| WAD.S.2770 | Roof Slab | 2026-10-03 → 2026-10-05 A (+2d) | 2026-10-12 → 2026-10-13 (+1d) | 0% → 50% | -36.5d → -38d |
| WAD.S.2780 | Beams | 2026-10-03 → 2026-10-05 A (+2d) | 2026-10-12 → 2026-10-13 (+1d) | 0% → 50% | -36.5d → -38d |
| WAD.S.3440 | Provide and cast concrete floor slab on grade | 2026-10-12 → 2026-10-14 (+2d) | 2026-10-18 → 2026-10-19 (+1d) |  | -32.5d → -34d |
| WAD.S.3450 | Concrete Pad | 2026-10-12 → 2026-10-14 (+2d) | 2026-10-15 → 2026-10-17 (+2d) |  | -30.5d → -32d |
| WAD.S.3460 | Tanks Raft | 2026-10-12 → 2026-10-14 (+2d) | 2026-10-18 → 2026-10-19 (+1d) |  | -32.5d → -34d |
| WAD.S.3980 | Tanks Walls | 2026-10-18 → 2026-10-20 (+2d) | 2026-10-24 → 2026-10-25 (+1d) |  | -32.5d → -34d |
| WAD.S.4890 | Tanks Slab | 2026-10-29 → 2026-11-01 (+3d) | 2026-11-03 → 2026-11-04 (+1d) |  | -24.5d → -26d |
| 3 | **MASONRY UNIT** | 2026-10-06 → 2026-10-11 (+5d) | 2026-10-10 → 2026-10-13 (+3d) |  |  |
| WAD.S.2930 | install Concrete Masonry Unit (CMU) for walls | 2026-10-06 → 2026-10-11 (+5d) | 2026-10-10 → 2026-10-13 (+3d) |  | -36.5d → -40d |
| 7 | **ROOFING SYSTEM** | 2026-10-21 → 2026-10-26 (+5d) | 2026-11-03 → 2026-11-07 (+4d) |  |  |
| WAD.S.4290 | install liquid applied waterproofing coating single-component pitch modified polyurethane based elastomeric | 2026-10-21 → 2026-10-26 (+5d) | 2026-11-03 → 2026-11-07 (+4d) |  | -36.5d → -40d |
| WAD.S.4300 | install 4mm thick APP modified bituminous membrane - single layer | 2026-10-21 → 2026-10-26 (+5d) | 2026-11-03 → 2026-11-07 (+4d) |  | -36.5d → -40d |
| WAD.S.4310 | install 75mm thick rigid insulation (extruded polystyrene) | 2026-10-21 → 2026-10-26 (+5d) | 2026-11-03 → 2026-11-07 (+4d) |  | -36.5d → -40d |
| WAD.S.4320 | cast in place foam concrete screed, 50mm thick minimum; laid to fall and cross fall | 2026-10-21 → 2026-10-26 (+5d) | 2026-11-03 → 2026-11-07 (+4d) |  | -36.5d → -40d |
| WAD.S.4330 | install 300 micron polyethylene sheet | 2026-10-21 → 2026-10-26 (+5d) | 2026-11-03 → 2026-11-07 (+4d) |  | -36.5d → -40d |
| WAD.S.4340 | install 50mm thick loose gravel toppings | 2026-10-21 → 2026-10-26 (+5d) | 2026-11-03 → 2026-11-07 (+4d) |  | -36.5d → -40d |
| WAD.S.4350 | install high density polyisocynurate cover board | 2026-10-21 → 2026-10-26 (+5d) | 2026-11-03 → 2026-11-07 (+4d) |  | -36.5d → -40d |
| WAD.S.4360 | install UV resistant geotextile sheet | 2026-10-21 → 2026-10-26 (+5d) | 2026-11-03 → 2026-11-07 (+4d) |  | -36.5d → -40d |
| WAD.S.4370 | fixing 3mm thick extruded aluminum flashing 40mm with sealant and all other accessories | 2026-10-21 → 2026-10-26 (+5d) | 2026-11-03 → 2026-11-07 (+4d) |  | -36.5d → -40d |
| WAD.S.4380 | install Terrazzo tiles | 2026-10-21 → 2026-10-26 (+5d) | 2026-11-03 → 2026-11-07 (+4d) |  | -36.5d → -40d |
| 2 | **THERMAL & MOISTURE PROTECTION - Tanks** | 2026-10-21 → 2026-10-26 (+5d) | 2026-11-03 → 2026-11-07 (+4d) |  |  |
| WAD.S.4390 | lay epoxy 2 coating for inner surfaces for bottom of the roof | 2026-10-21 → 2026-10-26 (+5d) | 2026-11-03 → 2026-11-07 (+4d) |  | -36.5d → -40d |
| WAD.S.4740 | install water stop for tanks according to the drawings and specification | 2026-10-24 → 2026-10-26 (+2d) | 2026-10-29 → 2026-10-31 (+2d) |  | -32.5d → -34d |
| 9 | **FINISHES** | 2026-09-22 → 2026-09-29 (+7d) | 2026-11-02 → 2026-11-03 (+1d) |  |  |
| WAD.S.2370 | install ceramic floor tiles | 2026-09-22 → 2026-09-29 (+7d) | 2026-09-24 → 2026-10-01 (+7d) |  | 9d → 3d |
| WAD.S.2380 | install granite flooring | 2026-09-22 → 2026-09-29 (+7d) | 2026-09-23 → 2026-09-30 (+7d) |  | 9d → 3d |
| WAD.S.2390 | install ceramic wall tiles | 2026-09-22 → 2026-09-29 (+7d) | 2026-09-24 → 2026-10-01 (+7d) |  | 9d → 3d |
| WAD.S.2520 | install two coats of acrylic paint on internal walls | 2026-09-23 → 2026-09-30 (+7d) | 2026-09-24 → 2026-10-01 (+7d) |  | 9d → 3d |
| WAD.S.2530 | install two coats of acrylic paint (suitable for exterior use) on external | 2026-09-23 → 2026-09-30 (+7d) | 2026-09-24 → 2026-10-01 (+7d) |  | 9d → 3d |
| WAD.S.3100 | install concrete plastering | 2026-10-10 → 2026-10-14 (+4d) | 2026-10-14 → 2026-10-18 (+4d) |  | -36.5d → -40d |
| WAD.S.2240 | gypsum board suspended ceiling | 2026-10-15 → 2026-10-18 (+3d) | 2026-10-20 → 2026-10-21 (+1d) |  | -20.5d → -22d |
| WAD.S.4860 | install granite saddles and thresholds | 2026-10-29 → 2026-11-01 (+3d) | 2026-11-02 → 2026-11-03 (+1d) |  | -32.5d → -34d |
| WAD.S.4870 | install Riyadh stone cladding | 2026-10-29 → 2026-11-01 (+3d) | 2026-11-02 → 2026-11-03 (+1d) |  | -32.5d → -34d |
| WAD.S.4880 | install 3mm steel CNC laser cut panels | 2026-10-29 → 2026-11-01 (+3d) | 2026-11-02 → 2026-11-03 (+1d) |  | -32.5d → -34d |
| WAD.S.4960 | install aluminum cladding | 2026-10-31 → 2026-11-02 (+2d) | 2026-11-02 → 2026-11-03 (+1d) |  | -32.5d → -34d |
| 13 | **MECHANICAL WORKS** | 2026-09-14 → 2026-09-21 (+7d) | 2026-11-10 → 2026-11-14 (+4d) |  |  |
| 1 | **MECHANICAL WORKS - 1st Fix** | 2026-09-14 → 2026-09-21 (+7d) | 2026-09-24 → 2026-10-01 (+7d) |  |  |
| WAD.S.1830 | WATER SUPPLY SYSTEM - 1st Fix | 2026-09-14 → 2026-09-21 (+7d) | 2026-09-24 → 2026-10-01 (+7d) |  | 0d → -6d |
| WAD.S.1840 | SEWER AND DRAINAGE SYSTEM - 1st Fix | 2026-09-14 → 2026-09-21 (+7d) | 2026-09-24 → 2026-10-01 (+7d) |  | 0d → -6d |
| WAD.S.1850 | IRRIGATION SYSTEM - 1st Fix | 2026-09-14 → 2026-09-21 (+7d) | 2026-09-24 → 2026-10-01 (+7d) |  | 0d → -6d |
| WAD.S.1880 | HEATING, VENTILATION AND AIR CONDITIONING - 1st Fix | 2026-09-14 → 2026-09-21 (+7d) | 2026-09-24 → 2026-10-01 (+7d) |  | 0d → -6d |
| WAD.S.1890 | Exhaust fans - 1st Fix | 2026-09-14 → 2026-09-21 (+7d) | 2026-09-24 → 2026-10-01 (+7d) |  | 0d → -6d |
| 2 | **MECHANICAL WORKS - Final Fix** | 2026-11-07 → 2026-11-11 (+4d) | 2026-11-10 → 2026-11-14 (+4d) |  |  |
| WAD.S.5560 | installation of Fire extinguishers as per drawings, specifications | 2026-11-07 → 2026-11-11 (+4d) | 2026-11-10 → 2026-11-14 (+4d) |  | -36.5d → -40d |
| WAD.S.5570 | gully traps with heavy duty cover | 2026-11-07 → 2026-11-11 (+4d) | 2026-11-10 → 2026-11-14 (+4d) |  | -36.5d → -40d |
| WAD.S.5580 | chamber with heavy duty cover | 2026-11-07 → 2026-11-11 (+4d) | 2026-11-10 → 2026-11-14 (+4d) |  | -36.5d → -40d |
| WAD.S.5590 | INSTALL PLUMBING FIXTURES | 2026-11-07 → 2026-11-11 (+4d) | 2026-11-10 → 2026-11-14 (+4d) |  | -36.5d → -40d |
| WAD.S.5600 | HEATING, VENTILATION AND AIR CONDITIONING - Final Fix | 2026-11-07 → 2026-11-11 (+4d) | 2026-11-10 → 2026-11-14 (+4d) |  | -36.5d → -40d |
| WAD.S.5610 | Exhaust fans - Final Fix | 2026-11-07 → 2026-11-11 (+4d) | 2026-11-10 → 2026-11-14 (+4d) |  | -36.5d → -40d |
| WAD.S.5620 | Bulbblers and Spreyers of IRRIGATION SYSTEM | 2026-11-07 → 2026-11-11 (+4d) | 2026-11-10 → 2026-11-14 (+4d) |  | -36.5d → -40d |
| WAD.S.5750 | WATER SUPPLY SYSTEM - Final Fix | 2026-11-07 → 2026-11-11 (+4d) | 2026-11-10 → 2026-11-14 (+4d) |  | -36.5d → -40d |
| WAD.S.5760 | IRRIGATION SYSTEM - Final Fix | 2026-11-07 → 2026-11-11 (+4d) | 2026-11-10 → 2026-11-14 (+4d) |  | -30.5d → -34d |
| 15 | **ELECTRICAL WORKS** | 2026-09-14 → 2026-09-21 (+7d) | 2026-11-10 → 2026-11-14 (+4d) |  |  |
| 1 | **ELECTRICAL WORKS - 1st Fix** | 2026-09-14 → 2026-09-21 (+7d) | 2026-09-24 → 2026-10-01 (+7d) |  |  |
| WAD.S.1860 | LIGHTING AND POWER TYPE PANELBOARDS - 1st Fix | 2026-09-14 → 2026-09-21 (+7d) | 2026-09-24 → 2026-10-01 (+7d) |  | 0d → -6d |
| WAD.S.1870 | UPS 3KVA (installed inside the rack) - 1st Fix | 2026-09-14 → 2026-09-21 (+7d) | 2026-09-24 → 2026-10-01 (+7d) |  | 0d → -6d |
| WAD.S.1900 | power source with built-in photocell sensor for automatic electrical connection during day/light times - 1st Fix | 2026-09-14 → 2026-09-21 (+7d) | 2026-09-24 → 2026-10-01 (+7d) |  | 0d → -6d |
| WAD.S.1910 | UNDERGROUND DISTRIBUTION SYSTEM - 1st Fix | 2026-09-14 → 2026-09-21 (+7d) | 2026-09-24 → 2026-10-01 (+7d) |  | 0d → -6d |
| WAD.S.1920 | LIGHTING FIXTURES - 1st Fix | 2026-09-14 → 2026-09-21 (+7d) | 2026-09-24 → 2026-10-01 (+7d) |  | 0d → -6d |
| WAD.S.1930 | installation of Wiring devices includes switches and Receptacle outlets complete with device boxes - 1st Fix | 2026-09-14 → 2026-09-21 (+7d) | 2026-09-24 → 2026-10-01 (+7d) |  | 0d → -6d |
| WAD.S.1940 | GROUNDING - 1st Fix | 2026-09-14 → 2026-09-21 (+7d) | 2026-09-24 → 2026-10-01 (+7d) |  | 0d → -6d |
| WAD.S.1950 | card reader IN/OUT - 1st Fix | 2026-09-14 → 2026-09-21 (+7d) | 2026-09-24 → 2026-10-01 (+7d) |  | 0d → -6d |
| WAD.S.1960 | CCTV cameras - 1st Fix | 2026-09-14 → 2026-09-21 (+7d) | 2026-09-24 → 2026-10-01 (+7d) |  | 0d → -6d |
| WAD.S.1970 | Access control panel - 1st Fix | 2026-09-14 → 2026-09-21 (+7d) | 2026-09-24 → 2026-10-01 (+7d) |  | 0d → -6d |
| WAD.S.1980 | fire alarm system including wires, conduit and other materials - 1st Fix | 2026-09-14 → 2026-09-21 (+7d) | 2026-09-24 → 2026-10-01 (+7d) |  | 0d → -6d |
| 2 | **ELECTRICAL WORKS - Final Fix** | 2026-11-05 → 2026-11-10 (+5d) | 2026-11-10 → 2026-11-14 (+4d) |  |  |
| WAD.S.5170 | 12-Port, SMF, Fiber Optic Patch Panels; | 2026-11-05 → 2026-11-10 (+5d) | 2026-11-10 → 2026-11-14 (+4d) |  | -36.5d → -40d |
| WAD.S.5180 | VIDEO SURVEILLANCE | 2026-11-05 → 2026-11-10 (+5d) | 2026-11-10 → 2026-11-14 (+4d) |  | -36.5d → -40d |
| WAD.S.5190 | CCTV storage system, as specified; | 2026-11-05 → 2026-11-10 (+5d) | 2026-11-10 → 2026-11-14 (+4d) |  | -36.5d → -40d |

| ID | Task | Start | Finish | Complete | Total float |
| --- | --- | --- | --- | --- | --- |
| WAD.S.5630 | power source with built-in photocell sensor for automatic electrical connection during day/light times - Final Fix | 2026-11-07 → 2026-11-11 (+4d) | 2026-11-10 → 2026-11-14 (+4d) |  | -36.5d → -40d |
| WAD.S.5640 | LIGHTING FIXTURES - Final Fix | 2026-11-07 → 2026-11-11 (+4d) | 2026-11-10 → 2026-11-14 (+4d) |  | -36.5d → -40d |
| WAD.S.5650 | GROUNDING - Final Fix | 2026-11-07 → 2026-11-11 (+4d) | 2026-11-10 → 2026-11-14 (+4d) |  | -36.5d → -40d |
| WAD.S.5660 | card reader IN/OUT - Final Fix | 2026-11-07 → 2026-11-11 (+4d) | 2026-11-10 → 2026-11-14 (+4d) |  | -36.5d → -40d |
| WAD.S.5670 | 12-Port CAT6A UTP fully loaded patch panel | 2026-11-07 → 2026-11-11 (+4d) | 2026-11-10 → 2026-11-14 (+4d) |  | -36.5d → -40d |
| WAD.S.5680 | COMPUTERS AND RELATED PERIPHERALS | 2026-11-07 → 2026-11-11 (+4d) | 2026-11-10 → 2026-11-14 (+4d) |  | -36.5d → -40d |
| WAD.S.5690 | Central (Headend) System Components; | 2026-11-07 → 2026-11-11 (+4d) | 2026-11-10 → 2026-11-14 (+4d) |  | -36.5d → -40d |
| WAD.S.5700 | VSS System, as specified; | 2026-11-07 → 2026-11-11 (+4d) | 2026-11-10 → 2026-11-14 (+4d) |  | -36.5d → -40d |
| WAD.S.5710 | CCTV cameras - Final Fix | 2026-11-07 → 2026-11-11 (+4d) | 2026-11-10 → 2026-11-14 (+4d) |  | -36.5d → -40d |
| WAD.S.5720 | ELECTRICAL GATE BARRIER | 2026-11-07 → 2026-11-11 (+4d) | 2026-11-10 → 2026-11-14 (+4d) |  | -36.5d → -40d |
| WAD.S.5730 | fire alarm system including wires, conduit and other materials - Final Fix | 2026-11-07 → 2026-11-11 (+4d) | 2026-11-10 → 2026-11-14 (+4d) |  | -36.5d → -40d |
| WAD.S.5740 | Analog addressable fire alarm control panel with battery | 2026-11-07 → 2026-11-11 (+4d) | 2026-11-10 → 2026-11-14 (+4d) |  | -36.5d → -40d |
| WAD.S.5770 | LIGHTING AND POWER TYPE PANELBOARDS - Final Fix | 2026-11-07 → 2026-11-11 (+4d) | 2026-11-10 → 2026-11-14 (+4d) |  | -30.5d → -34d |
| WAD.S.6010 | UNDERGROUND DISTRIBUTION SYSTEM - Final Fix | 2026-11-08 → 2026-11-12 (+4d) | 2026-11-10 → 2026-11-14 (+4d) |  | -36.5d → -40d |
| WAD.S.6020 | installation of Wiring devices includes switches and Receptacle outlets complete with device boxes - Final Fix | 2026-11-08 → 2026-11-12 (+4d) | 2026-11-10 → 2026-11-14 (+4d) |  | -36.5d → -40d |
| WAD.S.6030 | Access control panel - Final Fix | 2026-11-08 → 2026-11-12 (+4d) | 2026-11-10 → 2026-11-14 (+4d) |  | -36.5d → -40d |
| WAD.S.6040 | 20A , ATS ( Automatic transfer switch) for UPS | 2026-11-08 → 2026-11-12 (+4d) | 2026-11-10 → 2026-11-14 (+4d) |  | -36.5d → -40d |
| WAD.S.6050 | LIGHTNING PROTECTION | 2026-11-08 → 2026-11-12 (+4d) | 2026-11-10 → 2026-11-14 (+4d) |  | -36.5d → -40d |
| WAD.S.6060 | Intelligent Ionization / Photoelectric smoke and heat detector with base | 2026-11-08 → 2026-11-12 (+4d) | 2026-11-10 → 2026-11-14 (+4d) |  | -36.5d → -40d |
| 4 | **METALS** | 2026-10-20 → 2026-10-22 (+2d) | 2026-10-22 → 2026-10-24 (+2d) |  |  |
| WAD.S.2480 | folding & sliding mounter combination ladder for building maintenance purpose | 2026-10-20 → 2026-10-22 (+2d) | 2026-10-22 → 2026-10-24 (+2d) |  | -20.5d → -22d |
| WAD.S.2490 | install of overflow galvanized steel roof scupper with gray color with angular secondary support | 2026-10-20 → 2026-10-22 (+2d) | 2026-10-22 → 2026-10-24 (+2d) |  | -20.5d → -22d |
| WAD.S.2500 | install heavy steel cover with frame including all necessary fixings | 2026-10-20 → 2026-10-22 (+2d) | 2026-10-22 → 2026-10-24 (+2d) |  | -20.5d → -22d |
| 5 | **WOODS AND PLASTICS** | 2026-10-19 → 2026-10-21 (+2d) | 2026-10-22 → 2026-10-24 (+2d) |  |  |
| WAD.S.2350 | COUNTER DESK | 2026-10-19 → 2026-10-21 (+2d) | 2026-10-22 → 2026-10-24 (+2d) |  | -20.5d → -22d |
| WAD.S.2510 | PANTRY CABINET | 2026-10-20 → 2026-10-22 (+2d) | 2026-10-22 → 2026-10-24 (+2d) |  | -20.5d → -22d |
| 8 | **DOORS & WINDOWS** | 2026-10-19 → 2026-10-21 (+2d) | 2026-10-25 → 2026-10-26 (+1d) |  |  |
| WAD.S.2360 | Install Aluminum Door | 2026-10-19 → 2026-10-21 (+2d) | 2026-10-22 → 2026-10-24 (+2d) |  | -20.5d → -22d |
| WAD.S.2200 | install hollow metal door | 2026-10-20 → 2026-10-22 (+2d) | 2026-10-25 → 2026-10-26 (+1d) |  | -19.5d → -21d |
| WAD.S.2210 | Install aluminum framed double glazed windows | 2026-10-20 → 2026-10-22 (+2d) | 2026-10-24 → 2026-10-25 (+1d) |  | -19.5d → -21d |
| 10 | **SPECIALTIES** | 2026-11-07 → 2026-11-11 (+4d) | 2026-11-10 → 2026-11-14 (+4d) |  |  |
| WAD.S.5550 | TOILET ACCESSROIES | 2026-11-07 → 2026-11-11 (+4d) | 2026-11-09 → 2026-11-12 (+3d) |  | -35.5d → -39d |
| WAD.S.6000 | PANEL SIGNAGE | 2026-11-08 → 2026-11-12 (+4d) | 2026-11-10 → 2026-11-14 (+4d) |  | -36.5d → -40d |
| 11 | **FURNISHINGS** | 2026-11-09 → 2026-11-14 (+5d) | 2026-11-10 → 2026-11-14 (+4d) |  |  |
| WAD.S.6210 | Workstation chair | 2026-11-09 → 2026-11-14 (+5d) | 2026-11-10 → 2026-11-14 (+4d) |  | -36.5d → -40d |
| WAD.S.6220 | Workstation table | 2026-11-09 → 2026-11-14 (+5d) | 2026-11-10 → 2026-11-14 (+4d) |  | -36.5d → -40d |
| WAD.S.6230 | Roller blind | 2026-11-09 → 2026-11-14 (+5d) | 2026-11-10 → 2026-11-14 (+4d) |  | -36.5d → -40d |
| WAD.S.6240 | Waste Receptacle | 2026-11-09 → 2026-11-14 (+5d) | 2026-11-10 → 2026-11-14 (+4d) |  | -36.5d → -40d |
| 5 | **GUARD HOUSE 3** |  | 2026-10-28 → 2026-11-03 (+6d) |  |  |
| 1 | **SITE WORKS** |  | 2026-10-28 → 2026-10-29 (+1d) |  |  |
| 5 | **Guard Rooms & Gates (CONCRETE Works)** |  | 2026-10-28 → 2026-10-29 (+1d) |  |  |
| WAD.S.7440 | Provide and cast concrete floor slab on grade | 2026-09-26 → 2026-10-03 A (+7d) | 2026-09-30 → 2026-10-07 A (+7d) | 0% → 100% | -18d → none |
| WAD.S.7520 | Tanks Raft | 2026-09-26 → 2026-10-03 (+7d) | 2026-09-30 → 2026-10-07 (+7d) |  | -18d → -24d |
| WAD.S.7530 | Tanks Walls | 2026-10-01 → 2026-10-08 (+7d) | 2026-10-06 → 2026-10-13 (+7d) |  | -18d → -24d |
| WAD.S.7540 | Tanks Slab | 2026-10-24 → 2026-10-26 (+2d) | 2026-10-28 → 2026-10-29 (+1d) |  | -19.5d → -21d |
| 3 | **MASONRY UNIT** |  | 2026-09-26 → 2026-10-03 (+7d) |  |  |
| WAD.S.6500 | install Concrete Masonry Unit (CMU) for walls |  | 2026-09-26 → 2026-10-03 (+7d) | 80% → 90% | -24.6d → -30.33d |
| 7 | **ROOFING SYSTEM** | 2026-10-07 → 2026-10-14 (+7d) | 2026-10-20 → 2026-10-27 (+7d) |  |  |
| WAD.S.6570 | install liquid applied waterproofing coating single-component pitch modified polyurethane based elastomeric | 2026-10-07 → 2026-10-14 (+7d) | 2026-10-20 → 2026-10-27 (+7d) |  | -24.6d → -30.33d |
| WAD.S.6610 | install 4mm thick APP modified bituminous membrane - single layer | 2026-10-07 → 2026-10-14 (+7d) | 2026-10-20 → 2026-10-27 (+7d) |  | -24.6d → -30.33d |
| WAD.S.6620 | install 75mm thick rigid insulation (extruded polystyrene) | 2026-10-07 → 2026-10-14 (+7d) | 2026-10-20 → 2026-10-27 (+7d) |  | -24.6d → -30.33d |
| WAD.S.6630 | cast in place foam concrete screed, 50mm thick minimum; laid to fall and cross fall | 2026-10-07 → 2026-10-14 (+7d) | 2026-10-20 → 2026-10-27 (+7d) |  | -24.6d → -30.33d |
| WAD.S.6640 | install 300 micron polyethylene sheet | 2026-10-07 → 2026-10-14 (+7d) | 2026-10-20 → 2026-10-27 (+7d) |  | -24.6d → -30.33d |
| WAD.S.6650 | install 50mm thick loose gravel toppings | 2026-10-07 → 2026-10-14 (+7d) | 2026-10-20 → 2026-10-27 (+7d) |  | -24.6d → -30.33d |
| WAD.S.6660 | install high density polyisocynurate cover board | 2026-10-07 → 2026-10-14 (+7d) | 2026-10-20 → 2026-10-27 (+7d) |  | -24.6d → -30.33d |
| WAD.S.6670 | install UV resistant geotextile sheet | 2026-10-07 → 2026-10-14 (+7d) | 2026-10-20 → 2026-10-27 (+7d) |  | -24.6d → -30.33d |
| WAD.S.6680 | fixing 3mm thick extruded aluminum flashing 40mm with sealant and all other accessories | 2026-10-07 → 2026-10-14 (+7d) | 2026-10-20 → 2026-10-27 (+7d) |  | -24.6d → -30.33d |
| WAD.S.6690 | install Terrazzo tiles | 2026-10-07 → 2026-10-14 (+7d) | 2026-10-20 → 2026-10-27 (+7d) |  | -24.6d → -30.33d |
| 2 | **THERMAL & MOISTURE PROTECTION - Tanks** | 2026-10-07 → 2026-10-14 (+7d) | 2026-10-20 → 2026-10-27 (+7d) |  |  |
| WAD.S.6600 | install water stop for tanks according to the drawings and specification | 2026-10-07 → 2026-10-14 (+7d) | 2026-10-12 → 2026-10-19 (+7d) |  | -18d → -24d |
| WAD.S.7370 | lay epoxy 2 coating for inner surfaces for bottom of the roof | 2026-10-07 → 2026-10-14 (+7d) | 2026-10-20 → 2026-10-27 (+7d) |  | -24.6d → -30.33d |
| 9 | **FINISHES** | 2026-09-22 → 2026-09-29 (+7d) | 2026-10-15 → 2026-10-22 (+7d) |  |  |
| WAD.S.6730 | install ceramic floor tiles | 2026-09-22 → 2026-09-29 (+7d) | 2026-09-24 → 2026-10-01 (+7d) |  | -37d → -43d |
| WAD.S.6740 | install granite flooring | 2026-09-22 → 2026-09-29 (+7d) | 2026-09-23 → 2026-09-30 (+7d) |  | -37d → -43d |
| WAD.S.6770 | install ceramic wall tiles | 2026-09-22 → 2026-09-29 (+7d) | 2026-09-24 → 2026-10-01 (+7d) |  | -37d → -43d |
| WAD.S.6780 | install two coats of acrylic paint on internal walls | 2026-09-23 → 2026-09-30 (+7d) | 2026-09-24 → 2026-10-01 (+7d) |  | -37d → -43d |
| WAD.S.6790 | install two coats of acrylic paint (suitable for exterior use) on external | 2026-09-23 → 2026-09-30 (+7d) | 2026-09-24 → 2026-10-01 (+7d) |  | -37d → -43d |
| WAD.S.6830 | gypsum board suspended ceiling | 2026-09-26 → 2026-10-03 (+7d) | 2026-09-29 → 2026-10-06 (+7d) |  | -6d → -12d |
| WAD.S.6760 | install concrete plastering | 2026-09-26 → 2026-10-03 (+7d) | 2026-09-30 → 2026-10-07 (+7d) |  | -24.6d → -30.33d |
| WAD.S.6750 | install granite saddles and thresholds | 2026-10-13 → 2026-10-20 (+7d) | 2026-10-15 → 2026-10-22 (+7d) |  | -18d → -24d |

| ID | Task | Start | Finish | Complete | Total float |
| --- | --- | --- | --- | --- | --- |
| WAD.S.6800 | install Riyadh stone cladding | 2026-10-13 → 2026-10-20 (+7d) | 2026-10-15 → 2026-10-22 (+7d) |  | -18d → -24d |
| WAD.S.6820 | install 3mm steel CNC laser cut panels | 2026-10-13 → 2026-10-20 (+7d) | 2026-10-15 → 2026-10-22 (+7d) |  | -18d → -24d |
| WAD.S.6810 | install aluminum cladding | 2026-10-14 → 2026-10-21 (+7d) | 2026-10-15 → 2026-10-22 (+7d) |  | -18d → -24d |
| 13 | **MECHANICAL WORKS** | 2026-09-14 → 2026-09-21 (+7d) | 2026-10-27 → 2026-11-03 (+7d) |  |  |
| 1 | **MECHANICAL WORKS - 1st Fix** | 2026-09-14 → 2026-09-21 (+7d) | 2026-09-24 → 2026-10-01 (+7d) |  |  |
| WAD.S.6910 | WATER SUPPLY SYSTEM - 1st Fix | 2026-09-14 → 2026-09-21 A (+7d) | 2026-09-24 → 2026-10-01 (+7d) | 0% → 15% | -37d → -43d |
| WAD.S.6920 | SEWER AND DRAINAGE SYSTEM - 1st Fix | 2026-09-14 → 2026-09-21 A (+7d) | 2026-09-24 → 2026-10-01 (+7d) | 0% → 15% | -37d → -43d |
| WAD.S.6980 | IRRIGATION SYSTEM - 1st Fix | 2026-09-14 → 2026-09-21 A (+7d) | 2026-09-24 → 2026-10-01 (+7d) | 0% → 15% | -37d → -43d |
| WAD.S.7260 | HEATING, VENTILATION AND AIR CONDITIONING - 1st Fix | 2026-09-14 → 2026-09-21 A (+7d) | 2026-09-24 → 2026-10-01 (+7d) | 0% → 15% | -37d → -43d |
| WAD.S.7270 | Exhaust fans - 1st Fix | 2026-09-14 → 2026-09-21 A (+7d) | 2026-09-24 → 2026-10-01 (+7d) | 0% → 15% | -37d → -43d |
| 2 | **MECHANICAL WORKS - Final Fix** | 2026-10-24 → 2026-10-31 (+7d) | 2026-10-27 → 2026-11-03 (+7d) |  |  |
| WAD.S.6900 | installation of Fire extinguishers as per drawings, specifications | 2026-10-24 → 2026-10-31 (+7d) | 2026-10-27 → 2026-11-03 (+7d) |  | -24.6d → -30.33d |
| WAD.S.6930 | gully traps with heavy duty cover | 2026-10-24 → 2026-10-31 (+7d) | 2026-10-27 → 2026-11-03 (+7d) |  | -24.6d → -30.33d |
| WAD.S.6940 | chamber with heavy duty cover | 2026-10-24 → 2026-10-31 (+7d) | 2026-10-27 → 2026-11-03 (+7d) |  | -24.6d → -30.33d |
| WAD.S.6950 | INSTALL PLUMBING FIXTURES | 2026-10-24 → 2026-10-31 (+7d) | 2026-10-27 → 2026-11-03 (+7d) |  | -24.6d → -30.33d |
| WAD.S.6960 | HEATING, VENTILATION AND AIR CONDITIONING - Final Fix | 2026-10-24 → 2026-10-31 (+7d) | 2026-10-27 → 2026-11-03 (+7d) |  | -24.6d → -30.33d |
| WAD.S.6970 | Exhaust fans - Final Fix | 2026-10-24 → 2026-10-31 (+7d) | 2026-10-27 → 2026-11-03 (+7d) |  | -24.6d → -30.33d |
| WAD.S.6990 | Bulbblers and Spreyers of IRRIGATION SYSTEM | 2026-10-24 → 2026-10-31 (+7d) | 2026-10-27 → 2026-11-03 (+7d) |  | -24.6d → -30.33d |
| WAD.S.7230 | WATER SUPPLY SYSTEM - Final Fix | 2026-10-24 → 2026-10-31 (+7d) | 2026-10-27 → 2026-11-03 (+7d) |  | -24.6d → -30.33d |
| WAD.S.7240 | IRRIGATION SYSTEM - Final Fix | 2026-10-24 → 2026-10-31 (+7d) | 2026-10-27 → 2026-11-03 (+7d) |  | -18.6d → -24.33d |
| 15 | **ELECTRICAL WORKS** |  | 2026-10-27 → 2026-11-03 (+7d) |  |  |
| 1 | **ELECTRICAL WORKS - 1st Fix** |  | 2026-09-24 → 2026-10-01 (+7d) |  |  |
| WAD.S.7320 | GROUNDING - 1st Fix |  | 2026-09-19 → 2026-09-26 (+7d) |  | -37d → -43d |
| WAD.S.7000 | LIGHTING AND POWER TYPE PANELBOARDS - 1st Fix | 2026-09-14 → 2026-09-21 (+7d) | 2026-09-24 → 2026-10-01 (+7d) |  | -37d → -43d |
| WAD.S.7010 | UPS 3KVA (installed inside the rack) - 1st Fix | 2026-09-14 → 2026-09-21 (+7d) | 2026-09-24 → 2026-10-01 (+7d) |  | -37d → -43d |
| WAD.S.7280 | power source with built-in photocell sensor for automatic electrical connection during day/light times - 1st Fix | 2026-09-14 → 2026-09-21 (+7d) | 2026-09-24 → 2026-10-01 (+7d) |  | -37d → -43d |
| WAD.S.7290 | UNDERGROUND DISTRIBUTION SYSTEM - 1st Fix | 2026-09-14 → 2026-09-21 A (+7d) | 2026-09-24 → 2026-10-01 (+7d) | 0% → 15% | -37d → -43d |
| WAD.S.7300 | LIGHTING FIXTURES - 1st Fix | 2026-09-14 → 2026-09-21 A (+7d) | 2026-09-24 → 2026-10-01 (+7d) | 0% → 25% | -37d → -43d |
| WAD.S.7310 | installation of Wiring devices includes switches and Receptacle outlets complete with device boxes - 1st Fix | 2026-09-14 → 2026-09-21 (+7d) | 2026-09-24 → 2026-10-01 (+7d) |  | -37d → -43d |
| WAD.S.7330 | card reader IN/OUT - 1st Fix | 2026-09-14 → 2026-09-21 (+7d) | 2026-09-24 → 2026-10-01 (+7d) |  | -37d → -43d |
| WAD.S.7340 | CCTV cameras - 1st Fix | 2026-09-14 → 2026-09-21 (+7d) | 2026-09-24 → 2026-10-01 (+7d) |  | -37d → -43d |
| WAD.S.7350 | Access control panel - 1st Fix | 2026-09-14 → 2026-09-21 (+7d) | 2026-09-24 → 2026-10-01 (+7d) |  | -37d → -43d |
| WAD.S.7360 | fire alarm system including wires, conduit and other materials - 1st Fix | 2026-09-14 → 2026-09-21 (+7d) | 2026-09-24 → 2026-10-01 (+7d) |  | -37d → -43d |
| 2 | **ELECTRICAL WORKS - Final Fix** | 2026-10-22 → 2026-10-29 (+7d) | 2026-10-27 → 2026-11-03 (+7d) |  |  |
| WAD.S.7100 | 12-Port, SMF, Fiber Optic Patch Panels; | 2026-10-22 → 2026-10-29 (+7d) | 2026-10-27 → 2026-11-03 (+7d) |  | -24.6d → -30.33d |
| WAD.S.7120 | VIDEO SURVEILLANCE | 2026-10-22 → 2026-10-29 (+7d) | 2026-10-27 → 2026-11-03 (+7d) |  | -24.6d → -30.33d |
| WAD.S.7150 | CCTV storage system, as specified; | 2026-10-22 → 2026-10-29 (+7d) | 2026-10-27 → 2026-11-03 (+7d) |  | -24.6d → -30.33d |
| WAD.S.7020 | power source with built-in photocell sensor for automatic electrical connection during day/light times - Final Fix | 2026-10-24 → 2026-10-31 (+7d) | 2026-10-27 → 2026-11-03 (+7d) |  | -24.6d → -30.33d |
| WAD.S.7040 | LIGHTING FIXTURES - Final Fix | 2026-10-24 → 2026-10-31 (+7d) | 2026-10-27 → 2026-11-03 (+7d) |  | -24.6d → -30.33d |
| WAD.S.7060 | GROUNDING - Final Fix | 2026-10-24 → 2026-10-31 (+7d) | 2026-10-27 → 2026-11-03 (+7d) |  | -24.6d → -30.33d |
| WAD.S.7070 | card reader IN/OUT - Final Fix | 2026-10-24 → 2026-10-31 (+7d) | 2026-10-27 → 2026-11-03 (+7d) |  | -24.6d → -30.33d |
| WAD.S.7090 | 12-Port CAT6A UTP fully loaded patch panel | 2026-10-24 → 2026-10-31 (+7d) | 2026-10-27 → 2026-11-03 (+7d) |  | -24.6d → -30.33d |
| WAD.S.7110 | COMPUTERS AND RELATED PERIPHERALS | 2026-10-24 → 2026-10-31 (+7d) | 2026-10-27 → 2026-11-03 (+7d) |  | -24.6d → -30.33d |
| WAD.S.7130 | Central (Headend) System Components; | 2026-10-24 → 2026-10-31 (+7d) | 2026-10-27 → 2026-11-03 (+7d) |  | -24.6d → -30.33d |
| WAD.S.7140 | VSS System, as specified; | 2026-10-24 → 2026-10-31 (+7d) | 2026-10-27 → 2026-11-03 (+7d) |  | -24.6d → -30.33d |
| WAD.S.7160 | CCTV cameras - Final Fix | 2026-10-24 → 2026-10-31 (+7d) | 2026-10-27 → 2026-11-03 (+7d) |  | -24.6d → -30.33d |
| WAD.S.7180 | ELECTRICAL GATE BARRIER | 2026-10-24 → 2026-10-31 (+7d) | 2026-10-27 → 2026-11-03 (+7d) |  | -24.6d → -30.33d |
| WAD.S.7200 | fire alarm system including wires, conduit and other materials - Final Fix | 2026-10-24 → 2026-10-31 (+7d) | 2026-10-27 → 2026-11-03 (+7d) |  | -24.6d → -30.33d |
| WAD.S.7210 | Analog addressable fire alarm control panel with battery | 2026-10-24 → 2026-10-31 (+7d) | 2026-10-27 → 2026-11-03 (+7d) |  | -24.6d → -30.33d |
| WAD.S.7250 | LIGHTING AND POWER TYPE PANELBOARDS - Final Fix | 2026-10-24 → 2026-10-31 (+7d) | 2026-10-27 → 2026-11-03 (+7d) |  | -18.6d → -24.33d |
| WAD.S.7030 | UNDERGROUND DISTRIBUTION SYSTEM - Final Fix | 2026-10-25 → 2026-11-01 (+7d) | 2026-10-27 → 2026-11-03 (+7d) |  | -24.6d → -30.33d |
| WAD.S.7050 | installation of Wiring devices includes switches and Receptacle outlets complete with device boxes - Final Fix | 2026-10-25 → 2026-11-01 (+7d) | 2026-10-27 → 2026-11-03 (+7d) |  | -24.6d → -30.33d |
| WAD.S.7080 | Access control panel - Final Fix | 2026-10-25 → 2026-11-01 (+7d) | 2026-10-27 → 2026-11-03 (+7d) |  | -24.6d → -30.33d |
| WAD.S.7170 | 20A , ATS ( Automatic transfer switch) for UPS | 2026-10-25 → 2026-11-01 (+7d) | 2026-10-27 → 2026-11-03 (+7d) |  | -24.6d → -30.33d |
| WAD.S.7190 | LIGHTNING PROTECTION | 2026-10-25 → 2026-11-01 (+7d) | 2026-10-27 → 2026-11-03 (+7d) |  | -24.6d → -30.33d |
| WAD.S.7220 | Intelligent Ionization / Photoelectric smoke and heat detector with base | 2026-10-25 → 2026-11-01 (+7d) | 2026-10-27 → 2026-11-03 (+7d) |  | -24.6d → -30.33d |
| 4 | **METALS** | 2026-09-30 → 2026-10-07 (+7d) | 2026-10-01 → 2026-10-08 (+7d) |  |  |
| WAD.S.6510 | folding & sliding mounter combination ladder for building maintenance purpose | 2026-09-30 → 2026-10-07 (+7d) | 2026-10-01 → 2026-10-08 (+7d) |  | -6d → -12d |
| WAD.S.6520 | install of overflow galvanized steel roof scupper with gray color with angular secondary support | 2026-09-30 → 2026-10-07 (+7d) | 2026-10-01 → 2026-10-08 (+7d) |  | -6d → -12d |
| WAD.S.6530 | install heavy steel cover with frame including all necessary fixings | 2026-09-30 → 2026-10-07 (+7d) | 2026-10-01 → 2026-10-08 (+7d) |  | -6d → -12d |
| 5 | **WOODS AND PLASTICS** | 2026-09-29 → 2026-10-06 (+7d) | 2026-10-01 → 2026-10-08 (+7d) |  |  |
| WAD.S.6550 | COUNTER DESK | 2026-09-29 → 2026-10-06 (+7d) | 2026-10-01 → 2026-10-08 (+7d) |  | -3d → -9d |
| WAD.S.6540 | PANTRY CABINET | 2026-09-30 → 2026-10-07 (+7d) | 2026-10-01 → 2026-10-08 (+7d) |  | -6d → -12d |
| 8 | **DOORS & WINDOWS** | 2026-09-29 → 2026-10-06 (+7d) | 2026-10-04 → 2026-10-11 (+7d) |  |  |
| WAD.S.6700 | Install Aluminum Door | 2026-09-29 → 2026-10-06 (+7d) | 2026-10-01 → 2026-10-08 (+7d) |  | -3d → -9d |
| WAD.S.6710 | install hollow metal door | 2026-09-30 → 2026-10-07 (+7d) | 2026-10-04 → 2026-10-11 (+7d) |  | -6d → -12d |
| WAD.S.6720 | Install aluminum framed double glazed windows | 2026-09-30 → 2026-10-07 (+7d) | 2026-10-03 → 2026-10-10 (+7d) |  | -6d → -12d |
| 10 | **SPECIALTIES** | 2026-10-24 → 2026-10-31 (+7d) | 2026-10-27 → 2026-11-03 (+7d) |  |  |
| WAD.S.6840 | TOILET ACCESSROIES | 2026-10-24 → 2026-10-31 (+7d) | 2026-10-26 → 2026-11-02 (+7d) |  | -23.6d → -29.33d |
| WAD.S.6850 | PANEL SIGNAGE | 2026-10-25 → 2026-11-01 (+7d) | 2026-10-27 → 2026-11-03 (+7d) |  | -24.6d → -30.33d |

| ID | Task | Start | Finish | Total float |
| --- | --- | --- | --- | --- |
| 11 | **FURNISHINGS** | 2026-10-26 → 2026-11-02 (+7d) | 2026-10-27 → 2026-11-03 (+7d) |  |
| WAD.S.6860 | Workstation chair | 2026-10-26 → 2026-11-02 (+7d) | 2026-10-27 → 2026-11-03 (+7d) | -24.6d → -30.33d |
| WAD.S.6870 | Workstation table | 2026-10-26 → 2026-11-02 (+7d) | 2026-10-27 → 2026-11-03 (+7d) | -24.6d → -30.33d |
| WAD.S.6880 | Roller blind | 2026-10-26 → 2026-11-02 (+7d) | 2026-10-27 → 2026-11-03 (+7d) | -24.6d → -30.33d |
| WAD.S.6890 | Waste Receptacle | 2026-10-26 → 2026-11-02 (+7d) | 2026-10-27 → 2026-11-03 (+7d) | -24.6d → -30.33d |
| 4 | **EXT. WORKS** | 2026-09-26 → 2026-10-03 (+7d) | 2026-11-09 → 2026-11-16 (+7d) |  |
| 1 | **EXTERNAL WORKS** | 2026-09-26 → 2026-10-03 (+7d) | 2026-11-09 → 2026-11-16 (+7d) |  |
| WAD.S.1100 | Excavation Works | 2026-09-26 → 2026-10-03 (+7d) | 2026-10-12 → 2026-10-19 (+7d) | -37d → -43d |
| WAD.S.1290 | 40 mm Pipes | 2026-10-13 → 2026-10-20 (+7d) | 2026-10-26 → 2026-11-02 (+7d) | -37d → -43d |
| WAD.S.3270 | GRP Pipes laid in trenches | 2026-10-13 → 2026-10-20 (+7d) | 2026-10-26 → 2026-11-02 (+7d) | -37d → -43d |
| WAD.S.4020 | install 100 mm GRP pipe service connections between building sewage inspection chamber and main wastewater line | 2026-10-18 → 2026-10-25 (+7d) | 2026-10-26 → 2026-11-02 (+7d) | -32d → -38d |
| WAD.S.4030 | Manhole depth not exceeding 4.0m | 2026-10-18 → 2026-10-25 (+7d) | 2026-10-26 → 2026-11-02 (+7d) | -18d → -24d |
| WAD.S.3880 | 100 mm Pipe in trench not exceeding 2.00 m depth to invert | 2026-10-19 → 2026-10-26 (+7d) | 2026-10-26 → 2026-11-02 (+7d) | -37d → -43d |
| WAD.S.4800 | Backfilling Works | 2026-10-27 → 2026-11-03 (+7d) | 2026-11-01 → 2026-11-08 (+7d) | -37d → -43d |
| WAD.S.4980 | SIDEWALKS AND CURBS | 2026-11-02 → 2026-11-09 (+7d) | 2026-11-09 → 2026-11-16 (+7d) | -37d → -43d |
| WAD.S.4990 | ROAD WORKS | 2026-11-02 → 2026-11-09 (+7d) | 2026-11-09 → 2026-11-16 (+7d) | -36d → -42d |
| WAD.S.5000 | install flag pole 6 M height | 2026-11-02 → 2026-11-09 (+7d) | 2026-11-07 → 2026-11-14 (+7d) | -37d → -43d |
| 4 | **Testing & Commissioning** | 2026-11-08 → 2026-11-15 (+7d) | 2026-11-17 → 2026-11-24 (+7d) |  |
| WAD.S.5440 | Testing & Commissioning - Electrical Systems | 2026-11-08 → 2026-11-15 (+7d) | 2026-11-17 → 2026-11-24 (+7d) | -37d → -43d |
| WAD.S.5490 | Testing & Commissioning - Mechanical Systems | 2026-11-08 → 2026-11-15 (+7d) | 2026-11-17 → 2026-11-24 (+7d) | -37d → -43d |
| 1 | **Engineering** | 2026-11-08 → 2026-11-15 (+7d) | 2026-11-17 → 2026-11-24 (+7d) |  |
| 1 | **As-Built Drawings** | 2026-11-08 → 2026-11-15 (+7d) | 2026-11-16 → 2026-11-23 (+7d) |  |
| WAD.S.5430 | Prepare & Submit | 2026-11-08 → 2026-11-15 (+7d) | 2026-11-11 → 2026-11-18 (+7d) | -37d → -43d |
| WAD.S.6260 | Review & Approve | 2026-11-10 → 2026-11-17 (+7d) | 2026-11-16 → 2026-11-23 (+7d) | -36d → -42d |
| 2 | **Operational Spares** | 2026-11-08 → 2026-11-15 (+7d) | 2026-11-17 → 2026-11-24 (+7d) |  |
| WAD.S.5450 | Prepare & Submit | 2026-11-08 → 2026-11-15 (+7d) | 2026-11-11 → 2026-11-18 (+7d) | -37d → -43d |
| WAD.S.6350 | Inspection | 2026-11-12 → 2026-11-19 (+7d) | 2026-11-17 → 2026-11-24 (+7d) | -37d → -43d |
| WAD.S.6370 | Acceptance | 2026-11-12 → 2026-11-19 (+7d) | 2026-11-17 → 2026-11-24 (+7d) | -37d → -43d |
| 3 | **Warranties and Guarantees** | 2026-11-08 → 2026-11-15 (+7d) | 2026-11-17 → 2026-11-24 (+7d) |  |
| WAD.S.5460 | Prepare & Submit | 2026-11-08 → 2026-11-15 (+7d) | 2026-11-11 → 2026-11-18 (+7d) | -37d → -43d |
| WAD.S.6360 | Review & Approve | 2026-11-12 → 2026-11-19 (+7d) | 2026-11-17 → 2026-11-24 (+7d) | -37d → -43d |
| 2 | **Training and Manuals** | 2026-11-08 → 2026-11-15 (+7d) | 2026-11-17 → 2026-11-24 (+7d) |  |
| 1 | **Training** | 2026-11-08 → 2026-11-15 (+7d) | 2026-11-17 → 2026-11-24 (+7d) |  |
| WAD.S.5470 | Prepare & Submit | 2026-11-08 → 2026-11-15 (+7d) | 2026-11-11 → 2026-11-18 (+7d) | -37d → -43d |
| WAD.S.6380 | Review & Approve | 2026-11-12 → 2026-11-19 (+7d) | 2026-11-17 → 2026-11-24 (+7d) | -37d → -43d |
| WAD.S.6400 | Fabrication & Delivery | 2026-11-12 → 2026-11-19 (+7d) | 2026-11-17 → 2026-11-24 (+7d) | -37d → -43d |
| 2 | **Manuals** | 2026-11-08 → 2026-11-15 (+7d) | 2026-11-17 → 2026-11-24 (+7d) |  |
| WAD.S.5480 | Prepare & Submit | 2026-11-08 → 2026-11-15 (+7d) | 2026-11-11 → 2026-11-18 (+7d) | -37d → -43d |
| WAD.S.6390 | Review & Approve | 2026-11-12 → 2026-11-19 (+7d) | 2026-11-17 → 2026-11-24 (+7d) | -37d → -43d |
| 3 | **Demobilization** | 2026-11-09 → 2026-11-16 (+7d) | 2026-11-17 → 2026-11-24 (+7d) |  |
| WAD.S.5850 | Demobilize | 2026-11-09 → 2026-11-16 (+7d) | 2026-11-17 → 2026-11-24 (+7d) | -37d → -43d |
| 4 | **Snaglist Rectification** | 2026-11-09 → 2026-11-16 (+7d) | 2026-11-17 → 2026-11-24 (+7d) |  |
| WAD.S.5860 | Snaglist Rectification | 2026-11-09 → 2026-11-16 (+7d) | 2026-11-17 → 2026-11-24 (+7d) | -37d → -43d |
| WAD.S.5870 | Initial Handing Over | 2026-11-09 → 2026-11-16 (+7d) | 2026-11-17 → 2026-11-24 (+7d) | -37d → -43d |
